# Aplikacja BlatyRPG

Schedule from MS Project XML, 2025-12-01 to 2026-09-22, status date 2025-12-01, 5 hours a day, A marks actual dates.

## Calendars

- DreamV Studio: Mon-Tue 00:00-01:00, 20:00-23:59; Wed 09:00-14:00; Thu-Sun 00:00-01:00, 20:00-23:59. Exceptions (off unless hours are given): 2025-12-23 to 2026-01-03 (Przerwa świąteczna Boże Narodzenie), 2026-04-03 to 2026-04-07 (Przerwa świąteczna Wielkanoc).

## Schedule

| ID | WBS | Task | Type | Duration | Start | Finish | Predecessors | Total slack | Free slack | Constraint | Lokalizacja |
| --- | --- | --- | --- | --- | --- | --- | --- | --- | --- | --- | --- |
| 1 | 1 | START | milestone | 0d | 2025-12-01 | 2025-12-01 |  | 277.21d | 0d |  |  |
| 2 | 2 | KONIEC | milestone | 0d | 2026-07-29 | 2026-07-29 | 32 | 54.16d |  |  |  |
| 3 | 1 | **Kamienie Milowe** |  | 277.21d | 2025-12-01 | 2026-09-22 |  | 0d |  |  |  |
| 4 | 1.3 | KM: Kick-off projektu (start prac) | milestone | 0d | 2025-12-01 | 2025-12-01 | 1 | 277.21d |  | finish no earlier than 2025-12-01 |  |
| 5 | 1.4 | KM: Stack technologiczny wybrany i repozytorium przygotowane | milestone | 0d | 2025-12-12 | 2025-12-12 | 44 | 266.24d |  | finish no earlier than 2025-12-12 |  |
| 6 | 1.5 | KM: Środowisko DEV gotowe (Docker/CI) | milestone | 0d | 2026-01-07 | 2026-01-07 | 86 | 252.16d |  | finish no earlier than 2025-12-23 | DevOps / feature/docker-env |
| 7 | 1.6 | KM: Koncepcja i backlog MVP zatwierdzone | milestone | 0d | 2026-01-07 | 2026-01-07 | 86 | 252.16d |  | finish no earlier than 2025-12-23 |  |
| 8 | 1.7 | KM: Architektura wstępna (HLD/ERD/API) zatwierdzona | milestone | 0d | 2025-12-24 | 2025-12-24 | 53 | 255.47d |  | finish no earlier than 2025-12-24 | Backend+Frontend / feature/auth |
| 9 | 1.8 | KM: Bezpieczeństwo danych: walidacja + hasła (bcrypt) gotowe | milestone | 0d | 2026-02-01 | 2026-02-01 | 163 | 227.16d |  | finish no earlier than 2026-01-28 | Backend+Frontend / feature/user-profile |
| 10 | 1.9 | KM: Zaproszenia do stołu gotowe | milestone | 0d | 2026-03-02 | 2026-03-02 | 189 | 198.43d |  | finish no earlier than 2026-03-02 | Backend+Frontend / feature/user-profile |
| 11 | 1.10 | KM: Moduł Auth gotowy (rejestracja/logowanie) | milestone | 0d | 2026-06-02 | 2026-06-02 | 163, 262 | 111.68d |  | finish no earlier than 2026-06-02 |  |
| 12 | 1.11 | KM: Dashboard stołów/sesji gotowy | milestone | 0d | 2026-06-08 | 2026-06-08 | 181, 268 | 105.7d |  | finish no earlier than 2026-06-08 |  |
| 13 | 1.12 | KM: Wirtualny stół MVP gotowy | milestone | 0d | 2026-07-07 | 2026-07-07 | 189, 221, 231, 291 | 76.78d |  | finish no earlier than 2026-07-07 | Backend+Frontend / feature/sessions-tables |
| 14 | 1.13 | KM: Ustawienia konta gotowe | milestone | 0d | 2026-07-10 | 2026-07-10 | 295 | 73.79d |  | finish no earlier than 2026-07-10 | Backend+Frontend / feature/sessions-tables |
| 15 | 1.14 | KM: Profil użytkownika i role gotowe | milestone | 0d | 2026-07-13 | 2026-07-13 | 170, 296 | 70.8d |  | finish no earlier than 2026-07-13 | Frontend+Realtime / feature/av-integration |
| 16 | 1.15 | KM: Release Alpha udostępniony testerom | milestone | 0d | 2026-07-17 | 2026-07-17 | 301 | 66.81d |  | finish no earlier than 2026-07-17 | Backend+Frontend / feature/macros |
| 17 | 1.16 | KM: Integracja audio/video gotowa (opcjonalnie) | milestone | 0d | 2026-07-20 | 2026-07-20 | 304 | 63.82d |  | finish no earlier than 2026-07-20 | Backend+Frontend / feature/marketplace |
| 18 | 1.17 | KM: System makr i skryptów GM gotowy | milestone | 0d | 2026-07-22 | 2026-07-22 | 305, 306 | 61.02d |  | finish no earlier than 2026-07-22 | Backend+Frontend / feature/admin-panel |
| 19 | 1.18 | KM: Marketplace / framework pluginów gotowy (opcjonalnie) | milestone | 0d | 2026-07-23 | 2026-07-23 | 307 | 60.82d |  | finish no earlier than 2026-07-23 | Backend+Frontend+DevOps / feature/testing-release |
| 20 | 1.19 | KM: Panel administracyjny v1 gotowy | milestone | 0d | 2026-07-23 | 2026-07-23 | 247, 307 | 60.82d |  | finish no earlier than 2026-07-23 | Backend+Frontend+DevOps / feature/testing-release |
| 21 | 1.20 | KM: Testy unit+integration green (CI) | milestone | 0d | 2026-08-10 | 2026-08-10 | 316, 321 | 42.88d |  | finish no earlier than 2026-08-10 |  |
| 22 | 1.21 | KM: Testy E2E green (CI) | milestone | 0d | 2026-08-17 | 2026-08-17 | 327 | 35.9d |  | finish no earlier than 2026-08-17 | Frontend / feature/ui-ux |
| 23 | 1.22 | KM: Testy wydajności zakończone (baseline) | milestone | 0d | 2026-08-21 | 2026-08-21 | 332 | 31.91d |  | finish no earlier than 2026-08-21 |  |
| 24 | 1.23 | KM: UX/UI v1 zatwierdzone (Design freeze) | milestone | 0d | 2026-08-31 | 2026-08-31 | 339 | 21.94d |  | finish no earlier than 2026-08-31 | Backend+Frontend+DevOps / feature/testing-release |
| 25 | 1.24 | KM: Refaktoryzacja rdzenia zakończona | milestone | 0d | 2026-08-31 | 2026-08-31 | 339 | 21.94d |  | finish no earlier than 2026-08-31 |  |
| 26 | 1.25 | KM: Release Beta udostępniony testerom | milestone | 0d | 2026-09-08 | 2026-09-08 | 346 | 13.96d |  | finish no earlier than 2026-09-08 |  |
| 27 | 1.26 | KM: Release Candidate / wersja finalna gotowa | milestone | 0d | 2026-09-08 | 2026-09-08 | 339, 332, 327, 316, 346 | 13.96d |  | finish no earlier than 2026-09-08 |  |
| 28 | 1.27 | KM: Infrastruktura produkcyjna gotowa | milestone | 0d | 2026-09-10 | 2026-09-10 | 349 | 11.96d |  | finish no earlier than 2026-09-10 |  |
| 29 | 1.28 | KM: Monitoring i alerty skonfigurowane | milestone | 0d | 2026-09-15 | 2026-09-15 | 352 | 6.98d |  | finish no earlier than 2026-09-15 |  |
| 30 | 1.29 | KM: Go-live – wdrożenie na produkcję | milestone | 0d | 2026-09-22 | 2026-09-22 | 357 | 0d |  | finish no earlier than 2026-09-22 |  |
| 31 | 3.28 | KM: Przekazanie do utrzymania + DR/backup gotowe | milestone | 0d | 2026-07-29 | 2026-07-29 | 362 | 54.16d |  |  |  |
| 32 | 3.29 | KM: Zamknięcie projektu | milestone | 0d | 2026-07-29 | 2026-07-29 | 362 | 54.16d | 0d |  |  |

Notes:
- 4: Start projektu: zatwierdzony cel, i zakres MVP, przygotowano harmonogram
- 5: Wybrany stack (CI4 + Vue 3 + MariaDB + WebSocket) oraz zasady wersjonowania....
- 6: Środowisko DEV działa lokalnie (Docker Compose)....
- 7: Etap koncepcyjny zamknięty: wymagania MVP, backlog, kryteria akceptacji....
- 8: Dokument HLD + ERD v0 + zarys API/WebSocket zaakceptowane....
- 9: Walidacja i sanitizacja danych wejściowych....
- 10: Zaproszenia do stołu (link/token), akceptacja/odrzucenie....
- 11: Rejestracja/logowanie/wylogowanie + reset hasła....
- 12: Lista stołów/sesji: tworzenie, podgląd, archiwizacja....
- 13: Synchronizacja real-time (WebSocket) + podstawowe elementy stołu....
- 14: Ustawienia konta: zmiana danych, preferencje, bezpieczeństwo....
- 15: Profil użytkownika + role systemowe (Player/GM/Admin)....
- 16: Build Alpha wdrożony na staging dla testerów....
- 17: Integracja audio/video uruchomiona (WebRTC / provider)....
- 18: Edytor makr + wykonywanie skryptów z uprawnieniami....
- 19: Mechanizm pluginów: instalacja/aktualizacja/wersjonowanie....
- 20: Panel administracyjny: zarządzanie użytkownikami, role, moderacja....
- 21: Testy jednostkowe i integracyjne przechodzą w CI....
- 22: Kluczowe ścieżki E2E green w CI (login, tworzenie stołu, dołączenie)....
- 23: Testy obciążeniowe: docelowo 250 jednoczesnych graczy; latencja WebSocket < 100ms....
- 24: UX/UI v1 zatwierdzone na podstawie feedbacku z testów....
- 25: Refaktoryzacja i porządki architektury po MVP....
- 26: Release Beta (feature-complete) udostępniony testerom....
- 27: Release Candidate / wersja finalna gotowa: checklisty, release notes, tag w repo....
- 28: Infrastruktura produkcyjna: serwer, domena, TLS, backupy....
- 29: Monitoring metryk/logów + alerty (uptime, błędy, obciążenie)....
- 30: Aplikacja dostępna publicznie (blatyrpg.pl); smoke tests OK....
- 31: Procedury utrzymaniowe, backup/restore oraz DR opisane i zweryfikowane....
- 32: Zamknięcie projektu: retrospektywa, lessons learned, archiwizacja....

| ID | WBS | Task | Type | Duration | Start | Finish | Predecessors | Total slack | Free slack | Lokalizacja | Branch Feature | Repo Branch |
| --- | --- | --- | --- | --- | --- | --- | --- | --- | --- | --- | --- | --- |
| 33 | 2 | **Etap koncepcyjny** |  | 25.05d | 2025-12-01 | 2026-01-07 |  | 55.16d |  |  |  |  |
| 34 | 2.1 | **Analiza i Wybór Technologii** |  | 2.13d | 2025-12-01 | 2025-12-03 |  | 55.16d |  |  |  |  |
| 35 | 2.1.1 | Analiza wymagań niefunkcjonalnych systemu |  | 1h | 2025-12-01 | 2025-12-01 |  | 55.16d | 0d | Docs | docs/requirements | feature/api-setup |
| 36 | 2.1.2 | Porównanie frameworków JavaScript (React vs Vue vs Angular) |  | 30min | 2025-12-01 | 2025-12-01 | 35 | 55.16d | 0d | Docs | docs/tech-comparison | feature/api-setup |
| 37 | 2.1.3 | Decyzja: Wybór frameworka Front-End | milestone | 0d | 2025-12-01 | 2025-12-01 | 36 | 55.16d | 0d | Docs | - |  |
| 38 | 2.1.4 | Porównanie architektur Back-End (PHP/Laravel vs Node.js/Nest vs Python/Django) |  | 30min | 2025-12-01 | 2025-12-01 | 37 | 55.16d | 0d | Docs | docs/tech-comparison | feature/api-setup |
| 39 | 2.1.5 | Decyzja: Wybór frameworka Back-End | milestone | 0d | 2025-12-01 | 2025-12-01 | 38 | 55.16d | 0d | Backend | - |  |
| 40 | 2.1.6 | Analiza systemów baz danych (MySQL vs PostgreSQL vs MongoDB) |  | 30min | 2025-12-01 | 2025-12-01 | 39 | 55.16d | 0d | Docs | docs/tech-comparison | feature/api-setup |
| 41 | 2.1.7 | Decyzja: Wybór silnika bazy danych |  | 1d | 2025-12-01 | 2025-12-02 | 40 | 55.16d | 0d | Database | - |  |
| 42 | 2.1.8 | Analiza protokołów Real-Time (WebSocket vs SSE vs Long Polling) |  | 10min | 2025-12-02 | 2025-12-02 | 41 | 55.16d | 0d | Docs | docs/tech-comparison | feature/api-setup |
| 43 | 2.1.9 | Decyzja: Wybór protokołu Real-Time | milestone | 0d | 2025-12-02 | 2025-12-02 | 42 | 55.16d | 0d | WebSocket | - |  |
| 44 | 2.1.10 | Projekt strategii konteneryzacji |  | 3h | 2025-12-02 | 2025-12-03 | 43 | 55.16d | 0d | DevOps | - |  |
| 45 | 2.2 | **Projektowanie Architektury Systemu** |  | 3d | 2025-12-03 | 2025-12-06 |  | 55.16d |  |  |  |  |
| 46 | 2.2.1 | Opracowanie diagramu kontekstowego systemu (C4 Level 1) |  | 1d | 2025-12-03 | 2025-12-04 | 44 | 55.16d | 0d | Docs | docs/architecture | feature/api-setup |
| 47 | 2.2.2 | Projekt architektury kontenerowej (C4 Level 2) |  | 1h | 2025-12-04 | 2025-12-04 | 46 | 55.16d | 0d | Docs | docs/architecture | feature/api-setup |
| 48 | 2.2.3 | Definicja warstwy prezentacji (SPA/CSR) |  | 15min | 2025-12-04 | 2025-12-04 | 47 | 55.16d | 0d | Frontend | docs/architecture | feature/api-setup |
| 49 | 2.2.4 | Projekt API REST (OpenAPI/Swagger 3.0) |  | 1h | 2025-12-04 | 2025-12-04 | 48 | 55.16d | 0d | Backend | docs/api-spec | feature/api-setup |
| 50 | 2.2.5 | Projekt architektury WebSocket (Socket.io Rooms) |  | 5h | 2025-12-04 | 2025-12-05 | 49 | 55.16d | 0d | WebSocket | docs/architecture | feature/api-setup |
| 51 | 2.2.6 | Projekt modułu uwierzytelniania (JWT Strategy) |  | 45min | 2025-12-05 | 2025-12-05 | 50 | 55.16d | 0d | Backend/Auth | docs/architecture | feature/api-setup |
| 52 | 2.2.7 | Projekt logiki Wirtualnych Stołów (Game State Management) |  | 1h | 2025-12-05 | 2025-12-06 | 51 | 55.16d | 0d | Backend/Tables | docs/architecture | feature/api-setup |
| 53 | 2.2.8 | Projekt systemu czatu (Message Broker Pattern) |  | 1h | 2025-12-06 | 2025-12-06 | 52 | 55.16d | 0d | Backend/Chat + WebSocket | docs/architecture | feature/api-setup |
| 54 | 2.3 | **Modelowanie Danych** |  | 8.2d | 2025-12-06 | 2025-12-14 |  | 55.16d |  |  |  |  |
| 55 | 2.3.1 | Opracowanie diagramu ERD (Entity Relationship Diagram) |  | 1d | 2025-12-06 | 2025-12-07 | 53 | 55.16d | 0d | Database | docs/database-erd | feature/api-setup |
| 56 | 2.3.2 | Projekt schematu: Tabela Users |  | 30min | 2025-12-07 | 2025-12-07 | 55 | 55.16d | 0d | Database | docs/database-erd | feature/api-setup |
| 57 | 2.3.3 | Projekt schematu: Tabela Sessions (Kampanie) |  | 1h | 2025-12-07 | 2025-12-07 | 56 | 55.16d | 0d | Database | docs/database-erd | feature/api-setup |
| 58 | 2.3.4 | Projekt schematu: Tabela Tables (Stoły/Blaty) |  | 2h | 2025-12-07 | 2025-12-08 | 57 | 55.16d | 0d | Database | docs/database-erd | feature/api-setup |
| 59 | 2.3.5 | Projekt schematu: Tabela Maps |  | 3h | 2025-12-08 | 2025-12-08 | 58 | 55.16d | 0d | Database | docs/database-erd | feature/api-setup |
| 60 | 2.3.6 | Projekt schematu: Tabela Tokens (Pionki) |  | 2h | 2025-12-08 | 2025-12-09 | 59 | 55.16d | 0d | Database | docs/database-erd | feature/api-setup |
| 61 | 2.3.7 | Projekt schematu: Tabela Characters (Postacie) |  | 30min | 2025-12-09 | 2025-12-09 | 60 | 55.16d | 0d | Database | docs/database-erd | feature/api-setup |
| 62 | 2.3.8 | Projekt schematu: Tabela Inventory (Ekwipunek) |  | 2h | 2025-12-09 | 2025-12-09 | 61 | 55.16d | 0d | Database | docs/database-erd | feature/api-setup |
| 63 | 2.3.9 | Projekt schematu: Tabela Items (Przedmioty) |  | 2h | 2025-12-09 | 2025-12-09 | 62 | 55.16d | 0d | Database | docs/database-erd | feature/api-setup |
| 64 | 2.3.10 | Projekt schematu: Tabela ChatMessages |  | 1h | 2025-12-09 | 2025-12-10 | 63 | 55.16d | 0d | Database | docs/database-erd | feature/api-setup |
| 65 | 2.3.11 | Projekt schematu: Tabela DiceRolls (Historia rzutów) |  | 2h | 2025-12-10 | 2025-12-10 | 64 | 55.16d | 0d | Database | docs/database-erd | feature/api-setup |
| 66 | 2.3.12 | Projekt schematu: Tabela Invitations (Zaproszenia) |  | 4h | 2025-12-10 | 2025-12-11 | 65 | 55.16d | 0d | Database | docs/database-erd | feature/api-setup |
| 67 | 2.3.13 | Projekt schematu: Tabela Macros (Makra graczy) |  | 6h | 2025-12-11 | 2025-12-12 | 66 | 55.16d | 0d | Database | docs/database-erd | feature/api-setup |
| 68 | 2.3.14 | Normalizacja bazy danych (3NF) |  | 1d | 2025-12-12 | 2025-12-13 | 67 | 55.16d | 0d | Database | docs/database-erd | feature/api-setup |
| 69 | 2.3.15 | Projekt indeksów i constraintów |  | 1d | 2025-12-13 | 2025-12-14 | 68 | 55.16d | 0d | Database | docs/database-erd | feature/api-setup |

Notes:
- 33: Fundament projektu
- 35: Docelowo 500 jednoczesnych graczy; latencja WebSocket < 100ms; dostępność 99.5%
- 36: Macierz porównawcza: bundle size, learning curve, ekosystem
- 37: Wybrano: Vue.js 3.5.25 (Composition API) + Webpack
- 38: Analiza: performance, community support, hosting cost
- 39: Wybrano: CodeIgniter 4.4.6 (PHP 7.4.6) dla API REST
- 40: Porównanie: transakcje ACID, JSON support, spatial data
- 41: Wybrano: MariaDB 10.11 (kompatybilność MySQL)
- 42: Socket.io zapewnia fallback; lepsze wsparcie dla pokoi
- 43: Wybrano: Socket.io (WebSocket + fallback)
- 44: Docker Compose: 5 serwisów (MariaDB, PHP-FPM, Node/Frontend, Node/WebSocket, Nginx)
- 45: Diagramy architektury (C4 Model)
- 46: Aktorzy: Gracz, Game Master, Admin; Systemy zewnętrzne: Cloudinary, SMTP
- 47: 5 kontenerów: API Gateway (Nginx) → PHP backend + MySQL 8.0 + Vue frontend + Node WebSocket
- 48: Single Page Application; routing Vue Router; state management Vuex
- 49: Specyfikacja endpointów: /auth, /campaigns, /tables, /characters, /chat
- 50: Pokoje per stół; eventy: dice_roll, token_move, chat_message, fog_update
- 51: Access Token (15min) + Refresh Token (7 dni); blacklist w Redis
- 52: Stan gry: Redis cache + MySQL persistence; synchronizacja przez WebSocket
- 53: Historia czatu: MySQL; real-time: Socket.io; kanały: public, dm, gm-only
- 54: Schemat bazy danych (ERD + SQL DDL)
- 55: Narzędzie: dbdiagram.io; eksport do PNG i SQL
- 56: Kolumny: id, email, password_hash, role (enum), avatar_url, created_at
- 57: Kolumny: id, gm_id (FK users), name, description, system (WFRP/D&D), status
- 58: Kolumny: id, session_id (FK), config_json, background_url, grid_size
- 59: Kolumny: id, table_id (FK), name, image_url, layers_json, fog_data (JSON)
- 60: Kolumny: id, map_id (FK), character_id (FK), x, y, rotation, visibility
- 61: Kolumny: id, user_id (FK), session_id (FK), name, race, class, stats_json
- 62: Kolumny: id, character_id (FK), item_id (FK), quantity, equipped (bool)
- 63: Kolumny: id, name, type (weapon/armor/misc), properties_json, value
- 64: Kolumny: id, table_id (FK), sender_id (FK users), channel (enum), text, timestamp
- 65: Kolumny: id, user_id (FK), table_id (FK), formula, result, timestamp
- 66: Kolumny: id, table_id (FK), token (UUID), expires_at, max_uses, used_count
- 67: Kolumny: id, user_id (FK), name, formula, description, is_public
- 68: Wydzielenie tabel słownikowych: Races, Classes, ItemTypes
- 69: Indeksy: (table_id, timestamp) dla czatu; FK cascade delete gdzie potrzeba

| ID | WBS | Task | Type | Duration | Start | Finish | Predecessors | Complete | Remaining | Total slack | Free slack | Lokalizacja | Branch Feature | Repo Branch |
| --- | --- | --- | --- | --- | --- | --- | --- | --- | --- | --- | --- | --- | --- | --- |
| 70 | 2.4 | **Przygotowanie środowiska deweloperskiego** |  | 11.72d | 2025-12-14 | 2026-01-07 |  |  |  | 55.16d |  | DevOps / feature/ci-cd |  |  |
| 71 | 2.4.1 | Inicjalizacja repozytorium Git |  | 15min | 2025-12-14 | 2025-12-14 | 69 |  |  | 55.16d | 0d | DevOps | - |  |
| 72 | 2.4.2 | Konfiguracja .gitignore |  | 15min | 2025-12-14 | 2025-12-14 | 71 |  |  | 55.16d | 0d | DevOps | devops/gitignore | feature/api-setup |
| 73 | 2.4.3 | Ustalenie konwencji commitów (Conventional Commits) |  | 5min | 2025-12-14 | 2025-12-14 | 72 |  |  | 55.16d | 0d | Docs | docs/contributing | feature/api-setup |
| 74 | 2.4.4 | Konfiguracja ESLint + Prettier (Frontend) |  | 1h | 2025-12-14 | 2025-12-14 | 73 |  |  | 55.16d | 0d | Frontend | devops/linters | feature/api-setup |
| 75 | 2.4.5 | Konfiguracja PHP-CS-Fixer (Backend) |  | 2h | 2025-12-14 | 2025-12-15 | 74 |  |  | 55.16d | 0d | Backend | devops/linters | feature/api-setup |
| 76 | 2.4.6 | Setup Docker Compose (wersja multi-stage) |  | 1d | 2025-12-15 | 2025-12-16 | 75 |  |  | 55.16d | 0d | DevOps | devops/docker-setup | develop |
| 77 | 2.4.7 | Konfiguracja kontenera MySQL |  | 1d | 2025-12-16 | 2025-12-17 | 76 |  |  | 55.16d | 0d | DevOps/Database | devops/docker-setup | develop |
| 78 | 2.4.8 | Konfiguracja kontenera PHP-FPM |  | 1d | 2025-12-17 | 2025-12-18 | 77 |  |  | 55.16d | 0d | DevOps/Backend | devops/docker-setup | develop |
| 79 | 2.4.9 | Konfiguracja kontenera Node (Frontend) |  | 1d | 2025-12-18 | 2025-12-19 | 78 |  |  | 55.16d | 0d | DevOps/Frontend | devops/docker-setup | develop |
| 80 | 2.4.10 | Konfiguracja kontenera Node (WebSocket) |  | 1d | 2025-12-19 | 2025-12-20 | 79 |  |  | 55.16d | 0d | DevOps/WebSocket | devops/docker-setup | develop |
| 81 | 2.4.11 | Konfiguracja kontenera Nginx |  | 1d | 2025-12-20 | 2025-12-21 | 80 |  |  | 55.16d | 0d | DevOps | devops/docker-setup | develop |
| 82 | 2.4.12 | Konfiguracja GitHub Actions: Lint (Backend + Frontend) |  | 1d | 2025-12-21 | 2025-12-22 | 81 |  |  | 55.16d | 0d | DevOps/CI | devops/github-actions-lint | feature/api-setup |
| 83 | 2.4.13 | Konfiguracja GitHub Actions: Testy (PHPUnit) |  | 1d | 2025-12-22 | 2026-01-04 | 82 |  |  | 55.16d | 0d | DevOps/CI | devops/github-actions-test | feature/api-setup |
| 84 | 2.4.14 | Konfiguracja GitHub Actions: Build Frontend |  | 1d | 2026-01-04 | 2026-01-05 | 83 |  |  | 55.16d | 0d | DevOps/CI | devops/github-actions-build | feature/api-setup |
| 85 | 2.4.15 | Setup zmiennych środowiskowych (.env) |  | 1d | 2026-01-05 | 2026-01-06 | 84 |  |  | 55.16d | 0d | DevOps | devops/env-config | feature/api-setup |
| 86 | 2.4.16 | Weryfikacja Health Check wszystkich kontenerów |  | 1d | 2026-01-06 | 2026-01-07 | 85 |  |  | 55.16d | 0d | DevOps | - |  |
| 87 | 4.4.17 | Konfiguracja Monorepo (CI4 + Vue3) | manual | 1d? | 2025-12-14 | 2025-12-15 |  |  |  |  |  |  |  | main |
| 88 | 4.4.18 | Dodanie lokalnej konfiguracji SSL (mkcert) i obszaru roboczego VS Code | manual | 1d? | 2025-12-14 | 2025-12-15 |  |  |  |  |  |  |  | develop |
| 89 | 4.4.19 | Repo (develop): Add Docker setup | manual | 1d? | 2025-12-14 | 2025-12-15 |  |  |  |  |  |  |  | develop |
| 90 | 3 | **Etap projektowania szczegółowego** |  | 198d? | 2026-01-07 A | 2026-07-29 |  |  | 197.18d? | 54.16d |  |  |  | feature/api-setup |
| 91 | 3.1 | **Podstawowe funkcjonalności aplikacji** |  | 147d? | 2026-01-07 A | 2026-06-08 |  | 1% | 146.22d? | 105.16d |  |  |  |  |
| 92 | 3.1.1 | **Infrastruktura Bazodanowa** |  | 14d? | 2026-01-07 | 2026-01-21 |  |  |  | 55.16d |  |  |  |  |
| 93 | 3.1.1.1 | **Implementacja systemu migracji (CodeIgniter Migrations)** |  | 12d? | 2026-01-07 | 2026-01-19 | 86 |  |  | 55.16d |  | Backend/Database | feature/db-migrations | feature/db-migration |
| 94 | 3.1.1.2 | Migracja 1: Tabela Users |  | 1d | 2026-01-07 | 2026-01-08 |  |  |  | 55.16d | 0d | Backend/Database | feature/db-migrations | feature/db-migration |
| 95 | 3.1.1.3 | Migracja 1: Tabela Sessions (Kampanie) |  | 1d | 2026-01-08 | 2026-01-09 | 94 |  |  | 55.16d | 0d | Backend/Database | feature/db-migrations | feature/db-migration |
| 96 | 3.1.1.7 | Migracja 1: Tabela Characters |  | 1d | 2026-01-12 | 2026-01-13 | 130 |  |  | 55.16d | 0d | Backend/Database | feature/db-migrations | feature/db-migration |
| 97 | 5.1.1.1.4 | Migracja 2: Tabela Rpg_systems |  | 1d | 2026-01-07 | 2026-01-08 |  |  |  | 251.16d |  | Backend/Database |  |  |
| 98 | 5.1.1.1.5 | Migracja 2: Tabela Rpg_universes |  | 1d | 2026-01-07 | 2026-01-08 |  |  |  | 251.16d |  | Backend/Database |  |  |
| 99 | 5.1.1.1.6 | Migracja 3: Tabela Rpg_system_universes (pivot) |  | 1d? | 2026-01-07 | 2026-01-08 |  |  |  | 251.16d |  | Backend/Database |  |  |
| 100 | 5.1.1.1.7 | Migracja 2: Tabela Rpg_game_definitions |  | 1d | 2026-01-07 | 2026-01-08 |  |  |  | 251.16d |  | Backend/Database |  |  |
| 101 | 5.1.1.1.8 | Migracja 4: Tabela Profession_equipment |  | 1d? | 2026-01-07 | 2026-01-08 |  |  |  | 251.16d |  | Backend/Database |  |  |
| 102 | 5.1.1.1.9 | Migracja 4: Tabela Profession_path |  | 1d? | 2026-01-07 | 2026-01-08 |  |  |  | 251.16d |  | Backend/Database |  |  |
| 103 | 5.1.1.1.10 | Migracja: Tabela Profession_definitions |  | 1d? | 2026-01-07 | 2026-01-08 |  |  |  | 251.16d |  | Backend/Database |  |  |
| 104 | 5.1.1.1.11 | Migracja: Tabela Profession_attributes |  | 1d? | 2026-01-07 | 2026-01-08 |  |  |  | 251.16d |  | Backend/Database |  |  |
| 105 | 5.1.1.1.12 | Migracja: Tabela Professions |  | 1d? | 2026-01-07 | 2026-01-08 |  |  |  | 251.16d |  | Backend/Database |  |  |
| 106 | 5.1.1.1.13 | Migracja: Tabela Character_custom_unlocks |  | 1d? | 2026-01-07 | 2026-01-08 |  |  |  | 251.16d |  | Backend/Database |  |  |
| 107 | 5.1.1.1.14 | Migracja: Tabela Character_attribute_advances |  | 1d? | 2026-01-07 | 2026-01-08 |  |  |  | 251.16d |  | Backend/Database |  |  |
| 108 | 5.1.1.1.15 | Migracja: Tabela Character_professions |  | 1d? | 2026-01-07 | 2026-01-08 |  |  |  | 251.16d |  | Backend/Database |  |  |
| 109 | 5.1.1.1.16 | Migracja: Tabela Magic_path_spells |  | 1d? | 2026-01-07 | 2026-01-08 |  |  |  | 251.16d |  | Backend/Database |  |  |
| 110 | 5.1.1.1.17 | Migracja: Tabela Magic_paths |  | 1d? | 2026-01-07 | 2026-01-08 |  |  |  | 251.16d |  | Backend/Database |  |  |
| 111 | 5.1.1.1.18 | Migracja: Tabela Item_bundle_items |  | 1d? | 2026-01-07 | 2026-01-08 |  |  |  | 251.16d |  | Backend/Database |  |  |
| 112 | 5.1.1.1.19 | Migracja: Tabela Item_bundles |  | 1d? | 2026-01-07 | 2026-01-08 |  |  |  | 251.16d |  | Backend/Database |  |  |
| 113 | 5.1.1.1.20 | Migracja: Tabela Items |  | 1d? | 2026-01-07 | 2026-01-08 |  |  |  | 251.16d |  | Backend/Database |  |  |
| 114 | 5.1.1.1.21 | Migracja: Tabela Item_classes |  | 1d? | 2026-01-07 | 2026-01-08 |  |  |  | 251.16d |  | Backend/Database |  |  |
| 115 | 5.1.1.1.22 | Migracja: Tabela Insanities |  | 1d? | 2026-01-07 | 2026-01-08 |  |  |  | 251.16d |  | Backend/Database |  |  |
| 116 | 5.1.1.1.23 | Migracja: Tabela Weapon_traits |  | 1d? | 2026-01-07 | 2026-01-08 |  |  |  | 251.16d |  | Backend/Database |  |  |
| 117 | 5.1.1.1.24 | Migracja: Tabela Combat_actions |  | 1d? | 2026-01-07 | 2026-01-08 |  |  |  | 251.16d |  | Backend/Database |  |  |

Notes:
- 70: Konfiguracja repozytoriów kodu, pipeline’u CI/CD, narzędzi do testów, środowiska staging.
- 71: Repo: github.com/sirWojciechVojas/BlatyRPG; struktura: /backend, /frontend, /websocket
- 72: Ignoruj: node_modules, vendor, .env, .DS_Store, dist/, build
- 73: Format: type(scope): subject → feat, fix, docs, refactor, test
- 74: Config: Airbnb style guide; integracja z VSCode
- 75: Standard: PSR-12; automatyczne formatowanie pre-commit
- 76: Plik docker-compose.yml; serwisy: db, php, frontend, websocket, nginx
- 77: Obraz: mysql:8.0; container_name: blatyrpg_mysql; volumes:- mysql_data:/var/lib/mysql; ports:- "3307:3306"
- 78: Obraz: php:7.4-fpm-alpine; Composer; rozszerzenia: mysqli, pdo_mysql, intl
- 79: Obraz: node:lts-alpine; npm install; webpack devServer
- 80: Obraz: node:lts-alpine; Socket.io server port 8082
- 81: Obraz: nginx:alpine; Reverse proxy; SSL (mkcert lokalnie); routing: / → frontend, /api → PHP, /socket.io → WebSocket
- 82: Workflow: .github/workflows/lint.yml; uruchom PHP-CS + ESLint
- 83: Workflow: .github/workflows/test-backend.yml; generuj raport coverage
- 84: Workflow: .github/workflows/build-frontend.yml; artefakty w /dist
- 85: Plik .env.example: DB_HOST, JWT_SECRET, JWT_TTL, CLOUDINARY_KEY, SMTP
- 86: Komenda: docker compose ps → wszystkie "Up"; test: curl localhost/api/health
- 92: Baza danych z pełnym schematem
- 93: Folder: backend/app/Database/Migrations/; CLI: php spark migrate
- 94: Plik: 2025-12-07-000810_CreateRealRpgTables.php
- 95: Plik: 2025-12-07-000810_CreateRealRpgTables.php
- 96: Plik: 2025-12-07-000810_CreateRealRpgTables.php; 2025-12-08-230833_CreateCharactersTable.php
- 97: Plik: 2025-12-07-203103_AddUniversalGameSystems.php
- 98: Plik: 2025-12-07-203103_AddUniversalGameSystems.php
- 99: Plik: 2025-12-09-211729_CreateProfessionsTable.php
- 100: Plik: 2025-12-07-203103_AddUniversalGameSystems.php
- 101: Plik: 2025-12-09-211729_CreateProfessionsTable.php
- 102: Plik: 2025-12-09-211729_CreateProfessionsTable.php
- 103: Plik: 2025-12-09-211729_CreateProfessionsTable.php
- 104: Plik: 2025-12-09-211729_CreateProfessionsTable.php
- 105: Plik: 2025-12-09-211729_CreateProfessionsTable.php
- 106: Plik: 2025-12-11-223558_EnhanceCharacterStructure.php
- 107: Plik: 2025-12-11-223558_EnhanceCharacterStructure.php
- 108: Plik: 2025-12-11-223558_EnhanceCharacterStructure.php
- 109: Plik: 2025-12-16-120000_CreateWfrpContentTables.php
- 110: Plik: 2025-12-16-120000_CreateWfrpContentTables.php
- 111: Plik: 2025-12-16-120000_CreateWfrpContentTables.php
- 112: Plik: 2025-12-16-120000_CreateWfrpContentTables.php
- 113: Plik: 2025-12-16-120000_CreateWfrpContentTables.php
- 114: Plik: 2025-12-16-120000_CreateWfrpContentTables.php
- 115: Plik: 2025-12-16-120000_CreateWfrpContentTables.php
- 116: Plik: 2025-12-16-120000_CreateWfrpContentTables.php
- 117: Plik: 2025-12-16-120000_CreateWfrpContentTables.php

| ID | WBS | Task | Duration | Start | Finish | Predecessors | Total slack | Free slack | Lokalizacja | Branch Feature | Repo Branch |
| --- | --- | --- | --- | --- | --- | --- | --- | --- | --- | --- | --- |
| 118 | 5.1.1.1.25 | **Migracje: i18n (translations + locales)** | 1d? | 2026-01-07 | 2026-01-08 |  | 251.16d |  | Backend/Database |  |  |
| 119 | 5.1.1.1.25.1 | Migracja: Tabela Magic_path_translations | 1d? | 2026-01-07 | 2026-01-08 |  | 251.16d |  | Backend/Database |  |  |
| 120 | 5.1.1.1.25.2 | Migracja: Tabela Insanity_translations | 1d? | 2026-01-07 | 2026-01-08 |  | 251.16d |  | Backend/Database |  |  |
| 121 | 5.1.1.1.25.3 | Migracja: Tabela Weapon_trait_translations | 1d? | 2026-01-07 | 2026-01-08 |  | 251.16d |  | Backend/Database |  |  |
| 122 | 5.1.1.1.25.4 | Migracja: Tabela Combat_action_translations | 1d? | 2026-01-07 | 2026-01-08 |  | 251.16d |  | Backend/Database |  |  |
| 123 | 5.1.1.1.25.5 | Migracja: Tabela Item_bundle_translations | 1d? | 2026-01-07 | 2026-01-08 |  | 251.16d |  | Backend/Database |  |  |
| 124 | 5.1.1.1.25.6 | Migracja: Tabela Item_class_translations | 1d? | 2026-01-07 | 2026-01-08 |  | 251.16d |  | Backend/Database |  |  |
| 125 | 5.1.1.1.25.7 | Migracja: Tabela Item_translations | 1d? | 2026-01-07 | 2026-01-08 |  | 251.16d |  | Backend/Database |  |  |
| 126 | 5.1.1.1.25.8 | Migracja: Tabela Game_definition_translations | 1d? | 2026-01-07 | 2026-01-08 |  | 251.16d |  | Backend/Database |  |  |
| 127 | 5.1.1.1.25.9 | Migracja: Tabela Locales | 1d? | 2026-01-07 | 2026-01-08 |  | 251.16d |  | Backend/Database |  |  |
| 128 | 3.1.1.4 | Migracja: Tabela Tables (Stoły) | 1d | 2026-01-09 | 2026-01-10 | 95 | 55.16d | 0d | Backend/Database | feature/db-migrations | feature/db-migration |
| 129 | 3.1.1.5 | Migracja: Tabela Maps | 1d | 2026-01-10 | 2026-01-11 | 128 | 55.16d | 0d | Backend/Database | feature/db-migrations | feature/db-migration |
| 130 | 3.1.1.6 | Migracja: Tabela Tokens (Pionki) | 1d | 2026-01-11 | 2026-01-12 | 129 | 55.16d | 0d | Backend/Database | feature/db-migrations | feature/db-migration |
| 131 | 3.1.1.8 | Migracja: Tabela Inventory | 1d | 2026-01-13 | 2026-01-14 | 96 | 55.16d | 0d | Backend/Database | feature/db-migrations | feature/db-migration |
| 132 | 3.1.1.9 | Migracja: Tabela Items | 1d | 2026-01-14 | 2026-01-15 | 131 | 55.16d | 0d | Backend/Database | feature/db-migrations | feature/db-migration |
| 133 | 3.1.1.10 | Migracja: Tabela ChatMessages | 1d | 2026-01-15 | 2026-01-16 | 132 | 55.16d | 0d | Backend/Database | feature/db-migrations | feature/db-migration |
| 134 | 3.1.1.11 | Migracja: Tabela DiceRolls | 1d | 2026-01-16 | 2026-01-17 | 133 | 55.16d | 0d | Backend/Database | feature/db-migrations | feature/db-migration |
| 135 | 3.1.1.12 | Migracja: Tabela Invitations | 1d | 2026-01-17 | 2026-01-18 | 134 | 55.16d | 0d | Backend/Database | feature/db-migrations | feature/db-migration |
| 136 | 3.1.1.13 | Migracja: Tabela Macros | 1d | 2026-01-18 | 2026-01-19 | 135 | 55.16d | 0d | Backend/Database | feature/db-migrations | feature/db-migration |
| 137 | 3.1.1.14 | **Implementacja Seeders (dane legacy)** | 1d? | 2026-01-19 | 2026-01-20 | 136 | 55.16d | 0d | Backend/Database | feature/db-seeders | feature/master-seeder |
| 138 | 5.1.1.2.1 | A_MasterSeeder | 1d? | 2026-01-19 | 2026-01-20 |  | 55.16d |  | Backend/Database |  |  |
| 139 | 5.1.1.2.2 | Tabela Characters: CharacterLegacySeeder | 1d? | 2026-01-19 | 2026-01-20 |  | 55.16d |  | Backend/Database |  |  |
| 140 | 5.1.1.2.3 | Tabela character_professions: CharacterProfessionsLegacySeeder | 1d? | 2026-01-19 | 2026-01-20 |  | 55.16d |  | Backend/Database |  |  |
| 141 | 5.1.1.2.4 | Tabela Professions: ProfessionsLegacySeeder | 1d? | 2026-01-19 | 2026-01-20 |  | 55.16d |  | Backend/Database |  |  |
| 142 | 5.1.1.2.5 | LocalizationSeeder | 1d? | 2026-01-19 | 2026-01-20 |  | 55.16d |  | Backend/Database |  |  |
| 143 | 5.1.1.2.6 | RpgInitializationSeeder | 1d? | 2026-01-19 | 2026-01-20 |  | 55.16d |  | Backend/Database |  |  |
| 144 | 5.1.1.2.7 | WarhammerCombatSeeder | 1d? | 2026-01-19 | 2026-01-20 |  | 55.16d |  | Backend/Database |  |  |
| 145 | 5.1.1.2.8 | WarhammerDefinitionsSeeder | 1d? | 2026-01-19 | 2026-01-20 |  | 55.16d |  | Backend/Database |  |  |
| 146 | 5.1.1.2.9 | WarhammerEquipmentSeeder | 1d? | 2026-01-19 | 2026-01-20 |  | 55.16d |  | Backend/Database |  |  |
| 147 | 5.1.1.2.10 | WarhammerInsanitySeeder | 1d? | 2026-01-19 | 2026-01-20 |  | 55.16d |  | Backend/Database |  |  |
| 148 | 5.1.1.2.11 | Base/SystemBaseSeeder (abstrakcyjna klasa bazowa) | 1d? | 2026-01-19 | 2026-01-20 |  | 55.16d |  | Backend/Database |  |  |
| 149 | 5.1.1.2.12 | Base/Coc7eBaseSeeder | 1d? | 2026-01-19 | 2026-01-20 |  | 55.16d |  | Backend/Database |  |  |
| 150 | 5.1.1.2.13 | Base/WfrpBaseSeeder | 1d? | 2026-01-19 | 2026-01-20 |  | 55.16d |  | Backend/Database |  |  |
| 151 | 3.1.1.15 | Testy migracji (rollback + migrate) | 1d | 2026-01-20 | 2026-01-21 | 137 | 55.16d | 0d | Backend/Database | feature/db-migrations | feature/db-migration |

Notes:
- 119: Plik: 2025-12-16-123000_AddLocalizationTables.php
- 120: Plik: 2025-12-16-123000_AddLocalizationTables.php
- 121: Plik: 2025-12-16-123000_AddLocalizationTables.php
- 122: Plik: 2025-12-16-123000_AddLocalizationTables.php
- 123: Plik: 2025-12-16-123000_AddLocalizationTables.php
- 124: Plik: 2025-12-16-123000_AddLocalizationTables.php
- 125: Plik: 2025-12-16-123000_AddLocalizationTables.php
- 126: Plik: 2025-12-16-123000_AddLocalizationTables.php
- 127: Plik: 2025-12-16-123000_AddLocalizationTables.php
- 128: Plik: 2026_01_10_000003_create_tables_table.php
- 129: Plik: 2026_01_10_000004_create_maps_table.php
- 130: Plik: 2026_01_10_000005_create_tokens_table.php
- 131: Plik: 2026_01_10_000007_create_inventory_table.php
- 132: Plik: 2026_01_10_000008_create_items_table.php
- 133: Plik: 2026_01_10_000009_create_chat_messages_table.php
- 134: Plik: 2026_01_10_000010_create_dice_rolls_table.php
- 135: Plik: 2026_01_10_000011_create_invitations_table.php
- 136: Plik: 2026_01_10_000012_create_macros_table.php
- 137: Seeder: DevDataSeeder; 5 użytkowników, 3 kampanie, 10 postaci
- 138: uruchamia pozostałe seedery w ustalonej kolejności (init, lokalizacje, dane WFRP, profesje, postacie).
- 139: CharacterProfessionsLegacySeeder.php uzupełnia pivot character_professions na podstawie danych WfrpData (aktualne i poprzednie profesje).
- 140: CharacterLegacySeeder.php seeduje przykładowe/post‑legacy postacie WFRP2ed do characters (tworzy system/uniwersum jeśli brak).
- 141: ProfessionsLegacySeeder.php importuje profesje WFRP i powiązane dane do professions, profession_attributes, profession_definitions, profession_paths, profession_equipment (z WfrpData::getProfessions).
- 142: LocalizationSeeder.php seeduje języki w tabeli locales (pl/en/fr/de), aktualizuje jeśli już istnieją.
- 143: RpgInitializationSeeder.php czyści rpg_system_universes, game_definitions, rpg_systems, rpg_universes, a potem seeduje listę systemów, uniwersów i ich powiązań (pivot).
- 144: WarhammerCombatSeeder.php importuje akcje bojowe i cechy broni (combat_actions, weapon_traits) z WfrpData.
- 145: WarhammerDefinitionsSeeder.php importuje umiejętności, zdolności i cechy WFRP do game_definitions (z WfrpData), pomija duplikaty.
- 146: WarhammerEquipmentSeeder.php importuje klasy przedmiotów, przedmioty oraz pakiety ekwipunku (item_classes, items, item_bundles) z WfrpData.
- 147: WarhammerInsanitySeeder.php importuje choroby umysłu do insanities z WfrpData.
- 148: Abstrakcyjna klasa bazowa, aby móc wgrywać różne gry i systemy na swój sposób
- 149: Bazowy Seeder do ujednolicenia sposobu wgrywania seedów dla Zew Cthuhlu 7ed
- 150: Bazowy Seeder do ujednolicenia sposobu wgrywania seedów dla Warhammer Fantasy Roleplay 2ed
- 151: Weryfikacja: php spark migrate:rollback i migrate bez błędów

| ID | WBS | Task | Duration | Start | Finish | Predecessors | Total slack | Free slack | Repo Branch | Lokalizacja | Branch Feature |
| --- | --- | --- | --- | --- | --- | --- | --- | --- | --- | --- | --- |
| 152 | 3.1.2 | **Moduł Uwierzytelniania (Auth)** | 11d | 2026-01-21 | 2026-02-01 |  | 55.16d |  | feature/db-migration |  |  |
| 153 | 3.1.2.1 | Implementacja modelu User (Model ORM) | 1d | 2026-01-21 | 2026-01-22 | 151 | 55.16d | 0d | feature/master-seeder | Backend/Models | feature/auth-user-model |
| 154 | 3.1.2.2 | Implementacja biblioteki JWT (Firebase JWT) | 1d | 2026-01-22 | 2026-01-23 | 153 | 55.16d | 0d |  | Backend/Auth | feature/auth-jwt-library |
| 155 | 3.1.2.3 | Implementacja controllera AuthController | 1d | 2026-01-23 | 2026-01-24 | 154 | 55.16d | 0d | feature/auth-jwt | Backend/Controllers | feature/auth-controller |
| 156 | 3.1.2.4 | Endpoint: POST /api/auth/register | 1d | 2026-01-24 | 2026-01-25 | 155 | 55.16d | 0d | feature/auth-jwt | Backend/Auth | feature/auth-register |
| 157 | 3.1.2.5 | Endpoint: POST /api/auth/login | 1d | 2026-01-25 | 2026-01-26 | 156 | 55.16d | 0d | feature/auth-jwt | Backend/Auth | feature/auth-login |
| 158 | 3.1.2.6 | Endpoint: POST /api/auth/refresh | 1d | 2026-01-26 | 2026-01-27 | 157 | 55.16d | 0d | feature/auth-jwt | Backend/Auth | feature/auth-refresh-token |
| 159 | 3.1.2.7 | Endpoint: POST /api/auth/logout | 1d | 2026-01-27 | 2026-01-28 | 158 | 55.16d | 0d | feature/auth-jwt | Backend/Auth | feature/auth-logout |
| 160 | 3.1.2.8 | Endpoint: POST /api/auth/reset-password | 1d | 2026-01-28 | 2026-01-29 | 159 | 55.16d | 0d | feature/auth-jwt | Backend/Auth | feature/auth-password-reset |
| 161 | 3.1.2.9 | Implementacja middleware AuthMiddleware | 1d | 2026-01-29 | 2026-01-30 | 160 | 55.16d | 0d | feature/auth-jwt | Backend/Middleware | feature/auth-middleware |
| 162 | 3.1.2.10 | Integracja SMTP (wysyłka maili) | 1d | 2026-01-30 | 2026-01-31 | 161 | 55.16d | 0d | feature/auth-jwt | Backend/Services | feature/email-service |
| 163 | 3.1.2.11 | Testy jednostkowe: AuthController | 1d | 2026-01-31 | 2026-02-01 | 162 | 55.16d | 0d | feature/auth-jwt | Backend/Tests | feature/auth-tests |
| 164 | 3.1.3 | **Moduł Profilu Użytkownika** | 6d | 2026-02-01 | 2026-02-07 |  | 55.16d |  | feature/rpg-api |  |  |
| 165 | 3.1.3.1 | Endpoint: GET /api/me | 1d | 2026-02-01 | 2026-02-02 | 163 | 55.16d | 0d | feature/auth-jwt | Backend/Profile | feature/profile-me |
| 166 | 3.1.3.2 | Endpoint: GET /api/profile/:id | 1d | 2026-02-02 | 2026-02-03 | 165 | 55.16d | 0d | feature/auth-jwt | Backend/Profile | feature/profile-view |
| 167 | 3.1.3.3 | Endpoint: PUT /api/profile | 1d | 2026-02-03 | 2026-02-04 | 166 | 55.16d | 0d |  | Backend/Profile | feature/profile-edit |
| 168 | 3.1.3.4 | Endpoint: PUT /api/profile/password | 1d | 2026-02-04 | 2026-02-05 | 167 | 55.16d | 0d | feature/rpg-api | Backend/Profile | feature/profile-change-password |
| 169 | 3.1.3.5 | Integracja Cloudinary (upload avatarów) | 1d | 2026-02-05 | 2026-02-06 | 168 | 55.16d | 0d | feature/rpg-api | Backend/Services | feature/cloudinary-upload |
| 170 | 3.1.3.6 | Endpoint: GET /api/cloudinary/resources | 1d | 2026-02-06 | 2026-02-07 | 169 | 55.16d | 0d | feature/rpg-api | Backend/Cloudinary | feature/cloudinary-gallery |
| 171 | 3.1.4 | **Moduł Kampanii i Sesji** | 7d | 2026-02-07 | 2026-02-14 |  | 55.16d |  | feature/rpg-api |  |  |
| 172 | 3.1.4.1 | Implementacja modelu Session | 1d | 2026-02-07 | 2026-02-08 | 170 | 55.16d | 0d | feature/rpg-api | Backend/Models | feature/sessions-model |
| 173 | 3.1.4.2 | Endpoint: GET /api/campaigns | 1d | 2026-02-08 | 2026-02-09 | 172 | 55.16d | 0d | feature/rpg-api | Backend/Campaigns | feature/campaigns-list |
| 174 | 3.1.4.3 | Endpoint: POST /api/campaigns | 1d | 2026-02-09 | 2026-02-10 | 173 | 55.16d | 0d |  | Backend/Campaigns | feature/campaigns-create |
| 175 | 3.1.4.4 | Endpoint: GET /api/campaigns/:id | 1d | 2026-02-10 | 2026-02-11 | 174 | 55.16d | 0d | feature/rpg-api | Backend/Campaigns | feature/campaigns-view |
| 176 | 3.1.4.5 | Endpoint: PUT /api/campaigns/:id | 1d | 2026-02-11 | 2026-02-12 | 175 | 55.16d | 0d | feature/rpg-api | Backend/Campaigns | feature/campaigns-update |
| 177 | 3.1.4.6 | Endpoint: DELETE /api/campaigns/:id | 1d | 2026-02-12 | 2026-02-13 | 176 | 55.16d | 0d | feature/rpg-api | Backend/Campaigns | feature/campaigns-delete |
| 178 | 3.1.4.7 | Testy jednostkowe: SessionModel | 1d | 2026-02-13 | 2026-02-14 | 177 | 55.16d | 0d | feature/rpg-api | Backend/Tests | feature/campaigns-tests |

Notes:
- 152: System rejestracji i logowania działający
- 153: Klasa: App\Models\UserModel; metody: find, create, updatePassword
- 154: Composer: firebase/php-jwt; Helper: App\Helpers\JWTHelper
- 155: Klasa: App\Controllers\AuthController; metody: register, login, refresh, logout
- 156: Walidacja: email unique, hasło min 8 znaków; zwraca: 201 + Access Token
- 157: Weryfikacja: bcrypt; zwraca: Access Token (15min) + Refresh Token (7 dni)
- 158: Input: Refresh Token; output: nowy Access Token
- 159: Invalidacja Refresh Token (blacklist w Redis lub MySQL)
- 160: Wysyłka emaila z tokenem reset; link: /reset/{token}
- 161: Weryfikacja tokenu JWT; wstrzykiwanie user_id do Request
- 162: Biblioteka: PHPMailer; config w .env: SMTP_HOST, SMTP_PORT
- 163: PHPUnit: testRegisterSuccess, testLoginInvalidCredentials, testRefreshToken
- 164: Zarządzanie profilem i awatarem
- 165: Zwraca profil aktualnie zalogowanego użytkownika (z tokenu JWT)
- 166: Publiczny profil innego użytkownika (bez email)
- 167: Edycja własnego profilu: username, bio, avatar_url
- 168: Zmiana hasła; wymaga: old_password, new_password
- 169: SDK: cloudinary/cloudinary_php; endpoint: POST /api/profile/avatar
- 170: Lista zasobów dla galerii avatarów (opcjonalne)
- 171: CRUD kampanii RPG
- 172: Klasa: App\Models\SessionModel; relacje: belongsTo(User), hasMany(Tables)
- 173: Lista kampanii użytkownika (jako GM lub gracz); query: ?status=active
- 174: Utworzenie nowej kampanii; body: {name, description, system}
- 175: Szczegóły kampanii; includes: lista graczy, stoliki
- 176: Edycja kampanii (tylko GM); body: {name, description, status}
- 177: Usunięcie kampanii (tylko GM); soft delete lub cascade
- 178: PHPUnit: testCreateSession, testGMOwnership, testSoftDelete

| ID | WBS | Task | Duration | Start | Finish | Predecessors | Total slack | Free slack | Repo Branch | Lokalizacja | Branch Feature |
| --- | --- | --- | --- | --- | --- | --- | --- | --- | --- | --- | --- |
| 179 | 3.1.5 | **Moduł Wirtualnych Stołów (Blaty)** | 10d | 2026-02-14 | 2026-02-24 |  | 55.16d |  | feature/rpg-api |  |  |
| 180 | 3.1.5.1 | Implementacja modelu Table | 1d | 2026-02-14 | 2026-02-15 | 178 | 55.16d | 0d | feature/rpg-api | Backend/Models | feature/tables-model |
| 181 | 3.1.5.2 | Endpoint: GET /api/tables | 1d | 2026-02-15 | 2026-02-16 | 180 | 55.16d | 0d | feature/rpg-api | Backend/Tables | feature/tables-list |
| 182 | 3.1.5.3 | Endpoint: POST /api/tables | 1d | 2026-02-16 | 2026-02-17 | 181 | 55.16d | 0d |  | Backend/Tables | feature/tables-create |
| 183 | 3.1.5.4 | Endpoint: GET /api/tables/:id | 1d | 2026-02-17 | 2026-02-18 | 182 | 55.16d | 0d | feature/rpg-api | Backend/Tables | feature/tables-view |
| 184 | 3.1.5.5 | Endpoint: PUT /api/tables/:id | 1d | 2026-02-18 | 2026-02-19 | 183 | 55.16d | 0d | feature/rpg-api | Backend/Tables | feature/tables-update |
| 185 | 3.1.5.6 | Endpoint: DELETE /api/tables/:id | 1d | 2026-02-19 | 2026-02-20 | 184 | 55.16d | 0d | feature/rpg-api | Backend/Tables | feature/tables-delete |
| 186 | 3.1.5.7 | Implementacja systemu zaproszeń do stołu | 1d | 2026-02-20 | 2026-02-21 | 185 | 55.16d | 0d | feature/rpg-api | Backend/Invitations | feature/invitations-generate |
| 187 | 3.1.5.8 | Endpoint: POST /api/tables/:id/invite | 1d | 2026-02-21 | 2026-02-22 | 186 | 55.16d | 0d | feature/rpg-api | Backend/Invitations | feature/invitations-create |
| 188 | 3.1.5.9 | Endpoint: POST /api/tables/join | 1d | 2026-02-22 | 2026-02-23 | 187 | 55.16d | 0d | feature/rpg-api | Backend/Invitations | feature/invitations-join |
| 189 | 3.1.5.10 | Wysyłka emaila z zaproszeniem (opcjonalne) | 1d | 2026-02-23 | 2026-02-24 | 188 | 55.16d | 0d | feature/rpg-api | Backend/Services | feature/invitations-email |
| 190 | 3.1.6 | **Moduł Postaci (Characters)** | 8d | 2026-02-24 | 2026-03-04 |  | 55.16d |  | feature/rpg-api |  |  |
| 191 | 3.1.6.1 | Implementacja modelu Character | 1d | 2026-02-24 | 2026-02-25 | 189 | 55.16d | 0d | feature/rpg-api | Backend/Models | feature/characters-model |
| 192 | 3.1.6.2 | Endpoint: GET /api/characters | 1d | 2026-02-25 | 2026-02-26 | 191 | 55.16d | 0d | feature/rpg-api | Backend/Characters | feature/characters-list |
| 193 | 3.1.6.3 | Endpoint: POST /api/characters | 1d | 2026-02-26 | 2026-02-27 | 192 | 55.16d | 0d |  | Backend/Characters | feature/characters-create |
| 194 | 3.1.6.4 | Endpoint: GET /api/characters/:id | 1d | 2026-02-27 | 2026-02-28 | 193 | 55.16d | 0d | feature/character-manager | Backend/Characters | feature/characters-view |
| 195 | 3.1.6.5 | Endpoint: PUT /api/characters/:id | 1d | 2026-02-28 | 2026-03-01 | 194 | 55.16d | 0d | feature/character-manager | Backend/Characters | feature/characters-update |
| 196 | 3.1.6.6 | Endpoint: DELETE /api/characters/:id | 1d | 2026-03-01 | 2026-03-02 | 195 | 55.16d | 0d | feature/character-manager | Backend/Characters | feature/characters-delete |
| 197 | 3.1.6.7 | System uprawnień do postaci (Permissions) | 1d | 2026-03-02 | 2026-03-03 | 196 | 55.16d | 0d | feature/character-manager | Backend/Permissions | feature/characters-permissions |
| 198 | 3.1.6.8 | Endpoint: POST /api/characters/:id/permissions | 1d | 2026-03-03 | 2026-03-04 | 197 | 55.16d | 0d | feature/character-manager | Backend/Permissions | feature/characters-share |
| 199 | 3.1.7 | **Moduł Ekwipunku i Przedmiotów** | 10d | 2026-03-04 | 2026-03-14 |  | 55.16d |  | feature/character-manager |  |  |
| 200 | 3.1.7.1 | Implementacja modelu Item | 1d | 2026-03-04 | 2026-03-05 | 198 | 55.16d | 0d | feature/character-manager | Backend/Models | feature/items-model |
| 201 | 3.1.7.2 | Implementacja modelu Inventory | 1d | 2026-03-05 | 2026-03-06 | 200 | 55.16d | 0d | feature/rpg-api | Backend/Models | feature/inventory-model |
| 202 | 3.1.7.3 | Endpoint: GET /api/characters/:id/inventory | 1d | 2026-03-06 | 2026-03-07 | 201 | 55.16d | 0d | feature/api-setup | Backend/Inventory | feature/inventory-list |
| 203 | 3.1.7.4 | Endpoint: POST /api/characters/:id/inventory | 1d | 2026-03-07 | 2026-03-08 | 202 | 55.16d | 0d | feature/character-manager | Backend/Inventory | feature/inventory-add |
| 204 | 3.1.7.5 | Endpoint: PUT /api/inventory/:id | 1d | 2026-03-08 | 2026-03-09 | 203 | 55.16d | 0d |  | Backend/Inventory | feature/inventory-equip |
| 205 | 3.1.7.6 | Endpoint: DELETE /api/inventory/:id | 1d | 2026-03-09 | 2026-03-10 | 204 | 55.16d | 0d | feature/rpg-api | Backend/Inventory | feature/inventory-remove |
| 206 | 3.1.7.7 | System handlu/wymiany (Trading) | 1d | 2026-03-10 | 2026-03-11 | 205 | 55.16d | 0d | feature/rpg-api | Backend/Trading | feature/trading-system |
| 207 | 3.1.7.8 | Endpoint: POST /api/trade/offer | 1d | 2026-03-11 | 2026-03-12 | 206 | 55.16d | 0d | feature/rpg-api | Backend/Trading | feature/trading-offer |
| 208 | 3.1.7.9 | Endpoint: POST /api/trade/accept | 1d | 2026-03-12 | 2026-03-13 | 207 | 55.16d | 0d | feature/rpg-api | Backend/Trading | feature/trading-accept |
| 209 | 3.1.7.10 | Kosz przedmiotów (Soft Delete) | 1d | 2026-03-13 | 2026-03-14 | 208 | 55.16d | 0d | feature/rpg-api | Backend/Inventory | feature/inventory-trash |

Notes:
- 179: CRUD stołów w kampaniach
- 180: Klasa: App\Models\TableModel; relacje: belongsTo(Session), hasMany(Maps, ChatMessages)
- 181: Lista wszystkich stołów użytkownika (przez kampanie)
- 182: Utworzenie nowego stołu; body: {session_id, name, config_json}
- 183: Szczegóły stołu; includes: mapa, tokeny, gracze online
- 184: Edycja konfiguracji stołu (tylko GM); body: {background_url, grid_size}
- 185: Usunięcie stołu (tylko GM)
- 186: Model: InvitationModel; generowanie UUID token
- 187: Utworzenie zaproszenia; body: {max_uses, expires_at}; zwraca: token
- 188: Dołączenie do stołu; body: {invite_token}; dodaje user_id do table_players
- 189: Template: invite_email.html; link: https://blatyrpg.pl/join/{token}
- 190: CRUD postaci graczy i NPC
- 191: Klasa: App\Models\CharacterModel; relacje: belongsTo(User, Session), hasMany(Inventory)
- 192: Lista postaci; query: ?session_id=X, ?user_id=Y
- 193: Utworzenie postaci; body: {name, race, class, stats_json}
- 194: Szczegóły postaci (karta); includes: ekwipunek, statystyki
- 195: Edycja postaci; sprawdzenie uprawnień (właściciel lub GM)
- 196: Usunięcie postaci (właściciel lub GM)
- 197: Tabela: character_permissions; kolumny: character_id, user_id, permission_level (view/edit)
- 198: Nadanie uprawnień innemu graczowi (np. współdzielenie postaci)
- 199: Zarządzanie ekwipunkiem postaci
- 200: Klasa: App\Models\ItemModel; kolumny: name, type, properties_json, value
- 201: Klasa: App\Models\InventoryModel; relacje: belongsTo(Character, Item)
- 202: Lista ekwipunku postaci; includes: item details
- 203: Dodanie przedmiotu; body: {item_id, quantity}
- 204: Aktualizacja (np. założenie przedmiotu); body: {equipped: true}
- 205: Usunięcie przedmiotu z ekwipunku
- 206: Tabela tymczasowa: trade_offers; mechanizm wymiany między postaciami
- 207: Utworzenie oferty wymiany; body: {target_character_id, offered_items, requested_items}
- 208: Akceptacja oferty; transfer przedmiotów + wyliczenie waluty
- 209: Kolumna: deleted_at w inventory; możliwość odzyskania przez 7 dni

| ID | WBS | Task | Duration | Start | Finish | Predecessors | Total slack | Free slack | Repo Branch | Lokalizacja | Branch Feature |
| --- | --- | --- | --- | --- | --- | --- | --- | --- | --- | --- | --- |
| 210 | 3.1.8 | **Moduł Map i Tokenów (VTT Core)** | 11d | 2026-03-14 | 2026-03-25 |  | 55.16d |  | feature/rpg-api |  |  |
| 211 | 3.1.8.1 | Implementacja modelu Map | 1d | 2026-03-14 | 2026-03-15 | 209 | 55.16d | 0d | feature/rpg-api | Backend/Models | feature/maps-model |
| 212 | 3.1.8.2 | Endpoint: POST /api/maps | 1d | 2026-03-15 | 2026-03-16 | 211 | 55.16d | 0d | feature/rpg-api | Backend/Maps | feature/maps-upload |
| 213 | 3.1.8.3 | Endpoint: GET /api/maps/:id | 1d | 2026-03-16 | 2026-03-17 | 212 | 55.16d | 0d | feature/rpg-api | Backend/Maps | feature/maps-view |
| 214 | 3.1.8.4 | Endpoint: PUT /api/maps/:id | 1d | 2026-03-17 | 2026-03-18 | 213 | 55.16d | 0d | feature/rpg-api | Backend/Maps | feature/maps-update |
| 215 | 3.1.8.5 | Endpoint: DELETE /api/maps/:id | 1d | 2026-03-18 | 2026-03-19 | 214 | 55.16d | 0d |  | Backend/Maps | feature/maps-delete |
| 216 | 3.1.8.6 | Implementacja modelu Token | 1d | 2026-03-19 | 2026-03-20 | 215 | 55.16d | 0d | feature/rpg-api | Backend/Models | feature/tokens-model |
| 217 | 3.1.8.7 | Endpoint: POST /api/tokens | 1d | 2026-03-20 | 2026-03-21 | 216 | 55.16d | 0d | feature/rpg-api | Backend/Tokens | feature/tokens-create |
| 218 | 3.1.8.8 | Endpoint: PUT /api/tokens/:id | 1d | 2026-03-21 | 2026-03-22 | 217 | 55.16d | 0d | feature/rpg-api | Backend/Tokens | feature/tokens-move |
| 219 | 3.1.8.9 | Endpoint: DELETE /api/tokens/:id | 1d | 2026-03-22 | 2026-03-23 | 218 | 55.16d | 0d | feature/rpg-api | Backend/Tokens | feature/tokens-delete |
| 220 | 3.1.8.10 | System Fog of War (backend state) | 1d | 2026-03-23 | 2026-03-24 | 219 | 55.16d | 0d | feature/rpg-api | Backend/Maps | feature/fog-of-war-backend |
| 221 | 3.1.8.11 | Endpoint: PUT /api/maps/:id/fog | 1d | 2026-03-24 | 2026-03-25 | 220 | 55.16d | 0d | feature/rpg-api | Backend/Maps | feature/fog-of-war-update |
| 222 | 3.1.9 | **Moduł Czatu (Real-Time Messaging)** | 9d | 2026-03-25 | 2026-04-08 |  | 55.16d |  | feature/rpg-api |  |  |
| 223 | 3.1.9.1 | Implementacja modelu ChatMessage | 1d | 2026-03-25 | 2026-03-26 | 221 | 55.16d | 0d | feature/rpg-api | Backend/Models | feature/chat-model |
| 224 | 3.1.9.2 | Endpoint: GET /api/tables/:id/messages | 1d | 2026-03-26 | 2026-03-27 | 223 | 55.16d | 0d | feature/rpg-api | Backend/Chat | feature/chat-history |
| 225 | 3.1.9.3 | Endpoint: POST /api/tables/:id/messages | 1d | 2026-03-27 | 2026-03-28 | 224 | 55.16d | 0d | feature/rpg-api | Backend/Chat | feature/chat-send |
| 226 | 3.1.9.4 | Implementacja serwera WebSocket (Socket.io) | 1d | 2026-03-28 | 2026-03-29 | 225 | 55.16d | 0d | feature/rpg-api | WebSocket | feature/websocket-server |
| 227 | 3.1.9.5 | WebSocket Event: join_table | 1d | 2026-03-29 | 2026-03-30 | 226 | 55.16d | 0d |  | WebSocket | feature/ws-join-room |
| 228 | 3.1.9.6 | WebSocket Event: chat_message | 1d | 2026-03-30 | 2026-03-31 | 227 | 55.16d | 0d | feature/rpg-api | WebSocket | feature/ws-chat-message |
| 229 | 3.1.9.7 | WebSocket Event: private_message | 1d | 2026-03-31 | 2026-04-01 | 228 | 55.16d | 0d | feature/rpg-api | WebSocket | feature/ws-private-message |
| 230 | 3.1.9.8 | Middleware WebSocket: JWT Authentication | 1d | 2026-04-01 | 2026-04-02 | 229 | 55.16d | 0d | feature/rpg-api | WebSocket | feature/ws-auth-middleware |
| 231 | 3.1.9.9 | Buffer wiadomości (ostatnie 500 per stół) | 1d | 2026-04-02 | 2026-04-08 | 230 | 55.16d | 0d | feature/rpg-api | WebSocket | feature/ws-message-buffer |
| 232 | 3.1.10 | **Moduł Rzutów Kośćmi (Dice Roller)** | 9d | 2026-04-08 | 2026-04-17 |  | 55.16d |  | feature/rpg-api |  |  |
| 233 | 3.1.10.1 | Implementacja modelu DiceRoll | 1d | 2026-04-08 | 2026-04-09 | 231 | 55.16d | 0d | feature/rpg-api | Backend/Models | feature/dice-model |
| 234 | 3.1.10.2 | Biblioteka parsowania formuł dice | 1d | 2026-04-09 | 2026-04-10 | 233 | 55.16d | 0d | feature/rpg-api | Backend/Services | feature/dice-parser |
| 235 | 3.1.10.3 | Endpoint: POST /api/dice/roll | 1d | 2026-04-10 | 2026-04-11 | 234 | 55.16d | 0d | feature/rpg-api | Backend/Dice | feature/dice-roll-endpoint |
| 236 | 3.1.10.4 | Endpoint: GET /api/tables/:id/rolls | 1d | 2026-04-11 | 2026-04-12 | 235 | 55.16d | 0d | feature/rpg-api | Backend/Dice | feature/dice-history |
| 237 | 3.1.10.5 | WebSocket Event: dice_roll | 1d | 2026-04-12 | 2026-04-13 | 236 | 55.16d | 0d |  | WebSocket | feature/ws-dice-roll |
| 238 | 3.1.10.6 | Implementacja rzutów zaawansowanych (przewaga/utrudnienie D&D 5e) | 1d | 2026-04-13 | 2026-04-14 | 237 | 55.16d | 0d | feature/dice-roller | Backend/Dice | feature/dice-advantage |
| 239 | 3.1.10.7 | System makr rzutów | 1d | 2026-04-14 | 2026-04-15 | 238 | 55.16d | 0d | feature/dice-roller | Backend/Macros | feature/macros-create |
| 240 | 3.1.10.8 | Endpoint: GET /api/macros | 1d | 2026-04-15 | 2026-04-16 | 239 | 55.16d | 0d | feature/dice-roller | Backend/Macros | feature/macros-list |
| 241 | 3.1.10.9 | Endpoint: POST /api/macros/:id/execute | 1d | 2026-04-16 | 2026-04-17 | 240 | 55.16d | 0d | feature/dice-roller | Backend/Macros | feature/macros-execute |

Notes:
- 210: Virtual Tabletop - mapy i pionki
- 211: Klasa: App\Models\MapModel; relacje: belongsTo(Table), hasMany(Tokens)
- 212: Upload mapy; body: {table_id, name, image_file}; integracja Cloudinary
- 213: Pobranie mapy; includes: tokeny, fog_of_war data
- 214: Edycja konfiguracji mapy; body: {grid_size, layers_json}
- 215: Usunięcie mapy (tylko GM)
- 216: Klasa: App\Models\TokenModel; kolumny: x, y, rotation, scale, visibility
- 217: Utworzenie tokena; body: {map_id, character_id, x, y, icon_url}
- 218: Przesunięcie tokena; body: {x, y, rotation}; walidacja GM lub właściciel
- 219: Usunięcie tokena z mapy
- 220: Kolumna: fog_data (JSON) w maps; struktura: {revealed_areas: [[x,y],...]}
- 221: Aktualizacja Fog of War; body: {reveal: [[x,y]], hide: [[x,y]]}
- 222: Czat z historią i kanałami
- 223: Klasa: App\Models\ChatMessageModel; kolumny: table_id, sender_id, channel, text, timestamp
- 224: Historia czatu; query: ?limit=100, ?channel=public; sortowanie: DESC timestamp
- 225: Wysłanie wiadomości (backup do DB); body: {channel, text}
- 226: Plik: websocket/server.js; biblioteka: socket.io v4; port: 8082
- 227: Klient dołącza do pokoju (Socket.io Room); payload: {table_id, token}
- 228: Broadcast wiadomości w pokoju; payload: {channel, text, sender}
- 229: Wiadomość DM do konkretnego użytkownika; payload: {recipient_id, text}
- 230: Weryfikacja tokenu w handshake; odrzucenie połączenia jeśli invalid
- 231: Cache w Redis lub pamięci Node.js; przy dołączeniu wysłać historię
- 232: System rzutów z historią
- 233: Klasa: App\Models\DiceRollModel; kolumny: user_id, table_id, formula, result, timestamp
- 234: Parser: regex lub ANTLR; wsparcie: 3d6+5, 2d20kh1 (keep highest), d100
- 235: Rzut kośćmi; body: {formula, table_id}; zapis do DB + zwrot wyniku
- 236: Historia rzutów stołu; query: ?limit=50; sortowanie: DESC
- 237: Broadcast rzutu w czasie rzeczywistym; payload: {formula, result, user}
- 238: Formuły: 2d20kh1 (advantage), 2d20kl1 (disadvantage)
- 239: Model: MacroModel; endpoint: POST /api/macros; body: {name, formula, description}
- 240: Lista makr użytkownika + publiczne makra
- 241: Wykonanie makra; zwraca wynik rzutu; broadcast przez WebSocket

| ID | WBS | Task | Duration | Start | Finish | Predecessors | Complete | Remaining | Total slack | Free slack | Repo Branch | Lokalizacja | Branch Feature |
| --- | --- | --- | --- | --- | --- | --- | --- | --- | --- | --- | --- | --- | --- |
| 242 | 3.1.11 | **Moduł Panelu Admina** | 5d | 2026-04-17 | 2026-04-22 |  |  |  | 55.16d |  | feature/rpg-api |  |  |
| 243 | 3.1.11.1 | Endpoint: GET /api/admin/stats | 1d | 2026-04-17 | 2026-04-18 | 241 |  |  | 55.16d | 0d | feature/dice-roller | Backend/Admin | feature/admin-dashboard |
| 244 | 3.1.11.2 | Endpoint: GET /api/admin/users | 1d | 2026-04-18 | 2026-04-19 | 243 |  |  | 55.16d | 0d | feature/dice-roller | Backend/Admin | feature/admin-users-list |
| 245 | 3.1.11.3 | Endpoint: PUT /api/admin/users/:id | 1d | 2026-04-19 | 2026-04-20 | 244 |  |  | 55.16d | 0d | feature/dice-roller | Backend/Admin | feature/admin-user-edit |
| 246 | 3.1.11.4 | Endpoint: DELETE /api/admin/users/:id | 1d | 2026-04-20 | 2026-04-21 | 245 |  |  | 55.16d | 0d | feature/dice-roller | Backend/Admin | feature/admin-user-delete |
| 247 | 3.1.11.5 | Middleware: AdminMiddleware | 1d | 2026-04-21 | 2026-04-22 | 246 |  |  | 55.16d | 0d | feature/dice-roller | Backend/Middleware | feature/admin-middleware |
| 248 | 3.1.12 | **Warstwa Front-End: Struktura Aplikacji** | 7d | 2026-04-22 | 2026-04-29 |  |  |  | 55.16d |  | feature/dice-roller |  |  |
| 249 | 3.1.12.1 | Inicjalizacja projektu Vue 3 (webpack) | 1d | 2026-04-22 | 2026-04-23 | 247 |  |  | 55.16d | 0d | feature/dice-roller-v2 | Frontend | feature/frontend-init |
| 250 | 3.1.12.2 | Instalacja zależności: Vue Router | 1d | 2026-04-23 | 2026-04-24 | 249 |  |  | 55.16d | 0d |  | Frontend | feature/vue-router |
| 251 | 3.1.12.3 | Instalacja zależności: Vuex (State Management) | 1d | 2026-04-24 | 2026-04-25 | 250 |  |  | 55.16d | 0d | feature/rpg-api | Frontend | feature/pinia-state |
| 252 | 3.1.12.4 | Instalacja zależności: Axios (HTTP Client) | 1d | 2026-04-25 | 2026-04-26 | 251 |  |  | 55.16d | 0d | feature/rpg-api | Frontend | feature/axios-client |
| 253 | 3.1.12.5 | Client | 1d | 2026-04-26 | 2026-04-27 | 252 |  |  | 55.16d | 0d | feature/rpg-api | Frontend | feature/socketio-client |
| 254 | 3.1.12.6 | Konfiguracja Vite Proxy (dev server) | 1d | 2026-04-27 | 2026-04-28 | 253 |  |  | 55.16d | 0d | feature/rpg-api | Frontend | feature/vite-proxy |
| 255 | 3.1.12.7 | Struktura katalogów projektu | 1d | 2026-04-28 | 2026-04-29 | 254 |  |  | 55.16d | 0d | feature/rpg-api | Frontend | feature/frontend-structure |
| 256 | 3.1.13 | **Front-End: Moduł Uwierzytelniania (UI)** | 6d | 2026-04-29 | 2026-05-05 |  |  |  | 55.16d |  |  |  |  |
| 257 | 3.1.13.1 | Komponent: LoginPage.vue | 1d | 2026-04-29 | 2026-04-30 | 255 |  |  | 55.16d | 0d | feature/frontend-config | Frontend/Views | feature/frontend-login |
| 258 | 3.1.13.2 | Komponent: RegisterPage.vue | 1d | 2026-04-30 | 2026-05-01 | 257 |  |  | 55.16d | 0d | feature/frontend-config | Frontend/Views | feature/frontend-register |
| 259 | 3.1.13.3 | Komponent: ResetPasswordPage.vue | 1d | 2026-05-01 | 2026-05-02 | 258 |  |  | 55.16d | 0d | feature/rpg-api | Frontend/Views | feature/frontend-reset-password |
| 260 | 3.1.13.4 | Store Vuex: authStore | 1d | 2026-05-02 | 2026-05-03 | 259 |  |  | 55.16d | 0d | feature/frontend-config | Frontend/Stores | feature/auth-store |
| 261 | 3.1.13.5 | Axios Interceptor: JWT Auto-refresh | 1d | 2026-05-03 | 2026-05-04 | 260 |  |  | 55.16d | 0d | feature/frontend-config | Frontend/Services | feature/axios-interceptor |
| 262 | 3.1.13.6 | Router Guard: requireAuth | 1d | 2026-05-04 | 2026-05-05 | 261 |  |  | 55.16d | 0d | feature/frontend-config | Frontend/Router | feature/router-guard |
| 263 | 3.1.14 | **Front-End: Dashboard i Nawigacja** | 7d | 2026-05-05 A | 2026-05-12 |  | 14% | 6d | 54.16d |  | feature/frontend-config |  |  |
| 264 | 3.1.14.1 | Komponent: HomeView.vue | 1d | 2026-05-06 A | 2026-05-07 A | 262 | 100% |  |  |  | feature/frontend-config | Frontend/Layouts | feature/home-page |
| 265 | 3.1.14.1 | Komponent: AppLayout.vue | 1d | 2026-05-05 | 2026-05-06 | 262 |  |  | 55.16d | 1d | feature/frontend-config | Frontend/Layouts | feature/app-layout |
| 266 | 3.1.14.2 | Komponent: Navbar.vue | 1d | 2026-05-07 | 2026-05-08 | 265, 264 |  |  | 54.16d | 0d |  | Frontend/Components | feature/navbar |
| 267 | 3.1.14.3 | Komponent: Sidebar.vue | 1d | 2026-05-08 | 2026-05-09 | 266 |  |  | 54.16d | 0d | feature/rpg-api | Frontend/Components | feature/sidebar |
| 268 | 3.1.14.4 | Strona: DashboardPage.vue | 1d | 2026-05-09 | 2026-05-10 | 267 |  |  | 54.16d | 0d | feature/rpg-api | Frontend/Views | feature/dashboard-page |
| 269 | 3.1.14.5 | Strona 404 | 1d | 2026-05-10 | 2026-05-11 | 268 |  |  | 54.16d | 0d | feature/rpg-api | Frontend/Views | feature/404-page |
| 270 | 3.1.14.6 | Strona 403 | 1d | 2026-05-11 | 2026-05-12 | 269 |  |  | 54.16d | 0d | feature/auth-jwt | Frontend/Views | feature/403-page |

Notes:
- 242: Zarządzanie systemem
- 243: Dashboard: liczba użytkowników, aktywne stoły, rzuty ostatnie 24h
- 244: Lista wszystkich użytkowników; query: ?role=admin, ?banned=true
- 245: Edycja roli lub ban użytkownika; body: {role, is_banned}
- 246: Usunięcie konta użytkownika (hard delete)
- 247: Sprawdzenie: user.role === 'admin'; dostęp tylko dla adminów
- 248: Setup Vue 3 + Router + State Management
- 249: Komenda: npm create vite@latest frontend -- --template vue; TypeScript opcjonalnie
- 250: Biblioteka: vue-router@4; konfiguracja routingu w /src/router/index.js
- 251: Biblioteka: vuex; store: /src/stores/auth.js, user.js, game.js
- 252: Biblioteka: axios; konfiguracja interceptorów JWT w /src/api/axios.js
- 253: Biblioteka: socket.io-client; moduł: /src/services/websocket.js
- 254: Plik: vite.config.js; proxy: /api → http://localhost:8000, /socket.io → http://localhost:8082
- 255: src/components, /views, /layouts, /composables, /utils
- 256: Strony logowania i rejestracji
- 257: Formularz: email, password; wywołanie: authStore.login(); redirect: /dashboard
- 258: Formularz: email, password, confirm_password; walidacja po stronie klienta
- 259: Formularz: email; endpoint: /api/auth/reset-password
- 260: State: user, token, isAuthenticated; actions: login, logout, refresh, checkAuth
- 261: Przechwytywanie 401; automatyczne wywołanie /api/auth/refresh; retry request
- 262: Navigation guard: beforeEach; przekierowanie na /login jeśli brak tokenu
- 263: Główny layout aplikacji
- 264: Strona domowa aplikacji. Stash WIP(home): HomeView.vue scaffold [move to feature/home-page]
- 265: Layout: navbar + sidebar + <router-view>; responsive
- 266: Logo, menu użytkownika, notyfikacje, wylogowanie
- 267: Menu: Dashboard, Kampanie, Moje Postacie, Ustawienia
- 268: Widok główny: lista aktywnych kampanii, ostatnie rzuty, statystyki
- 269: Komponent obsługi błędu 404; link powrotu do dashboard
- 270: Komponent obsługi braku uprawnień

| ID | WBS | Task | Duration | Start | Finish | Predecessors | Total slack | Free slack | Repo Branch | Lokalizacja | Branch Feature |
| --- | --- | --- | --- | --- | --- | --- | --- | --- | --- | --- | --- |
| 271 | 3.1.15 | **Front-End: Moduł Kampanii** | 5d | 2026-05-12 | 2026-05-17 |  | 54.16d |  | feature/frontend-config |  |  |
| 272 | 3.1.15.1 | Strona: CampaignsListPage.vue | 1d | 2026-05-12 | 2026-05-13 | 270 | 54.16d | 0d | feature/rpg-api | Frontend/Views | feature/campaigns-list-page |
| 273 | 3.1.15.2 | Komponent: CampaignCard.vue | 1d | 2026-05-13 | 2026-05-14 | 272 | 54.16d | 0d |  | Frontend/Components | feature/campaign-card |
| 274 | 3.1.15.3 | Strona: CampaignCreatePage.vue | 1d | 2026-05-14 | 2026-05-15 | 273 | 54.16d | 0d | feature/rpg-api | Frontend/Views | feature/campaign-create-page |
| 275 | 3.1.15.4 | Strona: CampaignDetailsPage.vue | 1d | 2026-05-15 | 2026-05-16 | 274 | 54.16d | 0d | feature/rpg-api | Frontend/Views | feature/campaign-details-page |
| 276 | 3.1.15.5 | Store Vuex: campaignsStore | 1d | 2026-05-16 | 2026-05-17 | 275 | 54.16d | 0d | feature/rpg-api | Frontend/Stores | feature/campaigns-store |
| 277 | 3.1.16 | **Front-End: Moduł Wirtualnego Stołu (VTT UI)** | 14d | 2026-05-17 | 2026-05-31 |  | 54.16d |  | feature/rpg-api |  |  |
| 278 | 3.1.16.1 | Strona: TableRoomPage.vue | 1d | 2026-05-17 | 2026-05-18 | 276 | 54.16d | 0d | feature/rpg-api | Frontend/Views | feature/table-room-page |
| 279 | 3.1.16.2 | Komponent: MapCanvas.vue | 1d | 2026-05-18 | 2026-05-19 | 278 | 54.16d | 0d | feature/rpg-api | Frontend/Components | feature/map-canvas |
| 280 | 3.1.16.3 | Komponent: TokenLayer.vue | 1d | 2026-05-19 | 2026-05-20 | 279 | 54.16d | 0d |  | Frontend/Components | feature/token-layer |
| 281 | 3.1.16.4 | Komponent: GridLayer.vue | 1d | 2026-05-20 | 2026-05-21 | 280 | 54.16d | 0d | feature/rpg-api | Frontend/Components | feature/grid-layer |
| 282 | 3.1.16.5 | Komponent: FogOfWarLayer.vue | 1d | 2026-05-21 | 2026-05-22 | 281 | 54.16d | 0d | feature/rpg-api | Frontend/Components | feature/fog-layer |
| 283 | 3.1.16.6 | Komponent: DrawingToolbar.vue | 1d | 2026-05-22 | 2026-05-23 | 282 | 54.16d | 0d | feature/rpg-api | Frontend/Components | feature/drawing-toolbar |
| 284 | 3.1.16.7 | Komponent: Sidebar.vue (w grze) | 1d | 2026-05-23 | 2026-05-24 | 283 | 54.16d | 0d | feature/rpg-api | Frontend/Components | feature/game-sidebar |
| 285 | 3.1.16.8 | Komponent: ChatPanel.vue | 1d | 2026-05-24 | 2026-05-25 | 284 | 54.16d | 0d | feature/rpg-api | Frontend/Components | feature/chat-panel |
| 286 | 3.1.16.9 | Komponent: DiceRollerWidget.vue | 1d | 2026-05-25 | 2026-05-26 | 285 | 54.16d | 0d |  | Frontend/Components | feature/dice-widget |
| 287 | 3.1.16.10 | Komponent: CharacterSheetModal.vue | 1d | 2026-05-26 | 2026-05-27 | 286 | 54.16d | 0d | feature/rpg-api | Frontend/Components | feature/character-sheet-modal |
| 288 | 3.1.16.11 | Komponent: InventoryPanel.vue | 1d | 2026-05-27 | 2026-05-28 | 287 | 54.16d | 0d | feature/rpg-api | Frontend/Components | feature/inventory-panel |
| 289 | 3.1.16.12 | Komponent: InitiativeTracker.vue | 1d | 2026-05-28 | 2026-05-29 | 288 | 54.16d | 0d | feature/rpg-api | Frontend/Components | feature/initiative-tracker |
| 290 | 3.1.16.13 | Store Vuex: gameStore | 1d | 2026-05-29 | 2026-05-30 | 289 | 54.16d | 0d | feature/rpg-api | Frontend/Stores | feature/game-store |
| 291 | 3.1.16.14 | WebSocket Service: Integration | 1d | 2026-05-30 | 2026-05-31 | 290 | 54.16d | 0d | feature/rpg-api | Frontend/Services | feature/ws-integration |
| 292 | 3.1.17 | **Front-End: Moduł Profilu** | 4d | 2026-05-31 | 2026-06-04 |  | 54.16d |  | feature/rpg-api |  |  |
| 293 | 3.1.17.1 | Strona: ProfilePage.vue | 1d | 2026-05-31 | 2026-06-01 | 291 | 54.16d | 0d | feature/rpg-api | Frontend/Views | feature/profile-page |
| 294 | 3.1.17.2 | Komponent: AvatarUpload.vue | 1d | 2026-06-01 | 2026-06-02 | 293 | 54.16d | 0d | feature/rpg-api | Frontend/Components | feature/avatar-upload |
| 295 | 3.1.17.3 | Strona: SettingsPage.vue | 1d | 2026-06-02 | 2026-06-03 | 294 | 54.16d | 0d | feature/dice-roller | Frontend/Views | feature/settings-page |
| 296 | 3.1.17.4 | Store Vuex: userStore | 1d | 2026-06-03 | 2026-06-04 | 295 | 54.16d | 0d | feature/character-manager | Frontend/Stores | feature/user-store |

Notes:
- 271: Zarządzanie kampaniami
- 272: Lista kampanii; przyciski: Utwórz, Filtruj (aktywne/archiwalne)
- 273: Karta kampanii: nazwa, GM, liczba graczy, przycisk Wejdź
- 274: Formularz tworzenia kampanii: nazwa, opis, system (dropdown: WFRP/D&D 5e)
- 275: Szczegóły kampanii: lista stołów, lista graczy, opcje edycji (GM only)
- 276: State: campaigns, currentCampaign; actions: fetchCampaigns, createCampaign, deleteCampaign
- 277: Główny interfejs gry
- 278: Layout gry: canvas mapy (lewo), sidebar (prawo), toolbar (góra)
- 279: Canvas HTML5 lub biblioteka Konva.js/PixiJS; render mapy + tokenów + siatki
- 280: Warstwa tokenów; drag & drop; synchronizacja WebSocket
- 281: Warstwa siatki (grid); rozmiar: 5ft × 5ft; snap-to-grid
- 282: Warstwa czarnej mgły; możliwość odkrywania przez GM (narzędzie brush)
- 283: Toolbar narzędzi: ołówek, linia, kształty, gumka, FOW brush
- 284: Zakładki: Czat, Lista walki, Sceny, Postacie, Przedmioty, Dziennik, Ustawienia
- 285: Panel czatu; input wiadomości; historia; kanały (public/dm/gm)
- 286: Widget rzutów: przyciski d4-d100, input formuły, lista ostatnich rzutów
- 287: Modal karty postaci; wyświetlanie statystyk, ekwipunku; edycja (owner/GM)
- 288: Panel ekwipunku; lista przedmiotów, drag & drop, opcja equip/unequip
- 289: Lista walki (initiative order); możliwość sortowania, HP tracking
- 290: State: currentTable, map, tokens, players; actions: joinTable, updateTokenPosition
- 291: Połączenie przy wejściu na stół; eventy: chat_message, dice_roll, token_move, fog_update
- 292: Strona profilu użytkownika
- 293: Widok profilu: awatar, username, bio, statystyki (liczba postaci, sesji)
- 294: Upload awatara przez Cloudinary; podgląd przed wysłaniem
- 295: Ustawienia konta: zmiana hasła, email, język, motyw (dark/light)
- 296: State: profile; actions: fetchProfile, updateProfile, uploadAvatar

| ID | WBS | Task | Duration | Start | Finish | Predecessors | Total slack | Free slack | Repo Branch | Lokalizacja | Branch Feature |
| --- | --- | --- | --- | --- | --- | --- | --- | --- | --- | --- | --- |
| 297 | 3.1.18 | **Lokalizacja i i18n** | 4d | 2026-06-04 | 2026-06-08 |  | 54.16d |  | feature/rpg-api |  |  |
| 298 | 3.1.18.1 | Instalacja biblioteki Vue I18n | 1d | 2026-06-04 | 2026-06-05 | 296 | 54.16d | 0d | feature/rpg-api | Frontend | feature/i18n-setup |
| 299 | 3.1.18.2 | pl.json | 1d | 2026-06-05 | 2026-06-06 | 298 | 54.16d | 0d | feature/rpg-api | Frontend/Locales | feature/i18n-translations |
| 300 | 3.1.18.3 | Endpoint: GET /api/i18n/:lang | 1d | 2026-06-06 | 2026-06-07 | 299 | 54.16d | 0d | feature/rpg-api | Backend/i18n | feature/i18n-endpoint |
| 301 | 3.1.18.4 | Selector języka w Navbar | 1d | 2026-06-07 | 2026-06-08 | 300 | 54.16d | 0d |  | Frontend/Components | feature/language-selector |
| 302 | 3.2 | **Zaawansowane funkcjonalności aplikacji** | 4d | 2026-06-08 | 2026-06-12 |  | 54.16d |  | feature/rpg-api |  |  |
| 303 | 3.2.1 | **Front-End: Moduł Zaawansowany (Opcjonalny)** | 4d | 2026-06-08 | 2026-06-12 |  | 54.16d |  | feature/rpg-api |  |  |
| 304 | 3.2.1.1 | (Jitsi Embed) | 1d | 2026-06-08 | 2026-06-09 | 301 | 54.16d | 0d | feature/rpg-api | Frontend/Components | feature/video-chat |
| 305 | 3.2.1.2 | Strona: MacrosPage.vue | 1d | 2026-06-09 | 2026-06-10 | 304 | 54.16d | 0d | feature/rpg-api | Frontend/Views | feature/macros-page |
| 306 | 3.2.1.3 | Komponent: MacroEditor.vue | 1d | 2026-06-10 | 2026-06-11 | 305 | 54.16d | 0d |  | Frontend/Components | feature/macro-editor |
| 307 | 3.2.1.4 | Strona: AdminPanel.vue | 1d | 2026-06-11 | 2026-06-12 | 306 | 54.16d | 0d | feature/localization | Frontend/Views | feature/admin-panel |
| 308 | 3.3 | Etap testów i wdrożenia | 1d | 2026-06-12 | 2026-06-13 | 307 | 54.16d | 0d | feature/localization |  |  |
| 309 | 3.4 | **Testy Jednostkowe Backend** | 7d | 2026-06-13 | 2026-06-20 |  | 54.16d |  | feature/localization |  |  |
| 310 | 3.4.1 | Setup PHPUnit w projekcie | 1d | 2026-06-13 | 2026-06-14 | 308 | 54.16d | 0d | feature/localization | Backend/Tests | feature/phpunit-setup |
| 311 | 3.4.2 | Testy: AuthController | 1d | 2026-06-14 | 2026-06-15 | 310 | 54.16d | 0d | feature/localization | Backend/Tests | feature/tests-auth |
| 312 | 3.4.3 | Testy: CampaignsController | 1d | 2026-06-15 | 2026-06-16 | 311 | 54.16d | 0d | feature/rpg-catalog | Backend/Tests | feature/tests-campaigns |
| 313 | 3.4.4 | Testy: TablesController | 1d | 2026-06-16 | 2026-06-17 | 312 | 54.16d | 0d | feature/rpg-api | Backend/Tests | feature/tests-tables |
| 314 | 3.4.5 | Testy: CharactersController | 1d | 2026-06-17 | 2026-06-18 | 313 | 54.16d | 0d | feature/rpg-api | Backend/Tests | feature/tests-characters |
| 315 | 3.4.6 | Testy: DiceRoller Service | 1d | 2026-06-18 | 2026-06-19 | 314 | 54.16d | 0d | feature/rpg-api-v2 | Backend/Tests | feature/tests-dice |
| 316 | 3.4.7 | Raport coverage PHPUnit | 1d | 2026-06-19 | 2026-06-20 | 315 | 54.16d | 0d | feature/rpg-catalog | Backend/Tests | feature/tests-coverage |
| 317 | 3.5 | **Testy Jednostkowe Frontend** | 4d | 2026-06-20 | 2026-06-24 |  | 54.16d |  | feature/rpg-api-v3 |  |  |
| 318 | 3.5.1 | Setup Vitest w projekcie | 1d | 2026-06-20 | 2026-06-21 | 316 | 54.16d | 0d | feature/rpg-coc7ed-db | Frontend/Tests | feature/vitest-setup |
| 319 | 3.5.2 | Testy: authStore | 1d | 2026-06-21 | 2026-06-22 | 318 | 54.16d | 0d | feature/character-module-v2 | Frontend/Tests | feature/tests-auth-store |
| 320 | 3.5.3 | Testy: componenty Vue (przykładowe) | 1d | 2026-06-22 | 2026-06-23 | 319 | 54.16d | 0d | feature/character-module-v2 | Frontend/Tests | feature/tests-components |
| 321 | 3.5.4 | Testy: WebSocket Service | 1d | 2026-06-23 | 2026-06-24 | 320 | 54.16d | 0d | feature/character-module-v2 | Frontend/Tests | feature/tests-websocket |

Notes:
- 297: Wsparcie wielojęzyczne
- 298: Biblioteka: vue-i18n@9; konfiguracja w /src/i18n/index.js
- 299: Struktura: /src/locales/pl.json; klucze: common, auth, game, errors
- 300: Dynamiczne pobieranie tłumaczeń z backendu (opcjonalnie)
- 301: Dropdown: Zmiana języka; zapis w localStorage; reload tłumaczeń
- 303: Funkcje Premium
- 304: Iframe Jitsi Meet; integracja z table_id; przycisk Toggle Video
- 305: Lista makr użytkownika; formularz tworzenia; przycisk Execute
- 306: Modal edycji makra; live preview wyniku rzutu
- 307: Dashboard admina; lista użytkowników; statystyki systemu
- 309: Code coverage > 70%
- 310: Plik: phpunit.xml; katalog: backend/tests/; konfiguracja DB testowej
- 311: Test cases: register, login, refresh, logout, invalid credentials
- 312: Test cases: create, update, delete, ownership validation
- 313: Test cases: CRUD, invitations, permissions
- 314: Test cases: create, edit, permissions, delete
- 315: Test cases: parsowanie formuł, rzuty z modyfikatorami, edge cases
- 316: Generowanie HTML report; upload do GitHub Actions artifacts
- 317: Vitest + Vue Test Utils
- 318: Plik: vitest.config.js; katalog: frontend/tests/unit
- 319: Test cases: login action, token refresh, logout
- 320: Test: LoginPage.vue - submit form, validation errors
- 321: Mock Socket.io; test: join room, handle events

| ID | WBS | Task | Duration | Start | Finish | Predecessors | Total slack | Free slack | Repo Branch | Lokalizacja | Branch Feature |
| --- | --- | --- | --- | --- | --- | --- | --- | --- | --- | --- | --- |
| 322 | 3.6 | **Testy E2E (End-to-End)** | 5d | 2026-06-24 | 2026-06-29 |  | 54.16d |  | feature/character-module-v2 |  |  |
| 323 | 3.6.1 | Setup Cypress w projekcie | 1d | 2026-06-24 | 2026-06-25 | 321 | 54.16d | 0d | feature/character-module-v2 | Frontend/Tests | feature/cypress-setup |
| 324 | 3.6.2 | Test E2E: User Registration Flow | 1d | 2026-06-25 | 2026-06-26 | 323 | 54.16d | 0d | feature/professions-option-b | Frontend/Tests | feature/e2e-registration |
| 325 | 3.6.3 | Test E2E: Login → Create Campaign → Join Table | 1d | 2026-06-26 | 2026-06-27 | 324 | 54.16d | 0d | feature/professions-option-b | Frontend/Tests | feature/e2e-game-flow |
| 326 | 3.6.4 | Test E2E: Dice Roll w grze | 1d | 2026-06-27 | 2026-06-28 | 325 | 54.16d | 0d |  | Frontend/Tests | feature/e2e-dice-roll |
| 327 | 3.6.5 | Test E2E: Chat Real-Time | 1d | 2026-06-28 | 2026-06-29 | 326 | 54.16d | 0d |  | Frontend/Tests | feature/e2e-chat |
| 328 | 3.7 | **Testy Wydajnościowe** | 4d | 2026-06-29 | 2026-07-03 |  | 54.16d |  | feature/rpg-api |  |  |
| 329 | 3.7.1 | Setup narzędzia k6 lub Apache JMeter | 1d | 2026-06-29 | 2026-06-30 | 327 | 54.16d | 0d | feature/dice-roller | DevOps/Tests | feature/load-testing-setup |
| 330 | 3.7.2 | Test: 50 równoczesnych połączeń WebSocket | 1d | 2026-06-30 | 2026-07-01 | 329 | 54.16d | 0d | feature/rpg-api | DevOps/Tests | feature/load-test-websocket |
| 331 | 3.7.3 | Test: API Throughput (requests/sec) | 1d | 2026-07-01 | 2026-07-02 | 330 | 54.16d | 0d | feature/rpg-api | DevOps/Tests | feature/load-test-api |
| 332 | 3.7.4 | Analiza wyników i optymalizacja | 1d | 2026-07-02 | 2026-07-03 | 331 | 54.16d | 0d |  | Backend | feature/performance-optimization |
| 333 | 3.8 | **Optymalizacja i Refactoring** | 6d | 2026-07-03 | 2026-07-09 |  | 54.16d |  |  |  |  |
| 334 | 3.8.1 | Code Review: Backend | 1d | 2026-07-03 | 2026-07-04 | 332 | 54.16d | 0d | feature/rpg-api | Backend | feature/code-review-backend |
| 335 | 3.8.2 | Code Review: Frontend | 1d | 2026-07-04 | 2026-07-05 | 334 | 54.16d | 0d | feature/rpg-api | Frontend | feature/code-review-frontend |
| 336 | 3.8.3 | Refactoring: usunięcie dead code | 1d | 2026-07-05 | 2026-07-06 | 335 | 54.16d | 0d | feature/rpg-api | All | feature/remove-dead-code |
| 337 | 3.8.4 | Optymalizacja zapytań SQL | 1d | 2026-07-06 | 2026-07-07 | 336 | 54.16d | 0d | feature/rpg-api | Backend/Database | feature/sql-optimization |
| 338 | 3.8.5 | Lazy Loading komponentów Vue | 1d | 2026-07-07 | 2026-07-08 | 337 | 54.16d | 0d | feature/rpg-api | Frontend | feature/lazy-loading |
| 339 | 3.8.6 | Optymalizacja obrazów (Cloudinary) | 1d | 2026-07-08 | 2026-07-09 | 338 | 54.16d | 0d | feature/rpg-api | Frontend/Backend | feature/image-optimization |
| 340 | 3.9 | **Przygotowanie Wersji Beta** | 6d | 2026-07-09 | 2026-07-15 |  | 54.16d |  | feature/rpg-api |  |  |
| 341 | 3.9.1 | Konfiguracja serwera staging (beta.blatyrpg.pl) | 1d | 2026-07-09 | 2026-07-10 | 339 | 54.16d | 0d |  | DevOps | feature/staging-server |
| 342 | 3.9.2 | Setup Nginx na produkcji | 1d | 2026-07-10 | 2026-07-11 | 341 | 54.16d | 0d | feature/rpg-api | DevOps | feature/nginx-production |
| 343 | 3.9.3 | Setup CI/CD: Auto-deploy do staging | 1d | 2026-07-11 | 2026-07-12 | 342 | 54.16d | 0d | feature/rpg-api | DevOps/CI | feature/cicd-deploy-staging |
| 344 | 3.9.4 | Migracja bazy danych na staging | 1d | 2026-07-12 | 2026-07-13 | 343 | 54.16d | 0d | feature/rpg-api | DevOps/Database | feature/staging-db-migration |
| 345 | 3.9.5 | Testy akceptacyjne z użytkownikami (UAT) | 1d | 2026-07-13 | 2026-07-14 | 344 | 54.16d | 0d | feature/rpg-api | QA | feature/uat-testing |
| 346 | 3.9.6 | Bug fixing na podstawie feedbacku | 1d | 2026-07-14 | 2026-07-15 | 345 | 54.16d | 0d |  | All | feature/beta-bugfixes |

Notes:
- 322: Cypress
- 323: Instalacja: npm install cypress; katalog: frontend/cypress/e2e
- 324: Scenariusz: /register → wypełnienie formularza → redirect /dashboard
- 325: Scenariusz: pełna ścieżka od logowania do wejścia na stół
- 326: Scenariusz: rzut kośćmi → weryfikacja wyniku w czacie
- 327: Scenariusz: 2 użytkowników, wysłanie wiadomości, weryfikacja synchronizacji
- 328: Load Testing
- 329: Instalacja k6; skrypt: load-tests/websocket-test.js
- 330: Symulacja 50 graczy w jednym stole; pomiar latencji, packet loss
- 331: Endpoint: POST /api/dice/roll; pomiar: ile req/s serwer wytrzyma
- 332: Identyfikacja bottlenecków; optymalizacja zapytań SQL, cache Redis
- 333: Code Quality Improvements
- 334: Review przez zespół; sprawdzenie: bezpieczeństwo, SQL injection, XSS
- 335: Review: accessibility (a11y), performance, unused code
- 336: Narzędzie: PHPStan (backend), ESLint (frontend); usunięcie nieużywanego kodu
- 337: Dodanie indeksów; użycie EXPLAIN; cache częstych zapytań w Redis
- 338: Dynamiczny import komponentów; redukcja bundle size
- 339: Transformacje: resize, format webp, lazy loading
- 340: Deploy na środowisko testowe
- 341: VPS: DigitalOcean/AWS; system: Ubuntu 22.04; Docker + Docker Compose
- 342: Konfiguracja vhosta; SSL: Let's Encrypt (Certbot); HTTP/2
- 343: GitHub Actions: workflow deploy-staging.yml; trigger: push to develop branch
- 344: Export DB lokalnej → Import na staging; uruchomienie migracji
- 345: Zaproszenie 10 testerów beta; feedback w formularzu Google
- 346: Priorityzacja błędów: Critical, High, Medium, Low; fix w osobnych branchach

| ID | WBS | Task | Duration | Start | Finish | Predecessors | Total slack | Free slack | Repo Branch | Lokalizacja | Branch Feature |
| --- | --- | --- | --- | --- | --- | --- | --- | --- | --- | --- | --- |
| 347 | 3.10 | **Wdrożenie Produkcyjne** | 10d | 2026-07-15 | 2026-07-25 |  | 54.16d |  | feature/rpg-api |  |  |
| 348 | 3.10.1 | Konfiguracja domeny produkcyjnej (blatyrpg.pl) | 1d | 2026-07-15 | 2026-07-16 | 346 | 54.16d | 0d | feature/rpg-api | DevOps | - |
| 349 | 3.10.2 | Setup serwera produkcyjnego | 1d | 2026-07-16 | 2026-07-17 | 348 | 54.16d | 0d | feature/rpg-api | DevOps | feature/production-server |
| 350 | 3.10.3 | Konfiguracja Backupów bazy danych | 1d | 2026-07-17 | 2026-07-18 | 349 | 54.16d | 0d | feature/rpg-api | DevOps/Database | feature/db-backups |
| 351 | 3.10.4 | Setup Monitoring: Sentry (error tracking) | 1d | 2026-07-18 | 2026-07-19 | 350 | 54.16d | 0d | feature/rpg-api | DevOps | feature/sentry-monitoring |
| 352 | 3.10.5 | Setup Monitoring: Grafana + Prometheus | 1d | 2026-07-19 | 2026-07-20 | 351 | 54.16d | 0d |  | DevOps | feature/grafana-prometheus |
| 353 | 3.10.6 | Setup Logowania: ELK Stack (opcjonalnie) | 1d | 2026-07-20 | 2026-07-21 | 352 | 54.16d | 0d | feature/rpg-api | DevOps | feature/elk-logging |
| 354 | 3.10.7 | Konfiguracja CDN (Cloudflare) | 1d | 2026-07-21 | 2026-07-22 | 353 | 54.16d | 0d | feature/rpg-api | DevOps | feature/cloudflare-cdn |
| 355 | 3.10.8 | Migracja danych z staging na produkcję | 1d | 2026-07-22 | 2026-07-23 | 354 | 54.16d | 0d | feature/rpg-api | DevOps/Database | feature/production-db-migration |
| 356 | 3.10.9 | Deploy aplikacji na produkcję | 1d | 2026-07-23 | 2026-07-24 | 355 | 54.16d | 0d | feature/rpg-api | DevOps/CI | feature/cicd-deploy-production |
| 357 | 3.10.10 | Smoke Tests po wdrożeniu | 1d | 2026-07-24 | 2026-07-25 | 356 | 54.16d | 0d |  | QA | feature/smoke-tests |
| 358 | 3.11 | **Utrzymanie i Maintenance** | 4d | 2026-07-25 | 2026-07-29 |  | 54.16d |  | feature/rpg-api |  |  |
| 359 | 3.11.1 | Plan Disaster Recovery | 1d | 2026-07-25 | 2026-07-26 | 357 | 54.16d | 0d | feature/rpg-api | Docs | docs/disaster-recovery |
| 360 | 3.11.2 | Harmonogram aktualizacji zależności | 1d | 2026-07-26 | 2026-07-27 | 359 | 54.16d | 0d | feature/rpg-api | DevOps | - |
| 361 | 3.11.3 | Monitoring wydajności i kosztów | 1d | 2026-07-27 | 2026-07-28 | 360 | 54.16d | 0d | feature/rpg-api | DevOps | - |
| 362 | 3.11.4 | Feedback Loop z użytkownikami | 1d | 2026-07-28 | 2026-07-29 | 361 | 54.16d | 0d | feature/rpg-api | Product | - |

Notes:
- 347: Launch na domenę produkcyjną
- 348: Zakup domeny; konfiguracja DNS: A record → IP serwera
- 349: VPS dedykowany; Docker Swarm lub Kubernetes (opcjonalnie)
- 350: Cron job: mysqldump co 24h; upload do S3 lub Backblaze B2
- 351: Integracja Sentry w backend + frontend; alerty na email/Slack
- 352: Metryki: CPU, RAM, Disk, network; dashboard Grafana
- 353: Elasticsearch + Logstash + Kibana; centralne logi aplikacji
- 354: Proxy DNS przez Cloudflare; cache statycznych zasobów; DDoS protection
- 355: Final data migration; weryfikacja integralności
- 356: GitHub Actions: workflow deploy-production.yml; trigger: tag v1.0.0
- 357: Weryfikacja: wszystkie endpointy działają, WebSocket online, DNS propagation
- 358: Post-launch support
- 359: Dokumentacja: procedury w przypadku awarii serwera, DB corruption
- 360: Co 3 miesiące: update npm packages, Composer, Docker images
- 361: Analiza: użycie zasobów, koszty hostingu, optymalizacja
- 362: Formularz feedbacku; Discord/Slack community; priorityzacja feature requests
