# Aplikacja BlatyRPG

Schedule from MS Project XML, 2025-12-01 to 2027-05-08, status date 2026-08-26, 5 hours a day, A marks actual dates.

## Calendars

- DreamV Studio: Mon-Tue 00:00-01:00, 20:00-23:59; Wed 09:00-14:00; Thu-Sun 00:00-01:00, 20:00-23:59. Exceptions (off unless hours are given): 2025-12-23 to 2026-01-03 (Przerwa świąteczna Boże Narodzenie), 2026-04-03 to 2026-04-07 (Przerwa świąteczna Wielkanoc).

## Schedule

| ID | WBS | Task | Type | Duration | Start | Finish | Predecessors | Complete | Remaining | Baseline start | Baseline finish | Baseline duration | Total slack | Deadline | Lokalizacja |
| --- | --- | --- | --- | --- | --- | --- | --- | --- | --- | --- | --- | --- | --- | --- | --- |
| 1 | 1 | START | milestone | 0d | 2025-12-01 A | 2025-12-01 A |  | 100% |  | 2025-12-01 | 2025-12-01 | 0d |  |  |  |
| 2 | 2 | KONIEC | milestone | 0d | 2027-05-08 | 2027-05-08 | 32 |  |  | 2026-07-29 | 2026-07-29 | 0d | 0d |  |  |
| 3 | 1 | **Kamienie Milowe** |  | 505.4d | 2025-12-01 A | 2027-05-08 |  | 45% | 277.97d | 2025-12-01 | 2026-09-22 | 277.21d | 0d |  |  |
| 4 | 1.3 | KM: Kick-off projektu (start prac) | milestone | 0d | 2025-12-01 A | 2025-12-01 A | 1 | 100% |  | 2025-12-01 | 2025-12-01 | 0d |  | 2025-12-01 |  |
| 5 | 1.4 | KM: Stack technologiczny wybrany i repozytorium przygotowane | milestone | 0d | 2025-12-04 A | 2025-12-04 A | 44 | 100% |  | 2025-12-12 | 2025-12-12 | 0d |  | 2025-12-12 |  |
| 6 | 1.5 | KM: Środowisko DEV gotowe (Docker/CI) | milestone | 0d | 2025-12-05 A | 2026-09-19 | 86 | 70% | 0d | 2026-01-07 | 2026-01-07 | 0d | 0d | 2025-12-23 | DevOps / feature/docker-env |
| 7 | 1.6 | KM: Koncepcja i backlog MVP zatwierdzone | milestone | 0d | 2026-08-19 A | 2026-08-19 A | 86 | 100% |  | 2026-01-07 | 2026-01-07 | 0d |  | 2025-12-23 |  |
| 8 | 1.7 | KM: Architektura wstępna (HLD/ERD/API) zatwierdzona | milestone | 0d | 2026-08-19 A | 2026-09-06 | 53 | 70% | 0d | 2025-12-24 | 2025-12-24 | 0d | 0d | 2025-12-24 | Backend+Frontend / feature/auth |
| 9 | 1.8 | KM: Bezpieczeństwo danych: walidacja + hasła (bcrypt) gotowe | milestone | 0d | 2026-08-19 A | 2026-08-19 A | 163 | 100% |  | 2026-02-01 | 2026-02-01 | 0d |  | 2026-01-28 | Backend+Frontend / feature/user-profile |
| 10 | 1.9 | KM: Zaproszenia do stołu gotowe | milestone | 0d | 2026-08-19 A | 2026-08-19 A | 189 | 100% |  | 2026-03-02 | 2026-03-02 | 0d |  | 2026-03-02 | Backend+Frontend / feature/user-profile |
| 11 | 1.10 | KM: Moduł Auth gotowy (rejestracja/logowanie) | milestone | 0d | 2026-08-19 A | 2026-08-19 A | 163, 262 | 100% |  | 2026-06-02 | 2026-06-02 | 0d |  | 2026-06-02 |  |
| 12 | 1.11 | KM: Dashboard stołów/sesji gotowy | milestone | 0d | 2026-08-19 A | 2026-08-19 A | 181, 268 | 100% |  | 2026-06-08 | 2026-06-08 | 0d |  | 2026-06-08 |  |
| 13 | 1.12 | KM: Wirtualny stół MVP gotowy | milestone | 0d | 2026-08-19 A | 2026-11-03 | 189, 221, 231, 291 | 75% | 0d | 2026-07-07 | 2026-07-07 | 0d | 0d | 2026-07-07 | Backend+Frontend / feature/sessions-tables |
| 14 | 1.13 | KM: Ustawienia konta gotowe | milestone | 0d | 2026-08-23 A | 2026-08-23 A | 295 | 100% |  | 2026-07-10 | 2026-07-10 | 0d |  | 2026-07-10 | Backend+Frontend / feature/sessions-tables |
| 15 | 1.14 | KM: Profil użytkownika i role gotowe | milestone | 0d | 2026-08-23 A | 2026-10-05 | 170, 296 | 90% | 0d | 2026-07-13 | 2026-07-13 | 0d | 0d | 2026-07-13 | Frontend+Realtime / feature/av-integration |
| 16 | 1.15 | KM: Release Alpha udostępniony testerom | milestone | 0d | 2026-11-03 | 2026-11-03 | 301 |  |  | 2026-07-17 | 2026-07-17 | 0d | 0d | 2026-07-17 | Backend+Frontend / feature/macros |
| 17 | 1.16 | KM: Integracja audio/video gotowa (opcjonalnie) | milestone | 0d | 2026-12-17 | 2026-12-17 | 304 |  |  | 2026-07-20 | 2026-07-20 | 0d | 0d | 2026-07-20 | Backend+Frontend / feature/marketplace |
| 18 | 1.17 | KM: System makr i skryptów GM gotowy | milestone | 0d | 2026-12-27 | 2026-12-27 | 305, 306 |  |  | 2026-07-22 | 2026-07-22 | 0d | 0d | 2026-07-22 | Backend+Frontend / feature/admin-panel |
| 19 | 1.18 | KM: Marketplace / framework pluginów gotowy (opcjonalnie) | milestone | 0d | 2027-05-08 | 2027-05-08 | 307 |  |  | 2026-07-23 | 2026-07-23 | 0d | 0d | 2026-07-23 | Backend+Frontend+DevOps / feature/testing-release |
| 20 | 1.19 | KM: Panel administracyjny v1 gotowy | milestone | 0d | 2026-08-23 A | 2026-08-23 A | 247, 307 | 100% |  | 2026-07-23 | 2026-07-23 | 0d |  | 2026-07-23 | Backend+Frontend+DevOps / feature/testing-release |
| 21 | 1.20 | KM: Testy unit+integration green (CI) | milestone | 0d | 2026-08-26 A | 2027-01-01 | 316, 321 | 90% | 0d | 2026-08-10 | 2026-08-10 | 0d | 0d | 2026-08-10 |  |
| 22 | 1.21 | KM: Testy E2E green (CI) | milestone | 0d | 2027-01-17 | 2027-01-17 | 327 |  |  | 2026-08-17 | 2026-08-17 | 0d | 0d | 2026-08-17 | Frontend / feature/ui-ux |
| 23 | 1.22 | KM: Testy wydajności zakończone (baseline) | milestone | 0d | 2027-01-29 | 2027-01-29 | 332 |  |  | 2026-08-21 | 2026-08-21 | 0d | 0d | 2026-08-21 |  |
| 24 | 1.23 | KM: UX/UI v1 zatwierdzone (Design freeze) | milestone | 0d | 2027-02-16 | 2027-02-16 | 339 |  |  | 2026-08-31 | 2026-08-31 | 0d | 0d | 2026-08-31 | Backend+Frontend+DevOps / feature/testing-release |
| 25 | 1.24 | KM: Refaktoryzacja rdzenia zakończona | milestone | 0d | 2027-02-16 | 2027-02-16 | 339 |  |  | 2026-08-31 | 2026-08-31 | 0d | 0d | 2026-08-31 |  |
| 26 | 1.25 | KM: Release Beta udostępniony testerom | milestone | 0d | 2027-03-20 | 2027-03-20 | 346 |  |  | 2026-09-08 | 2026-09-08 | 0d | 0d | 2026-09-08 |  |
| 27 | 1.26 | KM: Release Candidate / wersja finalna gotowa | milestone | 0d | 2027-03-20 | 2027-03-20 | 339, 332, 327, 316, 346 |  |  | 2026-09-08 | 2026-09-08 | 0d | 0d | 2026-09-08 |  |
| 28 | 1.27 | KM: Infrastruktura produkcyjna gotowa | milestone | 0d | 2027-03-28 | 2027-03-28 | 349 |  |  | 2026-09-10 | 2026-09-10 | 0d | 0d | 2026-09-10 |  |
| 29 | 1.28 | KM: Monitoring i alerty skonfigurowane | milestone | 0d | 2027-04-08 | 2027-04-08 | 352 |  |  | 2026-09-15 | 2026-09-15 | 0d | 0d | 2026-09-15 |  |
| 30 | 1.29 | KM: Go-live – wdrożenie na produkcję | milestone | 0d | 2027-04-21 | 2027-04-21 | 357 |  |  | 2026-09-22 | 2026-09-22 | 0d | 0d | 2026-09-22 |  |
| 31 | 3.28 | KM: Przekazanie do utrzymania + DR/backup gotowe | milestone | 0d | 2027-05-08 | 2027-05-08 | 362 |  |  | 2026-07-29 | 2026-07-29 | 0d | 0d |  |  |
| 32 | 3.29 | KM: Zamknięcie projektu | milestone | 0d | 2027-05-08 | 2027-05-08 | 362 |  |  | 2026-07-29 | 2026-07-29 | 0d | 0d |  |  |

Notes:
- 1: [Status 2026-08-26] 100% — zakończone; data rzeczywista 2025-12-01. Zakres potwierdzony przez kod, migracje, trasy lub zielone testy repozytorium.
- 2: [Status 2026-08-26] 0% — nieosiągnięty; prognoza 2027-05-08.
- 3: [Status 2026-08-26] 45% — w toku; pozostało 1390 h; prognoza zakończenia 2027-05-08. Zakres częściowo obecny; pozostaje kompletacja i odbiór.
- 4: Start projektu: zatwierdzony cel, i zakres MVP, przygotowano harmonogram / [Status 2026-08-26] 100% — zakończone; data rzeczywista 2025-12-01. Zakres potwierdzony przez kod, migracje, trasy lub zielone testy repozytorium.
- 5: Wybrany stack (CI4 + Vue 3 + MariaDB + WebSocket) oraz zasady wersjonowania.... / [Status 2026-08-26] 100% — zakończone; data rzeczywista 2025-12-04. Zakres potwierdzony przez kod, migracje, trasy lub zielone testy repozytorium.
- 6: Środowisko DEV działa lokalnie (Docker Compose).... / [Status 2026-08-26] 70% — w toku; pozostało 0 h; prognoza zakończenia 2026-09-19. Docker i healthchecki działają; brak konfiguracji CI w repozytorium.
- 7: Etap koncepcyjny zamknięty: wymagania MVP, backlog, kryteria akceptacji.... / [Status 2026-08-26] 100% — zakończone; data rzeczywista 2026-08-19. Zakres potwierdzony przez kod, migracje, trasy lub zielone testy repozytorium.
- 8: Dokument HLD + ERD v0 + zarys API/WebSocket zaakceptowane.... / [Status 2026-08-26] 70% — w toku; pozostało 0 h; prognoza zakończenia 2026-09-06. Architektura działa w kodzie, ale brakuje kompletu HLD/C4/OpenAPI.
- 9: Walidacja i sanitizacja danych wejściowych.... / [Status 2026-08-26] 100% — zakończone; data rzeczywista 2026-08-19. Zakres potwierdzony przez kod, migracje, trasy lub zielone testy repozytorium.
- 10: Zaproszenia do stołu (link/token), akceptacja/odrzucenie.... / [Status 2026-08-26] 100% — zakończone; data rzeczywista 2026-08-19. Zakres potwierdzony przez kod, migracje, trasy lub zielone testy repozytorium.
- 11: Rejestracja/logowanie/wylogowanie + reset hasła.... / [Status 2026-08-26] 100% — zakończone; data rzeczywista 2026-08-19. Zakres potwierdzony przez kod, migracje, trasy lub zielone testy repozytorium.
- 12: Lista stołów/sesji: tworzenie, podgląd, archiwizacja.... / [Status 2026-08-26] 100% — zakończone; data rzeczywista 2026-08-19. Zakres potwierdzony przez kod, migracje, trasy lub zielone testy repozytorium.
- 13: Synchronizacja real-time (WebSocket) + podstawowe elementy stołu.... / [Status 2026-08-26] 75% — w toku; pozostało 0 h; prognoza zakończenia 2026-11-03. Sceny, tokeny, ściany, światło i realtime działają; Fog of War nie jest kompletny.
- 14: Ustawienia konta: zmiana danych, preferencje, bezpieczeństwo.... / [Status 2026-08-26] 100% — zakończone; data rzeczywista 2026-08-23. Zakres potwierdzony przez kod, migracje, trasy lub zielone testy repozytorium.
- 15: Profil użytkownika + role systemowe (Player/GM/Admin).... / [Status 2026-08-26] 90% — w toku; pozostało 0 h; prognoza zakończenia 2026-10-05. Profil, sesje i role działają; publiczny profil i upload avatara użytkownika są niepełne.
- 16: Build Alpha wdrożony na staging dla testerów.... / [Status 2026-08-26] 0% — nieosiągnięty; prognoza 2026-11-03.
- 17: Integracja audio/video uruchomiona (WebRTC / provider).... / [Status 2026-08-26] 0% — nieosiągnięty; prognoza 2026-12-17.
- 18: Edytor makr + wykonywanie skryptów z uprawnieniami.... / [Status 2026-08-26] 0% — nieosiągnięty; prognoza 2026-12-27.
- 19: Mechanizm pluginów: instalacja/aktualizacja/wersjonowanie.... / [Status 2026-08-26] 0% — nieosiągnięty; prognoza 2027-05-08.
- 20: Panel administracyjny: zarządzanie użytkownikami, role, moderacja.... / [Status 2026-08-26] 100% — zakończone; data rzeczywista 2026-08-23. Zakres potwierdzony przez kod, migracje, trasy lub zielone testy repozytorium.
- 21: Testy jednostkowe i integracyjne przechodzą w CI.... / [Status 2026-08-26] 90% — w toku; pozostało 0 h; prognoza zakończenia 2027-01-01. Testy lokalne są zielone, ale brak pipeline CI i raportu coverage.
- 22: Kluczowe ścieżki E2E green w CI (login, tworzenie stołu, dołączenie).... / [Status 2026-08-26] 0% — nieosiągnięty; prognoza 2027-01-17.
- 23: Testy obciążeniowe: docelowo 250 jednoczesnych graczy; latencja WebSocket < 100ms.... / [Status 2026-08-26] 0% — nieosiągnięty; prognoza 2027-01-29.
- 24: UX/UI v1 zatwierdzone na podstawie feedbacku z testów.... / [Status 2026-08-26] 0% — nieosiągnięty; prognoza 2027-02-16.
- 25: Refaktoryzacja i porządki architektury po MVP.... / [Status 2026-08-26] 0% — nieosiągnięty; prognoza 2027-02-16.
- 26: Release Beta (feature-complete) udostępniony testerom.... / [Status 2026-08-26] 0% — nieosiągnięty; prognoza 2027-03-20.
- 27: Release Candidate / wersja finalna gotowa: checklisty, release notes, tag w repo.... / [Status 2026-08-26] 0% — nieosiągnięty; prognoza 2027-03-20.
- 28: Infrastruktura produkcyjna: serwer, domena, TLS, backupy.... / [Status 2026-08-26] 0% — nieosiągnięty; prognoza 2027-03-28.
- 29: Monitoring metryk/logów + alerty (uptime, błędy, obciążenie).... / [Status 2026-08-26] 0% — nieosiągnięty; prognoza 2027-04-08.
- 30: Aplikacja dostępna publicznie (blatyrpg.pl); smoke tests OK.... / [Status 2026-08-26] 0% — nieosiągnięty; prognoza 2027-04-21.
- 31: Procedury utrzymaniowe, backup/restore oraz DR opisane i zweryfikowane.... / [Status 2026-08-26] 0% — nieosiągnięty; prognoza 2027-05-08.
- 32: Zamknięcie projektu: retrospektywa, lessons learned, archiwizacja.... / [Status 2026-08-26] 0% — nieosiągnięty; prognoza 2027-05-08.

| ID | WBS | Task | Type | Duration | Start | Finish | Predecessors | Complete | Remaining | Baseline start | Baseline finish | Baseline duration | Total slack | Lokalizacja | Branch Feature | Repo Branch |
| --- | --- | --- | --- | --- | --- | --- | --- | --- | --- | --- | --- | --- | --- | --- | --- | --- |
| 33 | 2 | **Etap koncepcyjny** |  | 275.4d | 2025-12-01 A | 2026-09-19 |  | 74% | 71.6d | 2025-12-01 | 2026-01-07 | 25.05d | 0d |  |  |  |
| 34 | 2.1 | **Analiza i Wybór Technologii** |  | 1d | 2025-12-03 A | 2025-12-04 A |  | 100% |  | 2025-12-01 | 2025-12-03 | 2.13d |  |  |  |  |
| 35 | 2.1.1 | Analiza wymagań niefunkcjonalnych systemu |  | 1h | 2025-12-04 A | 2025-12-04 A |  | 100% |  | 2025-12-01 | 2025-12-01 | 1h |  | Docs | docs/requirements | feature/api-setup |
| 36 | 2.1.2 | Porównanie frameworków JavaScript (React vs Vue vs Angular) |  | 60min | 2025-12-04 A | 2025-12-04 A | 35 | 100% |  | 2025-12-01 | 2025-12-01 | 30min |  | Docs | docs/tech-comparison | feature/api-setup |
| 37 | 2.1.3 | Decyzja: Wybór frameworka Front-End | milestone | 0d | 2025-12-04 A | 2025-12-04 A | 36 | 100% |  | 2025-12-01 | 2025-12-01 | 0d |  | Docs | - |  |
| 38 | 2.1.4 | Porównanie architektur Back-End (PHP/Laravel vs Node.js/Nest vs Python/Django) |  | 60min | 2025-12-04 A | 2025-12-04 A | 37 | 100% |  | 2025-12-01 | 2025-12-01 | 30min |  | Docs | docs/tech-comparison | feature/api-setup |
| 39 | 2.1.5 | Decyzja: Wybór frameworka Back-End | milestone | 0d | 2025-12-04 A | 2025-12-04 A | 38 | 100% |  | 2025-12-01 | 2025-12-01 | 0d |  | Backend | - |  |
| 40 | 2.1.6 | Analiza systemów baz danych (MySQL vs PostgreSQL vs MongoDB) |  | 60min | 2025-12-04 A | 2025-12-04 A | 39 | 100% |  | 2025-12-01 | 2025-12-01 | 30min |  | Docs | docs/tech-comparison | feature/api-setup |
| 41 | 2.1.7 | Decyzja: Wybór silnika bazy danych |  | 1d | 2025-12-03 A | 2025-12-04 A | 40 | 100% |  | 2025-12-01 | 2025-12-02 | 1d |  | Database | - |  |
| 42 | 2.1.8 | Analiza protokołów Real-Time (WebSocket vs SSE vs Long Polling) |  | 60min | 2025-12-04 A | 2025-12-04 A | 41 | 100% |  | 2025-12-02 | 2025-12-02 | 10min |  | Docs | docs/tech-comparison | feature/api-setup |
| 43 | 2.1.9 | Decyzja: Wybór protokołu Real-Time | milestone | 0d | 2025-12-04 A | 2025-12-04 A | 42 | 100% |  | 2025-12-02 | 2025-12-02 | 0d |  | WebSocket | - |  |
| 44 | 2.1.10 | Projekt strategii konteneryzacji |  | 3h | 2025-12-04 A | 2025-12-04 A | 43 | 100% |  | 2025-12-02 | 2025-12-03 | 3h |  | DevOps | - |  |
| 45 | 2.2 | **Projektowanie Architektury Systemu** |  | 256.2d | 2025-12-04 A | 2026-09-03 |  | 73% | 69.17d | 2025-12-03 | 2025-12-06 | 3d | 0d |  |  |  |
| 46 | 2.2.1 | Opracowanie diagramu kontekstowego systemu (C4 Level 1) |  | 2.13d | 2026-08-19 A | 2026-08-28 | 44 | 25% | 1.6d | 2025-12-03 | 2025-12-04 | 1d | 0d | Docs | docs/architecture | feature/api-setup |
| 47 | 2.2.2 | Projekt architektury kontenerowej (C4 Level 2) |  | 16h | 2026-08-19 A | 2026-08-30 | 46 | 25% | 12h | 2025-12-04 | 2025-12-04 | 1h | 0d | Docs | docs/architecture | feature/api-setup |
| 48 | 2.2.3 | Definicja warstwy prezentacji (SPA/CSR) |  | 60min | 2025-12-04 A | 2025-12-04 A | 47 | 100% |  | 2025-12-04 | 2025-12-04 | 15min |  | Frontend | docs/architecture | feature/api-setup |
| 49 | 2.2.4 | Projekt API REST (OpenAPI/Swagger 3.0) |  | 26.67h | 2026-08-16 A | 2026-09-01 | 48 | 70% | 8h | 2025-12-04 | 2025-12-04 | 1h | 0d | Backend | docs/api-spec | feature/api-setup |
| 50 | 2.2.5 | Projekt architektury WebSocket (Socket.io Rooms) |  | 40h | 2026-08-12 A | 2026-09-02 | 49 | 90% | 4h | 2025-12-04 | 2025-12-05 | 5h | 0d | WebSocket | docs/architecture | feature/api-setup |
| 51 | 2.2.6 | Projekt modułu uwierzytelniania (JWT Strategy) |  | 60min | 2025-12-07 A | 2025-12-07 A | 50 | 100% |  | 2025-12-05 | 2025-12-05 | 45min |  | Backend/Auth | docs/architecture | feature/api-setup |
| 52 | 2.2.7 | Projekt logiki Wirtualnych Stołów (Game State Management) |  | 53.33h | 2026-08-10 A | 2026-09-03 | 51 | 85% | 8h | 2025-12-05 | 2025-12-06 | 1h | 0d | Backend/Tables | docs/architecture | feature/api-setup |
| 53 | 2.2.8 | Projekt systemu czatu (Message Broker Pattern) |  | 1h | 2026-08-19 A | 2026-08-19 A | 52 | 100% |  | 2025-12-06 | 2025-12-06 | 1h |  | Backend/Chat + WebSocket | docs/architecture | feature/api-setup |
| 54 | 2.3 | **Modelowanie Danych** |  | 262d | 2025-12-07 A | 2026-09-12 |  | 72% | 73.36d | 2025-12-06 | 2025-12-14 | 8.2d | 0d |  |  |  |
| 55 | 2.3.1 | Opracowanie diagramu ERD (Entity Relationship Diagram) |  | 4.8d | 2026-08-17 A | 2026-09-06 | 53 | 50% | 2.4d | 2025-12-06 | 2025-12-07 | 1d | 0d | Database | docs/database-erd | feature/api-setup |
| 56 | 2.3.2 | Projekt schematu: Tabela Users |  | 60min | 2025-12-07 A | 2025-12-07 A | 55 | 100% |  | 2025-12-07 | 2025-12-07 | 30min |  | Database | docs/database-erd | feature/api-setup |
| 57 | 2.3.3 | Projekt schematu: Tabela Sessions (Kampanie) |  | 1h | 2026-08-19 A | 2026-08-19 A | 56 | 100% |  | 2025-12-07 | 2025-12-07 | 1h |  | Database | docs/database-erd | feature/api-setup |
| 58 | 2.3.4 | Projekt schematu: Tabela Tables (Stoły/Blaty) |  | 2h | 2026-08-19 A | 2026-08-19 A | 57 | 100% |  | 2025-12-07 | 2025-12-08 | 2h |  | Database | docs/database-erd | feature/api-setup |
| 59 | 2.3.5 | Projekt schematu: Tabela Maps |  | 3h | 2026-08-19 A | 2026-08-19 A | 58 | 100% |  | 2025-12-08 | 2025-12-08 | 3h |  | Database | docs/database-erd | feature/api-setup |
| 60 | 2.3.6 | Projekt schematu: Tabela Tokens (Pionki) |  | 2h | 2026-08-24 A | 2026-08-24 A | 59 | 100% |  | 2025-12-08 | 2025-12-09 | 2h |  | Database | docs/database-erd | feature/api-setup |
| 61 | 2.3.7 | Projekt schematu: Tabela Characters (Postacie) |  | 60min | 2025-12-09 A | 2025-12-09 A | 60 | 100% |  | 2025-12-09 | 2025-12-09 | 30min |  | Database | docs/database-erd | feature/api-setup |
| 62 | 2.3.8 | Projekt schematu: Tabela Inventory (Ekwipunek) |  | 2h | 2026-08-19 A | 2026-08-19 A | 61 | 100% |  | 2025-12-09 | 2025-12-09 | 2h |  | Database | docs/database-erd | feature/api-setup |
| 63 | 2.3.9 | Projekt schematu: Tabela Items (Przedmioty) |  | 2h | 2026-08-19 A | 2026-08-19 A | 62 | 100% |  | 2025-12-09 | 2025-12-09 | 2h |  | Database | docs/database-erd | feature/api-setup |
| 64 | 2.3.10 | Projekt schematu: Tabela ChatMessages |  | 1h | 2026-08-19 A | 2026-08-19 A | 63 | 100% |  | 2025-12-09 | 2025-12-10 | 1h |  | Database | docs/database-erd | feature/api-setup |
| 65 | 2.3.11 | Projekt schematu: Tabela DiceRolls (Historia rzutów) |  | 6h | 2026-09-06 | 2026-09-07 | 64 |  |  | 2025-12-10 | 2025-12-10 | 2h | 0d | Database | docs/database-erd | feature/api-setup |
| 66 | 2.3.12 | Projekt schematu: Tabela Invitations (Zaproszenia) |  | 4h | 2026-08-19 A | 2026-08-19 A | 65 | 100% |  | 2025-12-10 | 2025-12-11 | 4h |  | Database | docs/database-erd | feature/api-setup |
| 67 | 2.3.13 | Projekt schematu: Tabela Macros (Makra graczy) |  | 6h | 2026-09-07 | 2026-09-08 | 66 |  |  | 2025-12-11 | 2025-12-12 | 6h | 0d | Database | docs/database-erd | feature/api-setup |
| 68 | 2.3.14 | Normalizacja bazy danych (3NF) |  | 10.67d | 2026-08-10 A | 2026-09-10 | 67 | 85% | 1.6d | 2025-12-12 | 2025-12-13 | 1d | 0d | Database | docs/database-erd | feature/api-setup |
| 69 | 2.3.15 | Projekt indeksów i constraintów |  | 9.6d | 2026-08-12 A | 2026-09-12 | 68 | 75% | 2.4d | 2025-12-13 | 2025-12-14 | 1d | 0d | Database | docs/database-erd | feature/api-setup |

Notes:
- 33: Fundament projektu / [Status 2026-08-26] 74% — w toku; pozostało 358 h; prognoza zakończenia 2026-09-19. Zakres częściowo obecny; pozostaje kompletacja i odbiór.
- 34: [Status 2026-08-26] 100% — zakończone; data rzeczywista 2025-12-04. Zakres potwierdzony przez kod, migracje, trasy lub zielone testy repozytorium.
- 35: Docelowo 500 jednoczesnych graczy; latencja WebSocket < 100ms; dostępność 99.5% / [Status 2026-08-26] 100% — zakończone; data rzeczywista 2025-12-04. Zakres potwierdzony przez kod, migracje, trasy lub zielone testy repozytorium.
- 36: Macierz porównawcza: bundle size, learning curve, ekosystem / [Status 2026-08-26] 100% — zakończone; data rzeczywista 2025-12-04. Zakres potwierdzony przez kod, migracje, trasy lub zielone testy repozytorium.
- 37: Wybrano: Vue.js 3.5.25 (Composition API) + Webpack / [Status 2026-08-26] 100% — zakończone; data rzeczywista 2025-12-04. Zakres potwierdzony przez kod, migracje, trasy lub zielone testy repozytorium.
- 38: Analiza: performance, community support, hosting cost / [Status 2026-08-26] 100% — zakończone; data rzeczywista 2025-12-04. Zakres potwierdzony przez kod, migracje, trasy lub zielone testy repozytorium.
- 39: Wybrano: CodeIgniter 4.4.6 (PHP 7.4.6) dla API REST / [Status 2026-08-26] 100% — zakończone; data rzeczywista 2025-12-04. Zakres potwierdzony przez kod, migracje, trasy lub zielone testy repozytorium.
- 40: Porównanie: transakcje ACID, JSON support, spatial data / [Status 2026-08-26] 100% — zakończone; data rzeczywista 2025-12-04. Zakres potwierdzony przez kod, migracje, trasy lub zielone testy repozytorium.
- 41: Wybrano: MariaDB 10.11 (kompatybilność MySQL) / [Status 2026-08-26] 100% — zakończone; data rzeczywista 2025-12-04. Zakres potwierdzony przez kod, migracje, trasy lub zielone testy repozytorium.
- 42: Socket.io zapewnia fallback; lepsze wsparcie dla pokoi / [Status 2026-08-26] 100% — zakończone; data rzeczywista 2025-12-04. Zakres potwierdzony przez kod, migracje, trasy lub zielone testy repozytorium.
- 43: Wybrano: Socket.io (WebSocket + fallback) / [Status 2026-08-26] 100% — zakończone; data rzeczywista 2025-12-04. Zakres potwierdzony przez kod, migracje, trasy lub zielone testy repozytorium.
- 44: Docker Compose: 5 serwisów (MariaDB, PHP-FPM, Node/Frontend, Node/WebSocket, Nginx) / [Status 2026-08-26] 100% — zakończone; data rzeczywista 2025-12-04. Zakres potwierdzony przez kod, migracje, trasy lub zielone testy repozytorium.
- 45: Diagramy architektury (C4 Model) / [Status 2026-08-26] 73% — w toku; pozostało 346 h; prognoza zakończenia 2026-09-03. Zakres częściowo obecny; pozostaje kompletacja i odbiór.
- 46: Aktorzy: Gracz, Game Master, Admin; Systemy zewnętrzne: Cloudinary, SMTP / [Status 2026-08-26] 25% — w toku; pozostało 8 h; prognoza zakończenia 2026-08-28. Brak kompletnego diagramu C4 Level 1; istnieje audyt architektury VTT.
- 47: 5 kontenerów: API Gateway (Nginx) → PHP backend + MySQL 8.0 + Vue frontend + Node WebSocket / [Status 2026-08-26] 25% — w toku; pozostało 12 h; prognoza zakończenia 2026-08-30. Brak kompletnego diagramu C4 Level 2; kontenery są opisane kodem Docker Compose.
- 48: Single Page Application; routing Vue Router; state management Vuex / [Status 2026-08-26] 100% — zakończone; data rzeczywista 2025-12-04. Zakres potwierdzony przez kod, migracje, trasy lub zielone testy repozytorium.
- 49: Specyfikacja endpointów: /auth, /campaigns, /tables, /characters, /chat / [Status 2026-08-26] 70% — w toku; pozostało 8 h; prognoza zakończenia 2026-09-01. REST API działa, lecz repozytorium nie zawiera kompletnej specyfikacji OpenAPI 3.0.
- 50: Pokoje per stół; eventy: dice_roll, token_move, chat_message, fog_update / [Status 2026-08-26] 90% — w toku; pozostało 4 h; prognoza zakończenia 2026-09-02. Autorytatywny WebSocket z pokojami kampanii działa; pozostaje formalizacja projektu.
- 51: Access Token (15min) + Refresh Token (7 dni); blacklist w Redis / [Status 2026-08-26] 100% — zakończone; data rzeczywista 2025-12-07. Zakres potwierdzony przez kod, migracje, trasy lub zielone testy repozytorium.
- 52: Stan gry: Redis cache + MySQL persistence; synchronizacja przez WebSocket / [Status 2026-08-26] 85% — w toku; pozostało 8 h; prognoza zakończenia 2026-09-03. Zakres częściowo obecny; pozostaje kompletacja i odbiór.
- 53: Historia czatu: MySQL; real-time: Socket.io; kanały: public, dm, gm-only / [Status 2026-08-26] 100% — zakończone; data rzeczywista 2026-08-19. Zakres potwierdzony przez kod, migracje, trasy lub zielone testy repozytorium.
- 54: Schemat bazy danych (ERD + SQL DDL) / [Status 2026-08-26] 72% — w toku; pozostało 367 h; prognoza zakończenia 2026-09-12. Zakres częściowo obecny; pozostaje kompletacja i odbiór.
- 55: Narzędzie: dbdiagram.io; eksport do PNG i SQL / [Status 2026-08-26] 50% — w toku; pozostało 12 h; prognoza zakończenia 2026-09-06. Schemat jest zaimplementowany migracjami, ale brak aktualnego diagramu ERD.
- 56: Kolumny: id, email, password_hash, role (enum), avatar_url, created_at / [Status 2026-08-26] 100% — zakończone; data rzeczywista 2025-12-07. Zakres potwierdzony przez kod, migracje, trasy lub zielone testy repozytorium.
- 57: Kolumny: id, gm_id (FK users), name, description, system (WFRP/D&D), status / [Status 2026-08-26] 100% — zakończone; data rzeczywista 2026-08-19. Zakres potwierdzony przez kod, migracje, trasy lub zielone testy repozytorium.
- 58: Kolumny: id, session_id (FK), config_json, background_url, grid_size / [Status 2026-08-26] 100% — zakończone; data rzeczywista 2026-08-19. Zakres potwierdzony przez kod, migracje, trasy lub zielone testy repozytorium.
- 59: Kolumny: id, table_id (FK), name, image_url, layers_json, fog_data (JSON) / [Status 2026-08-26] 100% — zakończone; data rzeczywista 2026-08-19. Zakres potwierdzony przez kod, migracje, trasy lub zielone testy repozytorium.
- 60: Kolumny: id, map_id (FK), character_id (FK), x, y, rotation, visibility / [Status 2026-08-26] 100% — zakończone; data rzeczywista 2026-08-24. Zakres potwierdzony przez kod, migracje, trasy lub zielone testy repozytorium.
- 61: Kolumny: id, user_id (FK), session_id (FK), name, race, class, stats_json / [Status 2026-08-26] 100% — zakończone; data rzeczywista 2025-12-09. Zakres potwierdzony przez kod, migracje, trasy lub zielone testy repozytorium.
- 62: Kolumny: id, character_id (FK), item_id (FK), quantity, equipped (bool) / [Status 2026-08-26] 100% — zakończone; data rzeczywista 2026-08-19. Zakres potwierdzony przez kod, migracje, trasy lub zielone testy repozytorium.
- 63: Kolumny: id, name, type (weapon/armor/misc), properties_json, value / [Status 2026-08-26] 100% — zakończone; data rzeczywista 2026-08-19. Zakres potwierdzony przez kod, migracje, trasy lub zielone testy repozytorium.
- 64: Kolumny: id, table_id (FK), sender_id (FK users), channel (enum), text, timestamp / [Status 2026-08-26] 100% — zakończone; data rzeczywista 2026-08-19. Zakres potwierdzony przez kod, migracje, trasy lub zielone testy repozytorium.
- 65: Kolumny: id, user_id (FK), table_id (FK), formula, result, timestamp / [Status 2026-08-26] 0% — nierozpoczęte; estymacja 6 h; prognoza zakończenia 2026-09-07. Brak tabeli historii rzutów DiceRolls.
- 66: Kolumny: id, table_id (FK), token (UUID), expires_at, max_uses, used_count / [Status 2026-08-26] 100% — zakończone; data rzeczywista 2026-08-19. Zakres potwierdzony przez kod, migracje, trasy lub zielone testy repozytorium.
- 67: Kolumny: id, user_id (FK), name, formula, description, is_public / [Status 2026-08-26] 0% — nierozpoczęte; estymacja 6 h; prognoza zakończenia 2026-09-08. Brak tabeli Macros.
- 68: Wydzielenie tabel słownikowych: Races, Classes, ItemTypes / [Status 2026-08-26] 85% — w toku; pozostało 8 h; prognoza zakończenia 2026-09-10. Zakres częściowo obecny; pozostaje kompletacja i odbiór.
- 69: Indeksy: (table_id, timestamp) dla czatu; FK cascade delete gdzie potrzeba / [Status 2026-08-26] 75% — w toku; pozostało 12 h; prognoza zakończenia 2026-09-12. Zakres częściowo obecny; pozostaje kompletacja i odbiór.

| ID | WBS | Task | Type | Duration | Start | Finish | Predecessors | Complete | Remaining | Baseline start | Baseline finish | Baseline duration | Total slack | Lokalizacja | Branch Feature | Repo Branch |
| --- | --- | --- | --- | --- | --- | --- | --- | --- | --- | --- | --- | --- | --- | --- | --- | --- |
| 70 | 2.4 | **Przygotowanie środowiska deweloperskiego** |  | 275.4d | 2025-12-01 A | 2026-09-19 |  | 76% | 66.1d | 2025-12-14 | 2026-01-07 | 11.72d | 0d | DevOps / feature/ci-cd |  |  |
| 71 | 2.4.1 | Inicjalizacja repozytorium Git |  | 60min | 2025-12-04 A | 2025-12-04 A | 69 | 100% |  | 2025-12-14 | 2025-12-14 | 15min |  | DevOps | - |  |
| 72 | 2.4.2 | Konfiguracja .gitignore |  | 60min | 2025-12-04 A | 2025-12-04 A | 71 | 100% |  | 2025-12-14 | 2025-12-14 | 15min |  | DevOps | devops/gitignore | feature/api-setup |
| 73 | 2.4.3 | Ustalenie konwencji commitów (Conventional Commits) |  | 60min | 2025-12-04 A | 2025-12-04 A | 72 | 100% |  | 2025-12-14 | 2025-12-14 | 5min |  | Docs | docs/contributing | feature/api-setup |
| 74 | 2.4.4 | Konfiguracja ESLint + Prettier (Frontend) |  | 20h | 2025-12-01 A | 2026-09-13 | 73 | 90% | 2h | 2025-12-14 | 2025-12-14 | 1h | 0d | Frontend | devops/linters | feature/api-setup |
| 75 | 2.4.5 | Konfiguracja PHP-CS-Fixer (Backend) |  | 6h | 2026-09-13 | 2026-09-14 | 74 |  |  | 2025-12-14 | 2025-12-15 | 2h | 0d | Backend | devops/linters | feature/api-setup |
| 76 | 2.4.6 | Setup Docker Compose (wersja multi-stage) |  | 8d | 2025-12-01 A | 2026-09-15 | 75 | 90% | 0.8d | 2025-12-15 | 2025-12-16 | 1d | 0d | DevOps | devops/docker-setup | develop |
| 77 | 2.4.7 | Konfiguracja kontenera MySQL |  | 1d | 2025-12-04 A | 2025-12-05 A | 76 | 100% |  | 2025-12-16 | 2025-12-17 | 1d |  | DevOps/Database | devops/docker-setup | develop |
| 78 | 2.4.8 | Konfiguracja kontenera PHP-FPM |  | 1d | 2025-12-04 A | 2025-12-05 A | 77 | 100% |  | 2025-12-17 | 2025-12-18 | 1d |  | DevOps/Backend | devops/docker-setup | develop |
| 79 | 2.4.9 | Konfiguracja kontenera Node (Frontend) |  | 1d | 2025-12-04 A | 2025-12-05 A | 78 | 100% |  | 2025-12-18 | 2025-12-19 | 1d |  | DevOps/Frontend | devops/docker-setup | develop |
| 80 | 2.4.10 | Konfiguracja kontenera Node (WebSocket) |  | 1d | 2025-12-04 A | 2025-12-05 A | 79 | 100% |  | 2025-12-19 | 2025-12-20 | 1d |  | DevOps/WebSocket | devops/docker-setup | develop |
| 81 | 2.4.11 | Konfiguracja kontenera Nginx |  | 1d | 2025-12-04 A | 2025-12-05 A | 80 | 100% |  | 2025-12-20 | 2025-12-21 | 1d |  | DevOps | devops/docker-setup | develop |
| 82 | 2.4.12 | Konfiguracja GitHub Actions: Lint (Backend + Frontend) |  | 1.6d | 2026-09-15 | 2026-09-16 | 81 |  |  | 2025-12-21 | 2025-12-22 | 1d | 0d | DevOps/CI | devops/github-actions-lint | feature/api-setup |
| 83 | 2.4.13 | Konfiguracja GitHub Actions: Testy (PHPUnit) |  | 1.6d | 2026-09-16 | 2026-09-18 | 82 |  |  | 2025-12-22 | 2026-01-04 | 1d | 0d | DevOps/CI | devops/github-actions-test | feature/api-setup |
| 84 | 2.4.14 | Konfiguracja GitHub Actions: Build Frontend |  | 1.2d | 2026-09-18 | 2026-09-19 | 83 |  |  | 2026-01-04 | 2026-01-05 | 1d | 0d | DevOps/CI | devops/github-actions-build | feature/api-setup |
| 85 | 2.4.15 | Setup zmiennych środowiskowych (.env) |  | 1d | 2025-12-04 A | 2025-12-05 A | 84 | 100% |  | 2026-01-05 | 2026-01-06 | 1d |  | DevOps | devops/env-config | feature/api-setup |
| 86 | 2.4.16 | Weryfikacja Health Check wszystkich kontenerów |  | 1d | 2026-08-25 A | 2026-08-26 A | 85 | 100% |  | 2026-01-06 | 2026-01-07 | 1d |  | DevOps | - |  |
| 87 | 4.4.17 | Konfiguracja Monorepo (CI4 + Vue3) | manual | 1d? | 2025-12-03 A | 2025-12-04 A |  | 100% |  | 2025-12-14 | 2025-12-15 | 1d? |  |  |  | main |
| 88 | 4.4.18 | Dodanie lokalnej konfiguracji SSL (mkcert) i obszaru roboczego VS Code | manual | 1d? | 2025-12-04 A | 2025-12-05 A |  | 100% |  | 2025-12-14 | 2025-12-15 | 1d? |  |  |  | develop |
| 89 | 4.4.19 | Repo (develop): Add Docker setup | manual | 1d? | 2025-12-04 A | 2025-12-05 A |  | 100% |  | 2025-12-14 | 2025-12-15 | 1d? |  |  |  | develop |
| 90 | 3 | **Etap projektowania szczegółowego** |  | 503.4d? | 2025-12-03 A | 2027-05-08 |  | 50% | 251.7d? | 2026-01-07 | 2026-07-29 | 198d? | 0d |  |  | feature/api-setup |
| 91 | 3.1 | **Podstawowe funkcjonalności aplikacji** |  | 353.8d? | 2025-12-03 A | 2026-12-09 |  | 71% | 102.6d? | 2026-01-07 | 2026-06-08 | 147d? | 0d |  |  |  |
| 92 | 3.1.1 | **Infrastruktura Bazodanowa** |  | 275.2d? | 2025-12-06 A | 2026-09-25 |  | 91% | 24.77d? | 2026-01-07 | 2026-01-21 | 14d? | 0d |  |  |  |
| 93 | 3.1.1.1 | **Implementacja systemu migracji (CodeIgniter Migrations)** |  | 273.6d? | 2025-12-06 A | 2026-09-23 | 86 | 91% | 24.62d? | 2026-01-07 | 2026-01-19 | 12d? | 0d | Backend/Database | feature/db-migrations | feature/db-migration |
| 94 | 3.1.1.2 | Migracja 1: Tabela Users |  | 1d | 2025-12-06 A | 2025-12-07 A |  | 100% |  | 2026-01-07 | 2026-01-08 | 1d |  | Backend/Database | feature/db-migrations | feature/db-migration |
| 95 | 3.1.1.3 | Migracja 1: Tabela Sessions (Kampanie) |  | 1d | 2026-08-18 A | 2026-08-19 A | 94 | 100% |  | 2026-01-08 | 2026-01-09 | 1d |  | Backend/Database | feature/db-migrations | feature/db-migration |
| 96 | 3.1.1.7 | Migracja 1: Tabela Characters |  | 1d | 2025-12-08 A | 2025-12-09 A | 130 | 100% |  | 2026-01-12 | 2026-01-13 | 1d |  | Backend/Database | feature/db-migrations | feature/db-migration |
| 97 | 5.1.1.1.4 | Migracja 2: Tabela Rpg_systems |  | 1d | 2025-12-19 A | 2025-12-20 A |  | 100% |  | 2026-01-07 | 2026-01-08 | 1d |  | Backend/Database |  |  |
| 98 | 5.1.1.1.5 | Migracja 2: Tabela Rpg_universes |  | 1d | 2025-12-19 A | 2025-12-20 A |  | 100% |  | 2026-01-07 | 2026-01-08 | 1d |  | Backend/Database |  |  |
| 99 | 5.1.1.1.6 | Migracja 3: Tabela Rpg_system_universes (pivot) |  | 1d? | 2025-12-19 A | 2025-12-20 A |  | 100% |  | 2026-01-07 | 2026-01-08 | 1d? |  | Backend/Database |  |  |
| 100 | 5.1.1.1.7 | Migracja 2: Tabela Rpg_game_definitions |  | 1d | 2025-12-19 A | 2025-12-20 A |  | 100% |  | 2026-01-07 | 2026-01-08 | 1d |  | Backend/Database |  |  |
| 101 | 5.1.1.1.8 | Migracja 4: Tabela Profession_equipment |  | 1d? | 2025-12-19 A | 2025-12-20 A |  | 100% |  | 2026-01-07 | 2026-01-08 | 1d? |  | Backend/Database |  |  |
| 102 | 5.1.1.1.9 | Migracja 4: Tabela Profession_path |  | 1d? | 2025-12-19 A | 2025-12-20 A |  | 100% |  | 2026-01-07 | 2026-01-08 | 1d? |  | Backend/Database |  |  |
| 103 | 5.1.1.1.10 | Migracja: Tabela Profession_definitions |  | 1d? | 2025-12-19 A | 2025-12-20 A |  | 100% |  | 2026-01-07 | 2026-01-08 | 1d? |  | Backend/Database |  |  |
| 104 | 5.1.1.1.11 | Migracja: Tabela Profession_attributes |  | 1d? | 2025-12-19 A | 2025-12-20 A |  | 100% |  | 2026-01-07 | 2026-01-08 | 1d? |  | Backend/Database |  |  |
| 105 | 5.1.1.1.12 | Migracja: Tabela Professions |  | 1d? | 2025-12-19 A | 2025-12-20 A |  | 100% |  | 2026-01-07 | 2026-01-08 | 1d? |  | Backend/Database |  |  |
| 106 | 5.1.1.1.13 | Migracja: Tabela Character_custom_unlocks |  | 1d? | 2025-12-19 A | 2025-12-20 A |  | 100% |  | 2026-01-07 | 2026-01-08 | 1d? |  | Backend/Database |  |  |
| 107 | 5.1.1.1.14 | Migracja: Tabela Character_attribute_advances |  | 1d? | 2025-12-19 A | 2025-12-20 A |  | 100% |  | 2026-01-07 | 2026-01-08 | 1d? |  | Backend/Database |  |  |
| 108 | 5.1.1.1.15 | Migracja: Tabela Character_professions |  | 1d? | 2025-12-19 A | 2025-12-20 A |  | 100% |  | 2026-01-07 | 2026-01-08 | 1d? |  | Backend/Database |  |  |
| 109 | 5.1.1.1.16 | Migracja: Tabela Magic_path_spells |  | 1d? | 2025-12-19 A | 2025-12-20 A |  | 100% |  | 2026-01-07 | 2026-01-08 | 1d? |  | Backend/Database |  |  |
| 110 | 5.1.1.1.17 | Migracja: Tabela Magic_paths |  | 1d? | 2025-12-19 A | 2025-12-20 A |  | 100% |  | 2026-01-07 | 2026-01-08 | 1d? |  | Backend/Database |  |  |
| 111 | 5.1.1.1.18 | Migracja: Tabela Item_bundle_items |  | 1d? | 2025-12-19 A | 2025-12-20 A |  | 100% |  | 2026-01-07 | 2026-01-08 | 1d? |  | Backend/Database |  |  |
| 112 | 5.1.1.1.19 | Migracja: Tabela Item_bundles |  | 1d? | 2025-12-19 A | 2025-12-20 A |  | 100% |  | 2026-01-07 | 2026-01-08 | 1d? |  | Backend/Database |  |  |
| 113 | 5.1.1.1.20 | Migracja: Tabela Items |  | 1d? | 2025-12-19 A | 2025-12-20 A |  | 100% |  | 2026-01-07 | 2026-01-08 | 1d? |  | Backend/Database |  |  |
| 114 | 5.1.1.1.21 | Migracja: Tabela Item_classes |  | 1d? | 2025-12-19 A | 2025-12-20 A |  | 100% |  | 2026-01-07 | 2026-01-08 | 1d? |  | Backend/Database |  |  |
| 115 | 5.1.1.1.22 | Migracja: Tabela Insanities |  | 1d? | 2025-12-19 A | 2025-12-20 A |  | 100% |  | 2026-01-07 | 2026-01-08 | 1d? |  | Backend/Database |  |  |
| 116 | 5.1.1.1.23 | Migracja: Tabela Weapon_traits |  | 1d? | 2025-12-19 A | 2025-12-20 A |  | 100% |  | 2026-01-07 | 2026-01-08 | 1d? |  | Backend/Database |  |  |
| 117 | 5.1.1.1.24 | Migracja: Tabela Combat_actions |  | 1d? | 2025-12-19 A | 2025-12-20 A |  | 100% |  | 2026-01-07 | 2026-01-08 | 1d? |  | Backend/Database |  |  |

Notes:
- 70: Konfiguracja repozytoriów kodu, pipeline’u CI/CD, narzędzi do testów, środowiska staging. / [Status 2026-08-26] 76% — w toku; pozostało 330 h; prognoza zakończenia 2026-09-19. Zakres częściowo obecny; pozostaje kompletacja i odbiór.
- 71: Repo: github.com/sirWojciechVojas/BlatyRPG; struktura: /backend, /frontend, /websocket / [Status 2026-08-26] 100% — zakończone; data rzeczywista 2025-12-04. Zakres potwierdzony przez kod, migracje, trasy lub zielone testy repozytorium.
- 72: Ignoruj: node_modules, vendor, .env, .DS_Store, dist/, build / [Status 2026-08-26] 100% — zakończone; data rzeczywista 2025-12-04. Zakres potwierdzony przez kod, migracje, trasy lub zielone testy repozytorium.
- 73: Format: type(scope): subject → feat, fix, docs, refactor, test / [Status 2026-08-26] 100% — zakończone; data rzeczywista 2025-12-04. Zakres potwierdzony przez kod, migracje, trasy lub zielone testy repozytorium.
- 74: Config: Airbnb style guide; integracja z VSCode / [Status 2026-08-26] 90% — w toku; pozostało 2 h; prognoza zakończenia 2026-09-13. Zakres częściowo obecny; pozostaje kompletacja i odbiór.
- 75: Standard: PSR-12; automatyczne formatowanie pre-commit / [Status 2026-08-26] 0% — nierozpoczęte; estymacja 6 h; prognoza zakończenia 2026-09-14. Brak konfiguracji PHP-CS-Fixer.
- 76: Plik docker-compose.yml; serwisy: db, php, frontend, websocket, nginx / [Status 2026-08-26] 90% — w toku; pozostało 4 h; prognoza zakończenia 2026-09-15. Zakres częściowo obecny; pozostaje kompletacja i odbiór.
- 77: Obraz: mysql:8.0; container_name: blatyrpg_mysql; volumes:- mysql_data:/var/lib/mysql; ports:- "3307:3306" / [Status 2026-08-26] 100% — zakończone; data rzeczywista 2025-12-05. Zakres potwierdzony przez kod, migracje, trasy lub zielone testy repozytorium.
- 78: Obraz: php:7.4-fpm-alpine; Composer; rozszerzenia: mysqli, pdo_mysql, intl / [Status 2026-08-26] 100% — zakończone; data rzeczywista 2025-12-05. Zakres potwierdzony przez kod, migracje, trasy lub zielone testy repozytorium.
- 79: Obraz: node:lts-alpine; npm install; webpack devServer / [Status 2026-08-26] 100% — zakończone; data rzeczywista 2025-12-05. Zakres potwierdzony przez kod, migracje, trasy lub zielone testy repozytorium.
- 80: Obraz: node:lts-alpine; Socket.io server port 8082 / [Status 2026-08-26] 100% — zakończone; data rzeczywista 2025-12-05. Zakres potwierdzony przez kod, migracje, trasy lub zielone testy repozytorium.
- 81: Obraz: nginx:alpine; Reverse proxy; SSL (mkcert lokalnie); routing: / → frontend, /api → PHP, /socket.io → WebSocket / [Status 2026-08-26] 100% — zakończone; data rzeczywista 2025-12-05. Zakres potwierdzony przez kod, migracje, trasy lub zielone testy repozytorium.
- 82: Workflow: .github/workflows/lint.yml; uruchom PHP-CS + ESLint / [Status 2026-08-26] 0% — nierozpoczęte; estymacja 8 h; prognoza zakończenia 2026-09-16. Brak konfiguracji GitHub Actions dla lint.
- 83: Workflow: .github/workflows/test-backend.yml; generuj raport coverage / [Status 2026-08-26] 0% — nierozpoczęte; estymacja 8 h; prognoza zakończenia 2026-09-18. Brak konfiguracji GitHub Actions dla PHPUnit.
- 84: Workflow: .github/workflows/build-frontend.yml; artefakty w /dist / [Status 2026-08-26] 0% — nierozpoczęte; estymacja 6 h; prognoza zakończenia 2026-09-19. Brak konfiguracji GitHub Actions dla buildu frontendu.
- 85: Plik .env.example: DB_HOST, JWT_SECRET, JWT_TTL, CLOUDINARY_KEY, SMTP / [Status 2026-08-26] 100% — zakończone; data rzeczywista 2025-12-05. Zakres potwierdzony przez kod, migracje, trasy lub zielone testy repozytorium.
- 86: Komenda: docker compose ps → wszystkie "Up"; test: curl localhost/api/health / [Status 2026-08-26] 100% — zakończone; data rzeczywista 2026-08-26. Zakres potwierdzony przez kod, migracje, trasy lub zielone testy repozytorium.
- 87: [Status 2026-08-26] 100% — zakończone; data rzeczywista 2025-12-04. Zakres potwierdzony przez kod, migracje, trasy lub zielone testy repozytorium.
- 88: [Status 2026-08-26] 100% — zakończone; data rzeczywista 2025-12-05. Zakres potwierdzony przez kod, migracje, trasy lub zielone testy repozytorium.
- 89: [Status 2026-08-26] 100% — zakończone; data rzeczywista 2025-12-05. Zakres potwierdzony przez kod, migracje, trasy lub zielone testy repozytorium.
- 90: [Status 2026-08-26] 50% — w toku; pozostało 1259 h; prognoza zakończenia 2027-05-08. Zakres częściowo obecny; pozostaje kompletacja i odbiór.
- 91: [Status 2026-08-26] 71% — w toku; pozostało 513 h; prognoza zakończenia 2026-12-09. Zakres częściowo obecny; pozostaje kompletacja i odbiór.
- 92: Baza danych z pełnym schematem / [Status 2026-08-26] 91% — w toku; pozostało 124 h; prognoza zakończenia 2026-09-25. Zakres częściowo obecny; pozostaje kompletacja i odbiór.
- 93: Folder: backend/app/Database/Migrations/; CLI: php spark migrate / [Status 2026-08-26] 91% — w toku; pozostało 123 h; prognoza zakończenia 2026-09-23. Zakres częściowo obecny; pozostaje kompletacja i odbiór.
- 94: Plik: 2025-12-07-000810_CreateRealRpgTables.php / [Status 2026-08-26] 100% — zakończone; data rzeczywista 2025-12-07. Zakres potwierdzony przez kod, migracje, trasy lub zielone testy repozytorium.
- 95: Plik: 2025-12-07-000810_CreateRealRpgTables.php / [Status 2026-08-26] 100% — zakończone; data rzeczywista 2026-08-19. Zakres potwierdzony przez kod, migracje, trasy lub zielone testy repozytorium.
- 96: Plik: 2025-12-07-000810_CreateRealRpgTables.php; 2025-12-08-230833_CreateCharactersTable.php / [Status 2026-08-26] 100% — zakończone; data rzeczywista 2025-12-09. Zakres potwierdzony przez kod, migracje, trasy lub zielone testy repozytorium.
- 97: Plik: 2025-12-07-203103_AddUniversalGameSystems.php / [Status 2026-08-26] 100% — zakończone; data rzeczywista 2025-12-20. Zakres potwierdzony przez kod, migracje, trasy lub zielone testy repozytorium.
- 98: Plik: 2025-12-07-203103_AddUniversalGameSystems.php / [Status 2026-08-26] 100% — zakończone; data rzeczywista 2025-12-20. Zakres potwierdzony przez kod, migracje, trasy lub zielone testy repozytorium.
- 99: Plik: 2025-12-09-211729_CreateProfessionsTable.php / [Status 2026-08-26] 100% — zakończone; data rzeczywista 2025-12-20. Zakres potwierdzony przez kod, migracje, trasy lub zielone testy repozytorium.
- 100: Plik: 2025-12-07-203103_AddUniversalGameSystems.php / [Status 2026-08-26] 100% — zakończone; data rzeczywista 2025-12-20. Zakres potwierdzony przez kod, migracje, trasy lub zielone testy repozytorium.
- 101: Plik: 2025-12-09-211729_CreateProfessionsTable.php / [Status 2026-08-26] 100% — zakończone; data rzeczywista 2025-12-20. Zakres potwierdzony przez kod, migracje, trasy lub zielone testy repozytorium.
- 102: Plik: 2025-12-09-211729_CreateProfessionsTable.php / [Status 2026-08-26] 100% — zakończone; data rzeczywista 2025-12-20. Zakres potwierdzony przez kod, migracje, trasy lub zielone testy repozytorium.
- 103: Plik: 2025-12-09-211729_CreateProfessionsTable.php / [Status 2026-08-26] 100% — zakończone; data rzeczywista 2025-12-20. Zakres potwierdzony przez kod, migracje, trasy lub zielone testy repozytorium.
- 104: Plik: 2025-12-09-211729_CreateProfessionsTable.php / [Status 2026-08-26] 100% — zakończone; data rzeczywista 2025-12-20. Zakres potwierdzony przez kod, migracje, trasy lub zielone testy repozytorium.
- 105: Plik: 2025-12-09-211729_CreateProfessionsTable.php / [Status 2026-08-26] 100% — zakończone; data rzeczywista 2025-12-20. Zakres potwierdzony przez kod, migracje, trasy lub zielone testy repozytorium.
- 106: Plik: 2025-12-11-223558_EnhanceCharacterStructure.php / [Status 2026-08-26] 100% — zakończone; data rzeczywista 2025-12-20. Zakres potwierdzony przez kod, migracje, trasy lub zielone testy repozytorium.
- 107: Plik: 2025-12-11-223558_EnhanceCharacterStructure.php / [Status 2026-08-26] 100% — zakończone; data rzeczywista 2025-12-20. Zakres potwierdzony przez kod, migracje, trasy lub zielone testy repozytorium.
- 108: Plik: 2025-12-11-223558_EnhanceCharacterStructure.php / [Status 2026-08-26] 100% — zakończone; data rzeczywista 2025-12-20. Zakres potwierdzony przez kod, migracje, trasy lub zielone testy repozytorium.
- 109: Plik: 2025-12-16-120000_CreateWfrpContentTables.php / [Status 2026-08-26] 100% — zakończone; data rzeczywista 2025-12-20. Zakres potwierdzony przez kod, migracje, trasy lub zielone testy repozytorium.
- 110: Plik: 2025-12-16-120000_CreateWfrpContentTables.php / [Status 2026-08-26] 100% — zakończone; data rzeczywista 2025-12-20. Zakres potwierdzony przez kod, migracje, trasy lub zielone testy repozytorium.
- 111: Plik: 2025-12-16-120000_CreateWfrpContentTables.php / [Status 2026-08-26] 100% — zakończone; data rzeczywista 2025-12-20. Zakres potwierdzony przez kod, migracje, trasy lub zielone testy repozytorium.
- 112: Plik: 2025-12-16-120000_CreateWfrpContentTables.php / [Status 2026-08-26] 100% — zakończone; data rzeczywista 2025-12-20. Zakres potwierdzony przez kod, migracje, trasy lub zielone testy repozytorium.
- 113: Plik: 2025-12-16-120000_CreateWfrpContentTables.php / [Status 2026-08-26] 100% — zakończone; data rzeczywista 2025-12-20. Zakres potwierdzony przez kod, migracje, trasy lub zielone testy repozytorium.
- 114: Plik: 2025-12-16-120000_CreateWfrpContentTables.php / [Status 2026-08-26] 100% — zakończone; data rzeczywista 2025-12-20. Zakres potwierdzony przez kod, migracje, trasy lub zielone testy repozytorium.
- 115: Plik: 2025-12-16-120000_CreateWfrpContentTables.php / [Status 2026-08-26] 100% — zakończone; data rzeczywista 2025-12-20. Zakres potwierdzony przez kod, migracje, trasy lub zielone testy repozytorium.
- 116: Plik: 2025-12-16-120000_CreateWfrpContentTables.php / [Status 2026-08-26] 100% — zakończone; data rzeczywista 2025-12-20. Zakres potwierdzony przez kod, migracje, trasy lub zielone testy repozytorium.
- 117: Plik: 2025-12-16-120000_CreateWfrpContentTables.php / [Status 2026-08-26] 100% — zakończone; data rzeczywista 2025-12-20. Zakres potwierdzony przez kod, migracje, trasy lub zielone testy repozytorium.

| ID | WBS | Task | Duration | Start | Finish | Predecessors | Complete | Remaining | Baseline start | Baseline finish | Baseline duration | Total slack | Lokalizacja | Branch Feature | Repo Branch |
| --- | --- | --- | --- | --- | --- | --- | --- | --- | --- | --- | --- | --- | --- | --- | --- |
| 118 | 5.1.1.1.25 | **Migracje: i18n (translations + locales)** | 1d? | 2025-12-19 A | 2025-12-20 A |  | 100% |  | 2026-01-07 | 2026-01-08 | 1d? |  | Backend/Database |  |  |
| 119 | 5.1.1.1.25.1 | Migracja: Tabela Magic_path_translations | 1d? | 2025-12-19 A | 2025-12-20 A |  | 100% |  | 2026-01-07 | 2026-01-08 | 1d? |  | Backend/Database |  |  |
| 120 | 5.1.1.1.25.2 | Migracja: Tabela Insanity_translations | 1d? | 2025-12-19 A | 2025-12-20 A |  | 100% |  | 2026-01-07 | 2026-01-08 | 1d? |  | Backend/Database |  |  |
| 121 | 5.1.1.1.25.3 | Migracja: Tabela Weapon_trait_translations | 1d? | 2025-12-19 A | 2025-12-20 A |  | 100% |  | 2026-01-07 | 2026-01-08 | 1d? |  | Backend/Database |  |  |
| 122 | 5.1.1.1.25.4 | Migracja: Tabela Combat_action_translations | 1d? | 2025-12-19 A | 2025-12-20 A |  | 100% |  | 2026-01-07 | 2026-01-08 | 1d? |  | Backend/Database |  |  |
| 123 | 5.1.1.1.25.5 | Migracja: Tabela Item_bundle_translations | 1d? | 2025-12-19 A | 2025-12-20 A |  | 100% |  | 2026-01-07 | 2026-01-08 | 1d? |  | Backend/Database |  |  |
| 124 | 5.1.1.1.25.6 | Migracja: Tabela Item_class_translations | 1d? | 2025-12-19 A | 2025-12-20 A |  | 100% |  | 2026-01-07 | 2026-01-08 | 1d? |  | Backend/Database |  |  |
| 125 | 5.1.1.1.25.7 | Migracja: Tabela Item_translations | 1d? | 2025-12-19 A | 2025-12-20 A |  | 100% |  | 2026-01-07 | 2026-01-08 | 1d? |  | Backend/Database |  |  |
| 126 | 5.1.1.1.25.8 | Migracja: Tabela Game_definition_translations | 1d? | 2025-12-19 A | 2025-12-20 A |  | 100% |  | 2026-01-07 | 2026-01-08 | 1d? |  | Backend/Database |  |  |
| 127 | 5.1.1.1.25.9 | Migracja: Tabela Locales | 1d? | 2025-12-19 A | 2025-12-20 A |  | 100% |  | 2026-01-07 | 2026-01-08 | 1d? |  | Backend/Database |  |  |
| 128 | 3.1.1.4 | Migracja: Tabela Tables (Stoły) | 1d | 2026-08-18 A | 2026-08-19 A | 95 | 100% |  | 2026-01-09 | 2026-01-10 | 1d |  | Backend/Database | feature/db-migrations | feature/db-migration |
| 129 | 3.1.1.5 | Migracja: Tabela Maps | 1d | 2026-08-18 A | 2026-08-19 A | 128 | 100% |  | 2026-01-10 | 2026-01-11 | 1d |  | Backend/Database | feature/db-migrations | feature/db-migration |
| 130 | 3.1.1.6 | Migracja: Tabela Tokens (Pionki) | 1d | 2026-08-23 A | 2026-08-24 A | 129 | 100% |  | 2026-01-11 | 2026-01-12 | 1d |  | Backend/Database | feature/db-migrations | feature/db-migration |
| 131 | 3.1.1.8 | Migracja: Tabela Inventory | 1d | 2026-08-18 A | 2026-08-19 A | 96 | 100% |  | 2026-01-13 | 2026-01-14 | 1d |  | Backend/Database | feature/db-migrations | feature/db-migration |
| 132 | 3.1.1.9 | Migracja: Tabela Items | 1d | 2026-08-18 A | 2026-08-19 A | 131 | 100% |  | 2026-01-14 | 2026-01-15 | 1d |  | Backend/Database | feature/db-migrations | feature/db-migration |
| 133 | 3.1.1.10 | Migracja: Tabela ChatMessages | 1d | 2026-08-18 A | 2026-08-19 A | 132 | 100% |  | 2026-01-15 | 2026-01-16 | 1d |  | Backend/Database | feature/db-migrations | feature/db-migration |
| 134 | 3.1.1.11 | Migracja: Tabela DiceRolls | 1.6d | 2026-09-19 | 2026-09-21 | 133 |  |  | 2026-01-16 | 2026-01-17 | 1d | 0d | Backend/Database | feature/db-migrations | feature/db-migration |
| 135 | 3.1.1.12 | Migracja: Tabela Invitations | 1d | 2026-08-18 A | 2026-08-19 A | 134 | 100% |  | 2026-01-17 | 2026-01-18 | 1d |  | Backend/Database | feature/db-migrations | feature/db-migration |
| 136 | 3.1.1.13 | Migracja: Tabela Macros | 2.4d | 2026-09-21 | 2026-09-23 | 135 |  |  | 2026-01-18 | 2026-01-19 | 1d | 0d | Backend/Database | feature/db-migrations | feature/db-migration |
| 137 | 3.1.1.14 | **Implementacja Seeders (dane legacy)** | 1d? | 2026-01-10 A | 2026-01-11 A | 136 | 100% |  | 2026-01-19 | 2026-01-20 | 1d? |  | Backend/Database | feature/db-seeders | feature/master-seeder |
| 138 | 5.1.1.2.1 | A_MasterSeeder | 1d? | 2026-01-10 A | 2026-01-11 A |  | 100% |  | 2026-01-19 | 2026-01-20 | 1d? |  | Backend/Database |  |  |
| 139 | 5.1.1.2.2 | Tabela Characters: CharacterLegacySeeder | 1d? | 2026-01-10 A | 2026-01-11 A |  | 100% |  | 2026-01-19 | 2026-01-20 | 1d? |  | Backend/Database |  |  |
| 140 | 5.1.1.2.3 | Tabela character_professions: CharacterProfessionsLegacySeeder | 1d? | 2026-01-10 A | 2026-01-11 A |  | 100% |  | 2026-01-19 | 2026-01-20 | 1d? |  | Backend/Database |  |  |
| 141 | 5.1.1.2.4 | Tabela Professions: ProfessionsLegacySeeder | 1d? | 2026-01-10 A | 2026-01-11 A |  | 100% |  | 2026-01-19 | 2026-01-20 | 1d? |  | Backend/Database |  |  |
| 142 | 5.1.1.2.5 | LocalizationSeeder | 1d? | 2026-01-10 A | 2026-01-11 A |  | 100% |  | 2026-01-19 | 2026-01-20 | 1d? |  | Backend/Database |  |  |
| 143 | 5.1.1.2.6 | RpgInitializationSeeder | 1d? | 2026-01-10 A | 2026-01-11 A |  | 100% |  | 2026-01-19 | 2026-01-20 | 1d? |  | Backend/Database |  |  |
| 144 | 5.1.1.2.7 | WarhammerCombatSeeder | 1d? | 2026-01-10 A | 2026-01-11 A |  | 100% |  | 2026-01-19 | 2026-01-20 | 1d? |  | Backend/Database |  |  |
| 145 | 5.1.1.2.8 | WarhammerDefinitionsSeeder | 1d? | 2026-01-10 A | 2026-01-11 A |  | 100% |  | 2026-01-19 | 2026-01-20 | 1d? |  | Backend/Database |  |  |
| 146 | 5.1.1.2.9 | WarhammerEquipmentSeeder | 1d? | 2026-01-10 A | 2026-01-11 A |  | 100% |  | 2026-01-19 | 2026-01-20 | 1d? |  | Backend/Database |  |  |
| 147 | 5.1.1.2.10 | WarhammerInsanitySeeder | 1d? | 2026-01-10 A | 2026-01-11 A |  | 100% |  | 2026-01-19 | 2026-01-20 | 1d? |  | Backend/Database |  |  |
| 148 | 5.1.1.2.11 | Base/SystemBaseSeeder (abstrakcyjna klasa bazowa) | 1d? | 2026-01-10 A | 2026-01-11 A |  | 100% |  | 2026-01-19 | 2026-01-20 | 1d? |  | Backend/Database |  |  |
| 149 | 5.1.1.2.12 | Base/Coc7eBaseSeeder | 1d? | 2026-01-10 A | 2026-01-11 A |  | 100% |  | 2026-01-19 | 2026-01-20 | 1d? |  | Backend/Database |  |  |
| 150 | 5.1.1.2.13 | Base/WfrpBaseSeeder | 1d? | 2026-01-10 A | 2026-01-11 A |  | 100% |  | 2026-01-19 | 2026-01-20 | 1d? |  | Backend/Database |  |  |
| 151 | 3.1.1.15 | Testy migracji (rollback + migrate) | 8d | 2026-08-20 A | 2026-09-25 | 137 | 80% | 1.6d | 2026-01-20 | 2026-01-21 | 1d | 0d | Backend/Database | feature/db-migrations | feature/db-migration |

Notes:
- 118: [Status 2026-08-26] 100% — zakończone; data rzeczywista 2025-12-20. Zakres potwierdzony przez kod, migracje, trasy lub zielone testy repozytorium.
- 119: Plik: 2025-12-16-123000_AddLocalizationTables.php / [Status 2026-08-26] 100% — zakończone; data rzeczywista 2025-12-20. Zakres potwierdzony przez kod, migracje, trasy lub zielone testy repozytorium.
- 120: Plik: 2025-12-16-123000_AddLocalizationTables.php / [Status 2026-08-26] 100% — zakończone; data rzeczywista 2025-12-20. Zakres potwierdzony przez kod, migracje, trasy lub zielone testy repozytorium.
- 121: Plik: 2025-12-16-123000_AddLocalizationTables.php / [Status 2026-08-26] 100% — zakończone; data rzeczywista 2025-12-20. Zakres potwierdzony przez kod, migracje, trasy lub zielone testy repozytorium.
- 122: Plik: 2025-12-16-123000_AddLocalizationTables.php / [Status 2026-08-26] 100% — zakończone; data rzeczywista 2025-12-20. Zakres potwierdzony przez kod, migracje, trasy lub zielone testy repozytorium.
- 123: Plik: 2025-12-16-123000_AddLocalizationTables.php / [Status 2026-08-26] 100% — zakończone; data rzeczywista 2025-12-20. Zakres potwierdzony przez kod, migracje, trasy lub zielone testy repozytorium.
- 124: Plik: 2025-12-16-123000_AddLocalizationTables.php / [Status 2026-08-26] 100% — zakończone; data rzeczywista 2025-12-20. Zakres potwierdzony przez kod, migracje, trasy lub zielone testy repozytorium.
- 125: Plik: 2025-12-16-123000_AddLocalizationTables.php / [Status 2026-08-26] 100% — zakończone; data rzeczywista 2025-12-20. Zakres potwierdzony przez kod, migracje, trasy lub zielone testy repozytorium.
- 126: Plik: 2025-12-16-123000_AddLocalizationTables.php / [Status 2026-08-26] 100% — zakończone; data rzeczywista 2025-12-20. Zakres potwierdzony przez kod, migracje, trasy lub zielone testy repozytorium.
- 127: Plik: 2025-12-16-123000_AddLocalizationTables.php / [Status 2026-08-26] 100% — zakończone; data rzeczywista 2025-12-20. Zakres potwierdzony przez kod, migracje, trasy lub zielone testy repozytorium.
- 128: Plik: 2026_01_10_000003_create_tables_table.php / [Status 2026-08-26] 100% — zakończone; data rzeczywista 2026-08-19. Zakres potwierdzony przez kod, migracje, trasy lub zielone testy repozytorium.
- 129: Plik: 2026_01_10_000004_create_maps_table.php / [Status 2026-08-26] 100% — zakończone; data rzeczywista 2026-08-19. Zakres potwierdzony przez kod, migracje, trasy lub zielone testy repozytorium.
- 130: Plik: 2026_01_10_000005_create_tokens_table.php / [Status 2026-08-26] 100% — zakończone; data rzeczywista 2026-08-24. Zakres potwierdzony przez kod, migracje, trasy lub zielone testy repozytorium.
- 131: Plik: 2026_01_10_000007_create_inventory_table.php / [Status 2026-08-26] 100% — zakończone; data rzeczywista 2026-08-19. Zakres potwierdzony przez kod, migracje, trasy lub zielone testy repozytorium.
- 132: Plik: 2026_01_10_000008_create_items_table.php / [Status 2026-08-26] 100% — zakończone; data rzeczywista 2026-08-19. Zakres potwierdzony przez kod, migracje, trasy lub zielone testy repozytorium.
- 133: Plik: 2026_01_10_000009_create_chat_messages_table.php / [Status 2026-08-26] 100% — zakończone; data rzeczywista 2026-08-19. Zakres potwierdzony przez kod, migracje, trasy lub zielone testy repozytorium.
- 134: Plik: 2026_01_10_000010_create_dice_rolls_table.php / [Status 2026-08-26] 0% — nierozpoczęte; estymacja 8 h; prognoza zakończenia 2026-09-21. Brak migracji tabeli DiceRolls.
- 135: Plik: 2026_01_10_000011_create_invitations_table.php / [Status 2026-08-26] 100% — zakończone; data rzeczywista 2026-08-19. Zakres potwierdzony przez kod, migracje, trasy lub zielone testy repozytorium.
- 136: Plik: 2026_01_10_000012_create_macros_table.php / [Status 2026-08-26] 0% — nierozpoczęte; estymacja 12 h; prognoza zakończenia 2026-09-23. Brak migracji tabeli Macros.
- 137: Seeder: DevDataSeeder; 5 użytkowników, 3 kampanie, 10 postaci / [Status 2026-08-26] 100% — zakończone; data rzeczywista 2026-01-11. Zakres potwierdzony przez kod, migracje, trasy lub zielone testy repozytorium.
- 138: uruchamia pozostałe seedery w ustalonej kolejności (init, lokalizacje, dane WFRP, profesje, postacie). / [Status 2026-08-26] 100% — zakończone; data rzeczywista 2026-01-11. Zakres potwierdzony przez kod, migracje, trasy lub zielone testy repozytorium.
- 139: CharacterProfessionsLegacySeeder.php uzupełnia pivot character_professions na podstawie danych WfrpData (aktualne i poprzednie profesje). / [Status 2026-08-26] 100% — zakończone; data rzeczywista 2026-01-11. Zakres potwierdzony przez kod, migracje, trasy lub zielone testy repozytorium.
- 140: CharacterLegacySeeder.php seeduje przykładowe/post‑legacy postacie WFRP2ed do characters (tworzy system/uniwersum jeśli brak). / [Status 2026-08-26] 100% — zakończone; data rzeczywista 2026-01-11. Zakres potwierdzony przez kod, migracje, trasy lub zielone testy repozytorium.
- 141: ProfessionsLegacySeeder.php importuje profesje WFRP i powiązane dane do professions, profession_attributes, profession_definitions, profession_paths, profession_equipment (z WfrpData::getProfessions). / [Status 2026-08-26] 100% — zakończone; data rzeczywista 2026-01-11. Zakres potwierdzony przez kod, migracje, trasy lub zielone testy repozytorium.
- 142: LocalizationSeeder.php seeduje języki w tabeli locales (pl/en/fr/de), aktualizuje jeśli już istnieją. / [Status 2026-08-26] 100% — zakończone; data rzeczywista 2026-01-11. Zakres potwierdzony przez kod, migracje, trasy lub zielone testy repozytorium.
- 143: RpgInitializationSeeder.php czyści rpg_system_universes, game_definitions, rpg_systems, rpg_universes, a potem seeduje listę systemów, uniwersów i ich powiązań (pivot). / [Status 2026-08-26] 100% — zakończone; data rzeczywista 2026-01-11. Zakres potwierdzony przez kod, migracje, trasy lub zielone testy repozytorium.
- 144: WarhammerCombatSeeder.php importuje akcje bojowe i cechy broni (combat_actions, weapon_traits) z WfrpData. / [Status 2026-08-26] 100% — zakończone; data rzeczywista 2026-01-11. Zakres potwierdzony przez kod, migracje, trasy lub zielone testy repozytorium.
- 145: WarhammerDefinitionsSeeder.php importuje umiejętności, zdolności i cechy WFRP do game_definitions (z WfrpData), pomija duplikaty. / [Status 2026-08-26] 100% — zakończone; data rzeczywista 2026-01-11. Zakres potwierdzony przez kod, migracje, trasy lub zielone testy repozytorium.
- 146: WarhammerEquipmentSeeder.php importuje klasy przedmiotów, przedmioty oraz pakiety ekwipunku (item_classes, items, item_bundles) z WfrpData. / [Status 2026-08-26] 100% — zakończone; data rzeczywista 2026-01-11. Zakres potwierdzony przez kod, migracje, trasy lub zielone testy repozytorium.
- 147: WarhammerInsanitySeeder.php importuje choroby umysłu do insanities z WfrpData. / [Status 2026-08-26] 100% — zakończone; data rzeczywista 2026-01-11. Zakres potwierdzony przez kod, migracje, trasy lub zielone testy repozytorium.
- 148: Abstrakcyjna klasa bazowa, aby móc wgrywać różne gry i systemy na swój sposób / [Status 2026-08-26] 100% — zakończone; data rzeczywista 2026-01-11. Zakres potwierdzony przez kod, migracje, trasy lub zielone testy repozytorium.
- 149: Bazowy Seeder do ujednolicenia sposobu wgrywania seedów dla Zew Cthuhlu 7ed / [Status 2026-08-26] 100% — zakończone; data rzeczywista 2026-01-11. Zakres potwierdzony przez kod, migracje, trasy lub zielone testy repozytorium.
- 150: Bazowy Seeder do ujednolicenia sposobu wgrywania seedów dla Warhammer Fantasy Roleplay 2ed / [Status 2026-08-26] 100% — zakończone; data rzeczywista 2026-01-11. Zakres potwierdzony przez kod, migracje, trasy lub zielone testy repozytorium.
- 151: Weryfikacja: php spark migrate:rollback i migrate bez błędów / [Status 2026-08-26] 80% — w toku; pozostało 8 h; prognoza zakończenia 2026-09-25. Migracje działają, ale wymagają pełnej próby upgrade/rollback; istnieje konflikt prefiksu 2026-08-26-030000.

| ID | WBS | Task | Duration | Start | Finish | Predecessors | Complete | Remaining | Baseline start | Baseline finish | Baseline duration | Total slack | Repo Branch | Lokalizacja | Branch Feature |
| --- | --- | --- | --- | --- | --- | --- | --- | --- | --- | --- | --- | --- | --- | --- | --- |
| 152 | 3.1.2 | **Moduł Uwierzytelniania (Auth)** | 280d | 2025-12-06 A | 2026-09-29 |  | 70% | 84d | 2026-01-21 | 2026-02-01 | 11d | 0d | feature/db-migration |  |  |
| 153 | 3.1.2.1 | Implementacja modelu User (Model ORM) | 1d | 2025-12-06 A | 2025-12-07 A | 151 | 100% |  | 2026-01-21 | 2026-01-22 | 1d |  | feature/master-seeder | Backend/Models | feature/auth-user-model |
| 154 | 3.1.2.2 | Implementacja biblioteki JWT (Firebase JWT) | 1d | 2025-12-06 A | 2025-12-07 A | 153 | 100% |  | 2026-01-22 | 2026-01-23 | 1d |  |  | Backend/Auth | feature/auth-jwt-library |
| 155 | 3.1.2.3 | Implementacja controllera AuthController | 1d | 2025-12-06 A | 2025-12-07 A | 154 | 100% |  | 2026-01-23 | 2026-01-24 | 1d |  | feature/auth-jwt | Backend/Controllers | feature/auth-controller |
| 156 | 3.1.2.4 | Endpoint: POST /api/auth/register | 1d | 2025-12-06 A | 2025-12-07 A | 155 | 100% |  | 2026-01-24 | 2026-01-25 | 1d |  | feature/auth-jwt | Backend/Auth | feature/auth-register |
| 157 | 3.1.2.5 | Endpoint: POST /api/auth/login | 1d | 2025-12-06 A | 2025-12-07 A | 156 | 100% |  | 2026-01-25 | 2026-01-26 | 1d |  | feature/auth-jwt | Backend/Auth | feature/auth-login |
| 158 | 3.1.2.6 | Endpoint: POST /api/auth/refresh | 3.2d | 2026-09-25 | 2026-09-28 | 157 |  |  | 2026-01-26 | 2026-01-27 | 1d | 0d | feature/auth-jwt | Backend/Auth | feature/auth-refresh-token |
| 159 | 3.1.2.7 | Endpoint: POST /api/auth/logout | 1d | 2026-08-18 A | 2026-08-19 A | 158 | 100% |  | 2026-01-27 | 2026-01-28 | 1d |  | feature/auth-jwt | Backend/Auth | feature/auth-logout |
| 160 | 3.1.2.8 | Endpoint: POST /api/auth/reset-password | 1d | 2026-08-18 A | 2026-08-19 A | 159 | 100% |  | 2026-01-28 | 2026-01-29 | 1d |  | feature/auth-jwt | Backend/Auth | feature/auth-password-reset |
| 161 | 3.1.2.9 | Implementacja middleware AuthMiddleware | 1d | 2026-08-18 A | 2026-08-19 A | 160 | 100% |  | 2026-01-29 | 2026-01-30 | 1d |  | feature/auth-jwt | Backend/Middleware | feature/auth-middleware |
| 162 | 3.1.2.10 | Integracja SMTP (wysyłka maili) | 4d | 2026-08-17 A | 2026-09-29 | 161 | 60% | 1.6d | 2026-01-30 | 2026-01-31 | 1d | 0d | feature/auth-jwt | Backend/Services | feature/email-service |
| 163 | 3.1.2.11 | Testy jednostkowe: AuthController | 1d | 2026-08-25 A | 2026-08-26 A | 162 | 100% |  | 2026-01-31 | 2026-02-01 | 1d |  | feature/auth-jwt | Backend/Tests | feature/auth-tests |
| 164 | 3.1.3 | **Moduł Profilu Użytkownika** | 48.4d | 2026-08-18 A | 2026-10-05 |  | 40% | 29.04d | 2026-02-01 | 2026-02-07 | 6d | 0d | feature/rpg-api |  |  |
| 165 | 3.1.3.1 | Endpoint: GET /api/me | 1d | 2026-08-22 A | 2026-08-23 A | 163 | 100% |  | 2026-02-01 | 2026-02-02 | 1d |  | feature/auth-jwt | Backend/Profile | feature/profile-me |
| 166 | 3.1.3.2 | Endpoint: GET /api/profile/:id | 1.6d | 2026-09-30 | 2026-10-01 | 165 |  |  | 2026-02-02 | 2026-02-03 | 1d | 0d | feature/auth-jwt | Backend/Profile | feature/profile-view |
| 167 | 3.1.3.3 | Endpoint: PUT /api/profile | 1d | 2026-08-22 A | 2026-08-23 A | 166 | 100% |  | 2026-02-03 | 2026-02-04 | 1d |  |  | Backend/Profile | feature/profile-edit |
| 168 | 3.1.3.4 | Endpoint: PUT /api/profile/password | 1d | 2026-08-22 A | 2026-08-23 A | 167 | 100% |  | 2026-02-04 | 2026-02-05 | 1d |  | feature/rpg-api | Backend/Profile | feature/profile-change-password |
| 169 | 3.1.3.5 | Integracja Cloudinary (upload avatarów) | 3.2d | 2026-08-18 A | 2026-10-03 | 168 | 25% | 2.4d | 2026-02-05 | 2026-02-06 | 1d | 0d | feature/rpg-api | Backend/Services | feature/cloudinary-upload |
| 170 | 3.1.3.6 | Endpoint: GET /api/cloudinary/resources | 1.6d | 2026-10-04 | 2026-10-05 | 169 |  |  | 2026-02-06 | 2026-02-07 | 1d | 0d | feature/rpg-api | Backend/Cloudinary | feature/cloudinary-gallery |
| 171 | 3.1.4 | **Moduł Kampanii i Sesji** | 49.2d | 2026-08-18 A | 2026-10-07 |  | 79% | 10.33d | 2026-02-07 | 2026-02-14 | 7d | 0d | feature/rpg-api |  |  |
| 172 | 3.1.4.1 | Implementacja modelu Session | 1d | 2026-08-18 A | 2026-08-19 A | 170 | 100% |  | 2026-02-07 | 2026-02-08 | 1d |  | feature/rpg-api | Backend/Models | feature/sessions-model |
| 173 | 3.1.4.2 | Endpoint: GET /api/campaigns | 1d | 2026-08-18 A | 2026-08-19 A | 172 | 100% |  | 2026-02-08 | 2026-02-09 | 1d |  | feature/rpg-api | Backend/Campaigns | feature/campaigns-list |
| 174 | 3.1.4.3 | Endpoint: POST /api/campaigns | 1d | 2026-08-18 A | 2026-08-19 A | 173 | 100% |  | 2026-02-09 | 2026-02-10 | 1d |  |  | Backend/Campaigns | feature/campaigns-create |
| 175 | 3.1.4.4 | Endpoint: GET /api/campaigns/:id | 1d | 2026-08-18 A | 2026-08-19 A | 174 | 100% |  | 2026-02-10 | 2026-02-11 | 1d |  | feature/rpg-api | Backend/Campaigns | feature/campaigns-view |
| 176 | 3.1.4.5 | Endpoint: PUT /api/campaigns/:id | 1d | 2026-08-18 A | 2026-08-19 A | 175 | 100% |  | 2026-02-11 | 2026-02-12 | 1d |  | feature/rpg-api | Backend/Campaigns | feature/campaigns-update |
| 177 | 3.1.4.6 | Endpoint: DELETE /api/campaigns/:id | 1.6d | 2026-10-05 | 2026-10-07 | 176 |  |  | 2026-02-12 | 2026-02-13 | 1d | 0d | feature/rpg-api | Backend/Campaigns | feature/campaigns-delete |
| 178 | 3.1.4.7 | Testy jednostkowe: SessionModel | 1d | 2026-08-18 A | 2026-08-19 A | 177 | 100% |  | 2026-02-13 | 2026-02-14 | 1d |  | feature/rpg-api | Backend/Tests | feature/campaigns-tests |

Notes:
- 152: System rejestracji i logowania działający / [Status 2026-08-26] 70% — w toku; pozostało 420 h; prognoza zakończenia 2026-09-29. Zakres częściowo obecny; pozostaje kompletacja i odbiór.
- 153: Klasa: App\Models\UserModel; metody: find, create, updatePassword / [Status 2026-08-26] 100% — zakończone; data rzeczywista 2025-12-07. Zakres potwierdzony przez kod, migracje, trasy lub zielone testy repozytorium.
- 154: Composer: firebase/php-jwt; Helper: App\Helpers\JWTHelper / [Status 2026-08-26] 100% — zakończone; data rzeczywista 2025-12-07. Zakres potwierdzony przez kod, migracje, trasy lub zielone testy repozytorium.
- 155: Klasa: App\Controllers\AuthController; metody: register, login, refresh, logout / [Status 2026-08-26] 100% — zakończone; data rzeczywista 2025-12-07. Zakres potwierdzony przez kod, migracje, trasy lub zielone testy repozytorium.
- 156: Walidacja: email unique, hasło min 8 znaków; zwraca: 201 + Access Token / [Status 2026-08-26] 100% — zakończone; data rzeczywista 2025-12-07. Zakres potwierdzony przez kod, migracje, trasy lub zielone testy repozytorium.
- 157: Weryfikacja: bcrypt; zwraca: Access Token (15min) + Refresh Token (7 dni) / [Status 2026-08-26] 100% — zakończone; data rzeczywista 2025-12-07. Zakres potwierdzony przez kod, migracje, trasy lub zielone testy repozytorium.
- 158: Input: Refresh Token; output: nowy Access Token / [Status 2026-08-26] 0% — nierozpoczęte; estymacja 16 h; prognoza zakończenia 2026-09-28. Brak endpointu POST /api/auth/refresh; aplikacja używa sesji logowania.
- 159: Invalidacja Refresh Token (blacklist w Redis lub MySQL) / [Status 2026-08-26] 100% — zakończone; data rzeczywista 2026-08-19. Zakres potwierdzony przez kod, migracje, trasy lub zielone testy repozytorium.
- 160: Wysyłka emaila z tokenem reset; link: /reset/{token} / [Status 2026-08-26] 100% — zakończone; data rzeczywista 2026-08-19. Zakres potwierdzony przez kod, migracje, trasy lub zielone testy repozytorium.
- 161: Weryfikacja tokenu JWT; wstrzykiwanie user_id do Request / [Status 2026-08-26] 100% — zakończone; data rzeczywista 2026-08-19. Zakres potwierdzony przez kod, migracje, trasy lub zielone testy repozytorium.
- 162: Biblioteka: PHPMailer; config w .env: SMTP_HOST, SMTP_PORT / [Status 2026-08-26] 60% — w toku; pozostało 8 h; prognoza zakończenia 2026-09-29. Obsługa poczty i resetu hasła istnieje, ale SMTP nie jest skonfigurowany w środowisku.
- 163: PHPUnit: testRegisterSuccess, testLoginInvalidCredentials, testRefreshToken / [Status 2026-08-26] 100% — zakończone; data rzeczywista 2026-08-26. Zakres potwierdzony przez kod, migracje, trasy lub zielone testy repozytorium.
- 164: Zarządzanie profilem i awatarem / [Status 2026-08-26] 40% — w toku; pozostało 145 h; prognoza zakończenia 2026-10-05. Zakres częściowo obecny; pozostaje kompletacja i odbiór.
- 165: Zwraca profil aktualnie zalogowanego użytkownika (z tokenu JWT) / [Status 2026-08-26] 100% — zakończone; data rzeczywista 2026-08-23. Zakres potwierdzony przez kod, migracje, trasy lub zielone testy repozytorium.
- 166: Publiczny profil innego użytkownika (bez email) / [Status 2026-08-26] 0% — nierozpoczęte; estymacja 8 h; prognoza zakończenia 2026-10-01. Brak publicznego endpointu GET /api/profile/:id.
- 167: Edycja własnego profilu: username, bio, avatar_url / [Status 2026-08-26] 100% — zakończone; data rzeczywista 2026-08-23. Zakres potwierdzony przez kod, migracje, trasy lub zielone testy repozytorium.
- 168: Zmiana hasła; wymaga: old_password, new_password / [Status 2026-08-26] 100% — zakończone; data rzeczywista 2026-08-23. Zakres potwierdzony przez kod, migracje, trasy lub zielone testy repozytorium.
- 169: SDK: cloudinary/cloudinary_php; endpoint: POST /api/profile/avatar / [Status 2026-08-26] 25% — w toku; pozostało 12 h; prognoza zakończenia 2026-10-03. Istnieją assety Cloudinary postaci; brak pełnego uploadu avatara konta użytkownika.
- 170: Lista zasobów dla galerii avatarów (opcjonalne) / [Status 2026-08-26] 0% — nierozpoczęte; estymacja 8 h; prognoza zakończenia 2026-10-05. Brak endpointu GET /api/cloudinary/resources.
- 171: CRUD kampanii RPG / [Status 2026-08-26] 79% — w toku; pozostało 52 h; prognoza zakończenia 2026-10-07. Zakres częściowo obecny; pozostaje kompletacja i odbiór.
- 172: Klasa: App\Models\SessionModel; relacje: belongsTo(User), hasMany(Tables) / [Status 2026-08-26] 100% — zakończone; data rzeczywista 2026-08-19. Zakres potwierdzony przez kod, migracje, trasy lub zielone testy repozytorium.
- 173: Lista kampanii użytkownika (jako GM lub gracz); query: ?status=active / [Status 2026-08-26] 100% — zakończone; data rzeczywista 2026-08-19. Zakres potwierdzony przez kod, migracje, trasy lub zielone testy repozytorium.
- 174: Utworzenie nowej kampanii; body: {name, description, system} / [Status 2026-08-26] 100% — zakończone; data rzeczywista 2026-08-19. Zakres potwierdzony przez kod, migracje, trasy lub zielone testy repozytorium.
- 175: Szczegóły kampanii; includes: lista graczy, stoliki / [Status 2026-08-26] 100% — zakończone; data rzeczywista 2026-08-19. Zakres potwierdzony przez kod, migracje, trasy lub zielone testy repozytorium.
- 176: Edycja kampanii (tylko GM); body: {name, description, status} / [Status 2026-08-26] 100% — zakończone; data rzeczywista 2026-08-19. Zakres potwierdzony przez kod, migracje, trasy lub zielone testy repozytorium.
- 177: Usunięcie kampanii (tylko GM); soft delete lub cascade / [Status 2026-08-26] 0% — nierozpoczęte; estymacja 8 h; prognoza zakończenia 2026-10-07. Brak endpointu usuwania kampanii.
- 178: PHPUnit: testCreateSession, testGMOwnership, testSoftDelete / [Status 2026-08-26] 100% — zakończone; data rzeczywista 2026-08-19. Zakres potwierdzony przez kod, migracje, trasy lub zielone testy repozytorium.

| ID | WBS | Task | Duration | Start | Finish | Predecessors | Complete | Remaining | Baseline start | Baseline finish | Baseline duration | Total slack | Repo Branch | Lokalizacja | Branch Feature |
| --- | --- | --- | --- | --- | --- | --- | --- | --- | --- | --- | --- | --- | --- | --- | --- |
| 179 | 3.1.5 | **Moduł Wirtualnych Stołów (Blaty)** | 52.4d | 2026-08-18 A | 2026-10-10 |  | 71% | 15.2d | 2026-02-14 | 2026-02-24 | 10d | 0d | feature/rpg-api |  |  |
| 180 | 3.1.5.1 | Implementacja modelu Table | 1d | 2026-08-18 A | 2026-08-19 A | 178 | 100% |  | 2026-02-14 | 2026-02-15 | 1d |  | feature/rpg-api | Backend/Models | feature/tables-model |
| 181 | 3.1.5.2 | Endpoint: GET /api/tables | 1d | 2026-08-18 A | 2026-08-19 A | 180 | 100% |  | 2026-02-15 | 2026-02-16 | 1d |  | feature/rpg-api | Backend/Tables | feature/tables-list |
| 182 | 3.1.5.3 | Endpoint: POST /api/tables | 1d | 2026-08-18 A | 2026-08-19 A | 181 | 100% |  | 2026-02-16 | 2026-02-17 | 1d |  |  | Backend/Tables | feature/tables-create |
| 183 | 3.1.5.4 | Endpoint: GET /api/tables/:id | 1d | 2026-08-18 A | 2026-08-19 A | 182 | 100% |  | 2026-02-17 | 2026-02-18 | 1d |  | feature/rpg-api | Backend/Tables | feature/tables-view |
| 184 | 3.1.5.5 | Endpoint: PUT /api/tables/:id | 1d | 2026-08-18 A | 2026-08-19 A | 183 | 100% |  | 2026-02-18 | 2026-02-19 | 1d |  | feature/rpg-api | Backend/Tables | feature/tables-update |
| 185 | 3.1.5.6 | Endpoint: DELETE /api/tables/:id | 1.6d | 2026-10-07 | 2026-10-08 | 184 |  |  | 2026-02-19 | 2026-02-20 | 1d | 0d | feature/rpg-api | Backend/Tables | feature/tables-delete |
| 186 | 3.1.5.7 | Implementacja systemu zaproszeń do stołu | 1d | 2026-08-18 A | 2026-08-19 A | 185 | 100% |  | 2026-02-20 | 2026-02-21 | 1d |  | feature/rpg-api | Backend/Invitations | feature/invitations-generate |
| 187 | 3.1.5.8 | Endpoint: POST /api/tables/:id/invite | 1d | 2026-08-18 A | 2026-08-19 A | 186 | 100% |  | 2026-02-21 | 2026-02-22 | 1d |  | feature/rpg-api | Backend/Invitations | feature/invitations-create |
| 188 | 3.1.5.9 | Endpoint: POST /api/tables/join | 1d | 2026-08-18 A | 2026-08-19 A | 187 | 100% |  | 2026-02-22 | 2026-02-23 | 1d |  | feature/rpg-api | Backend/Invitations | feature/invitations-join |
| 189 | 3.1.5.10 | Wysyłka emaila z zaproszeniem (opcjonalne) | 1.6d | 2026-10-08 | 2026-10-10 | 188 |  |  | 2026-02-23 | 2026-02-24 | 1d | 0d | feature/rpg-api | Backend/Services | feature/invitations-email |
| 190 | 3.1.6 | **Moduł Postaci (Characters)** | 1d | 2026-08-18 A | 2026-08-19 A |  | 100% |  | 2026-02-24 | 2026-03-04 | 8d |  | feature/rpg-api |  |  |
| 191 | 3.1.6.1 | Implementacja modelu Character | 1d | 2026-08-18 A | 2026-08-19 A | 189 | 100% |  | 2026-02-24 | 2026-02-25 | 1d |  | feature/rpg-api | Backend/Models | feature/characters-model |
| 192 | 3.1.6.2 | Endpoint: GET /api/characters | 1d | 2026-08-18 A | 2026-08-19 A | 191 | 100% |  | 2026-02-25 | 2026-02-26 | 1d |  | feature/rpg-api | Backend/Characters | feature/characters-list |
| 193 | 3.1.6.3 | Endpoint: POST /api/characters | 1d | 2026-08-18 A | 2026-08-19 A | 192 | 100% |  | 2026-02-26 | 2026-02-27 | 1d |  |  | Backend/Characters | feature/characters-create |
| 194 | 3.1.6.4 | Endpoint: GET /api/characters/:id | 1d | 2026-08-18 A | 2026-08-19 A | 193 | 100% |  | 2026-02-27 | 2026-02-28 | 1d |  | feature/character-manager | Backend/Characters | feature/characters-view |
| 195 | 3.1.6.5 | Endpoint: PUT /api/characters/:id | 1d | 2026-08-18 A | 2026-08-19 A | 194 | 100% |  | 2026-02-28 | 2026-03-01 | 1d |  | feature/character-manager | Backend/Characters | feature/characters-update |
| 196 | 3.1.6.6 | Endpoint: DELETE /api/characters/:id | 1d | 2026-08-18 A | 2026-08-19 A | 195 | 100% |  | 2026-03-01 | 2026-03-02 | 1d |  | feature/character-manager | Backend/Characters | feature/characters-delete |
| 197 | 3.1.6.7 | System uprawnień do postaci (Permissions) | 1d | 2026-08-18 A | 2026-08-19 A | 196 | 100% |  | 2026-03-02 | 2026-03-03 | 1d |  | feature/character-manager | Backend/Permissions | feature/characters-permissions |
| 198 | 3.1.6.8 | Endpoint: POST /api/characters/:id/permissions | 1d | 2026-08-18 A | 2026-08-19 A | 197 | 100% |  | 2026-03-03 | 2026-03-04 | 1d |  | feature/character-manager | Backend/Permissions | feature/characters-share |
| 199 | 3.1.7 | **Moduł Ekwipunku i Przedmiotów** | 67.8d | 2026-08-11 A | 2026-10-18 |  | 64% | 24.41d | 2026-03-04 | 2026-03-14 | 10d | 0d | feature/character-manager |  |  |
| 200 | 3.1.7.1 | Implementacja modelu Item | 1d | 2026-08-18 A | 2026-08-19 A | 198 | 100% |  | 2026-03-04 | 2026-03-05 | 1d |  | feature/character-manager | Backend/Models | feature/items-model |
| 201 | 3.1.7.2 | Implementacja modelu Inventory | 1d | 2026-08-18 A | 2026-08-19 A | 200 | 100% |  | 2026-03-05 | 2026-03-06 | 1d |  | feature/rpg-api | Backend/Models | feature/inventory-model |
| 202 | 3.1.7.3 | Endpoint: GET /api/characters/:id/inventory | 1d | 2026-08-18 A | 2026-08-19 A | 201 | 100% |  | 2026-03-06 | 2026-03-07 | 1d |  | feature/api-setup | Backend/Inventory | feature/inventory-list |
| 203 | 3.1.7.4 | Endpoint: POST /api/characters/:id/inventory | 1d | 2026-08-18 A | 2026-08-19 A | 202 | 100% |  | 2026-03-07 | 2026-03-08 | 1d |  | feature/character-manager | Backend/Inventory | feature/inventory-add |
| 204 | 3.1.7.5 | Endpoint: PUT /api/inventory/:id | 1d | 2026-08-18 A | 2026-08-19 A | 203 | 100% |  | 2026-03-08 | 2026-03-09 | 1d |  |  | Backend/Inventory | feature/inventory-equip |
| 205 | 3.1.7.6 | Endpoint: DELETE /api/inventory/:id | 1d | 2026-08-18 A | 2026-08-19 A | 204 | 100% |  | 2026-03-09 | 2026-03-10 | 1d |  | feature/rpg-api | Backend/Inventory | feature/inventory-remove |
| 206 | 3.1.7.7 | System handlu/wymiany (Trading) | 10d | 2026-08-11 A | 2026-10-12 | 205 | 80% | 2d | 2026-03-10 | 2026-03-11 | 1d | 0d | feature/rpg-api | Backend/Trading | feature/trading-system |
| 207 | 3.1.7.8 | Endpoint: POST /api/trade/offer | 3.2d | 2026-10-12 | 2026-10-15 | 206 |  |  | 2026-03-11 | 2026-03-12 | 1d | 0d | feature/rpg-api | Backend/Trading | feature/trading-offer |
| 208 | 3.1.7.9 | Endpoint: POST /api/trade/accept | 3.2d | 2026-10-15 | 2026-10-18 | 207 |  |  | 2026-03-12 | 2026-03-13 | 1d | 0d | feature/rpg-api | Backend/Trading | feature/trading-accept |
| 209 | 3.1.7.10 | Kosz przedmiotów (Soft Delete) | 1d | 2026-08-18 A | 2026-08-19 A | 208 | 100% |  | 2026-03-13 | 2026-03-14 | 1d |  | feature/rpg-api | Backend/Inventory | feature/inventory-trash |

Notes:
- 179: CRUD stołów w kampaniach / [Status 2026-08-26] 71% — w toku; pozostało 76 h; prognoza zakończenia 2026-10-10. Zakres częściowo obecny; pozostaje kompletacja i odbiór.
- 180: Klasa: App\Models\TableModel; relacje: belongsTo(Session), hasMany(Maps, ChatMessages) / [Status 2026-08-26] 100% — zakończone; data rzeczywista 2026-08-19. Zakres potwierdzony przez kod, migracje, trasy lub zielone testy repozytorium.
- 181: Lista wszystkich stołów użytkownika (przez kampanie) / [Status 2026-08-26] 100% — zakończone; data rzeczywista 2026-08-19. Zakres potwierdzony przez kod, migracje, trasy lub zielone testy repozytorium.
- 182: Utworzenie nowego stołu; body: {session_id, name, config_json} / [Status 2026-08-26] 100% — zakończone; data rzeczywista 2026-08-19. Zakres potwierdzony przez kod, migracje, trasy lub zielone testy repozytorium.
- 183: Szczegóły stołu; includes: mapa, tokeny, gracze online / [Status 2026-08-26] 100% — zakończone; data rzeczywista 2026-08-19. Zakres potwierdzony przez kod, migracje, trasy lub zielone testy repozytorium.
- 184: Edycja konfiguracji stołu (tylko GM); body: {background_url, grid_size} / [Status 2026-08-26] 100% — zakończone; data rzeczywista 2026-08-19. Zakres potwierdzony przez kod, migracje, trasy lub zielone testy repozytorium.
- 185: Usunięcie stołu (tylko GM) / [Status 2026-08-26] 0% — nierozpoczęte; estymacja 8 h; prognoza zakończenia 2026-10-08. Brak endpointu usuwania stołu/kampanii w kontrakcie źródłowym.
- 186: Model: InvitationModel; generowanie UUID token / [Status 2026-08-26] 100% — zakończone; data rzeczywista 2026-08-19. Zakres potwierdzony przez kod, migracje, trasy lub zielone testy repozytorium.
- 187: Utworzenie zaproszenia; body: {max_uses, expires_at}; zwraca: token / [Status 2026-08-26] 100% — zakończone; data rzeczywista 2026-08-19. Zakres potwierdzony przez kod, migracje, trasy lub zielone testy repozytorium.
- 188: Dołączenie do stołu; body: {invite_token}; dodaje user_id do table_players / [Status 2026-08-26] 100% — zakończone; data rzeczywista 2026-08-19. Zakres potwierdzony przez kod, migracje, trasy lub zielone testy repozytorium.
- 189: Template: invite_email.html; link: https://blatyrpg.pl/join/{token} / [Status 2026-08-26] 0% — nierozpoczęte; estymacja 8 h; prognoza zakończenia 2026-10-10. Brak wysyłki e-maila zaproszenia do stołu.
- 190: CRUD postaci graczy i NPC / [Status 2026-08-26] 100% — zakończone; data rzeczywista 2026-08-19. Zakres potwierdzony przez kod, migracje, trasy lub zielone testy repozytorium.
- 191: Klasa: App\Models\CharacterModel; relacje: belongsTo(User, Session), hasMany(Inventory) / [Status 2026-08-26] 100% — zakończone; data rzeczywista 2026-08-19. Zakres potwierdzony przez kod, migracje, trasy lub zielone testy repozytorium.
- 192: Lista postaci; query: ?session_id=X, ?user_id=Y / [Status 2026-08-26] 100% — zakończone; data rzeczywista 2026-08-19. Zakres potwierdzony przez kod, migracje, trasy lub zielone testy repozytorium.
- 193: Utworzenie postaci; body: {name, race, class, stats_json} / [Status 2026-08-26] 100% — zakończone; data rzeczywista 2026-08-19. Zakres potwierdzony przez kod, migracje, trasy lub zielone testy repozytorium.
- 194: Szczegóły postaci (karta); includes: ekwipunek, statystyki / [Status 2026-08-26] 100% — zakończone; data rzeczywista 2026-08-19. Zakres potwierdzony przez kod, migracje, trasy lub zielone testy repozytorium.
- 195: Edycja postaci; sprawdzenie uprawnień (właściciel lub GM) / [Status 2026-08-26] 100% — zakończone; data rzeczywista 2026-08-19. Zakres potwierdzony przez kod, migracje, trasy lub zielone testy repozytorium.
- 196: Usunięcie postaci (właściciel lub GM) / [Status 2026-08-26] 100% — zakończone; data rzeczywista 2026-08-19. Zakres potwierdzony przez kod, migracje, trasy lub zielone testy repozytorium.
- 197: Tabela: character_permissions; kolumny: character_id, user_id, permission_level (view/edit) / [Status 2026-08-26] 100% — zakończone; data rzeczywista 2026-08-19. Zakres potwierdzony przez kod, migracje, trasy lub zielone testy repozytorium.
- 198: Nadanie uprawnień innemu graczowi (np. współdzielenie postaci) / [Status 2026-08-26] 100% — zakończone; data rzeczywista 2026-08-19. Zakres potwierdzony przez kod, migracje, trasy lub zielone testy repozytorium.
- 199: Zarządzanie ekwipunkiem postaci / [Status 2026-08-26] 64% — w toku; pozostało 122 h; prognoza zakończenia 2026-10-18. Zakres częściowo obecny; pozostaje kompletacja i odbiór.
- 200: Klasa: App\Models\ItemModel; kolumny: name, type, properties_json, value / [Status 2026-08-26] 100% — zakończone; data rzeczywista 2026-08-19. Zakres potwierdzony przez kod, migracje, trasy lub zielone testy repozytorium.
- 201: Klasa: App\Models\InventoryModel; relacje: belongsTo(Character, Item) / [Status 2026-08-26] 100% — zakończone; data rzeczywista 2026-08-19. Zakres potwierdzony przez kod, migracje, trasy lub zielone testy repozytorium.
- 202: Lista ekwipunku postaci; includes: item details / [Status 2026-08-26] 100% — zakończone; data rzeczywista 2026-08-19. Zakres potwierdzony przez kod, migracje, trasy lub zielone testy repozytorium.
- 203: Dodanie przedmiotu; body: {item_id, quantity} / [Status 2026-08-26] 100% — zakończone; data rzeczywista 2026-08-19. Zakres potwierdzony przez kod, migracje, trasy lub zielone testy repozytorium.
- 204: Aktualizacja (np. założenie przedmiotu); body: {equipped: true} / [Status 2026-08-26] 100% — zakończone; data rzeczywista 2026-08-19. Zakres potwierdzony przez kod, migracje, trasy lub zielone testy repozytorium.
- 205: Usunięcie przedmiotu z ekwipunku / [Status 2026-08-26] 100% — zakończone; data rzeczywista 2026-08-19. Zakres potwierdzony przez kod, migracje, trasy lub zielone testy repozytorium.
- 206: Tabela tymczasowa: trade_offers; mechanizm wymiany między postaciami / [Status 2026-08-26] 80% — w toku; pozostało 10 h; prognoza zakończenia 2026-10-12. Handel sklepowy działa; wymiana peer-to-peer oparta o ofertę/akceptację jest niepełna.
- 207: Utworzenie oferty wymiany; body: {target_character_id, offered_items, requested_items} / [Status 2026-08-26] 0% — nierozpoczęte; estymacja 16 h; prognoza zakończenia 2026-10-15. Brak endpointu POST /api/trade/offer w kontrakcie źródłowym.
- 208: Akceptacja oferty; transfer przedmiotów + wyliczenie waluty / [Status 2026-08-26] 0% — nierozpoczęte; estymacja 16 h; prognoza zakończenia 2026-10-18. Brak endpointu POST /api/trade/accept w kontrakcie źródłowym.
- 209: Kolumna: deleted_at w inventory; możliwość odzyskania przez 7 dni / [Status 2026-08-26] 100% — zakończone; data rzeczywista 2026-08-19. Zakres potwierdzony przez kod, migracje, trasy lub zielone testy repozytorium.

| ID | WBS | Task | Duration | Start | Finish | Predecessors | Complete | Remaining | Baseline start | Baseline finish | Baseline duration | Total slack | Repo Branch | Lokalizacja | Branch Feature |
| --- | --- | --- | --- | --- | --- | --- | --- | --- | --- | --- | --- | --- | --- | --- | --- |
| 210 | 3.1.8 | **Moduł Map i Tokenów (VTT Core)** | 70.4d | 2026-08-18 A | 2026-10-28 |  | 52% | 33.79d | 2026-03-14 | 2026-03-25 | 11d | 0d | feature/rpg-api |  |  |
| 211 | 3.1.8.1 | Implementacja modelu Map | 1d | 2026-08-18 A | 2026-08-19 A | 209 | 100% |  | 2026-03-14 | 2026-03-15 | 1d |  | feature/rpg-api | Backend/Models | feature/maps-model |
| 212 | 3.1.8.2 | Endpoint: POST /api/maps | 1d | 2026-08-18 A | 2026-08-19 A | 211 | 100% |  | 2026-03-15 | 2026-03-16 | 1d |  | feature/rpg-api | Backend/Maps | feature/maps-upload |
| 213 | 3.1.8.3 | Endpoint: GET /api/maps/:id | 1d | 2026-08-18 A | 2026-08-19 A | 212 | 100% |  | 2026-03-16 | 2026-03-17 | 1d |  | feature/rpg-api | Backend/Maps | feature/maps-view |
| 214 | 3.1.8.4 | Endpoint: PUT /api/maps/:id | 1d | 2026-08-18 A | 2026-08-19 A | 213 | 100% |  | 2026-03-17 | 2026-03-18 | 1d |  | feature/rpg-api | Backend/Maps | feature/maps-update |
| 215 | 3.1.8.5 | Endpoint: DELETE /api/maps/:id | 1d | 2026-08-18 A | 2026-08-19 A | 214 | 100% |  | 2026-03-18 | 2026-03-19 | 1d |  |  | Backend/Maps | feature/maps-delete |
| 216 | 3.1.8.6 | Implementacja modelu Token | 1d | 2026-08-23 A | 2026-08-24 A | 215 | 100% |  | 2026-03-19 | 2026-03-20 | 1d |  | feature/rpg-api | Backend/Models | feature/tokens-model |
| 217 | 3.1.8.7 | Endpoint: POST /api/tokens | 1d | 2026-08-23 A | 2026-08-24 A | 216 | 100% |  | 2026-03-20 | 2026-03-21 | 1d |  | feature/rpg-api | Backend/Tokens | feature/tokens-create |
| 218 | 3.1.8.8 | Endpoint: PUT /api/tokens/:id | 1d | 2026-08-23 A | 2026-08-24 A | 217 | 100% |  | 2026-03-21 | 2026-03-22 | 1d |  | feature/rpg-api | Backend/Tokens | feature/tokens-move |
| 219 | 3.1.8.9 | Endpoint: DELETE /api/tokens/:id | 1d | 2026-08-23 A | 2026-08-24 A | 218 | 100% |  | 2026-03-22 | 2026-03-23 | 1d |  | feature/rpg-api | Backend/Tokens | feature/tokens-delete |
| 220 | 3.1.8.10 | System Fog of War (backend state) | 8d | 2026-08-23 A | 2026-10-25 | 219 | 20% | 6.4d | 2026-03-23 | 2026-03-24 | 1d | 0d | feature/rpg-api | Backend/Maps | feature/fog-of-war-backend |
| 221 | 3.1.8.11 | Endpoint: PUT /api/maps/:id/fog | 3.2d | 2026-10-25 | 2026-10-28 | 220 |  |  | 2026-03-24 | 2026-03-25 | 1d | 0d | feature/rpg-api | Backend/Maps | feature/fog-of-war-update |
| 222 | 3.1.9 | **Moduł Czatu (Real-Time Messaging)** | 77.4d | 2026-08-18 A | 2026-11-03 |  | 57% | 33.28d | 2026-03-25 | 2026-04-08 | 9d | 0d | feature/rpg-api |  |  |
| 223 | 3.1.9.1 | Implementacja modelu ChatMessage | 1d | 2026-08-18 A | 2026-08-19 A | 221 | 100% |  | 2026-03-25 | 2026-03-26 | 1d |  | feature/rpg-api | Backend/Models | feature/chat-model |
| 224 | 3.1.9.2 | Endpoint: GET /api/tables/:id/messages | 1d | 2026-08-18 A | 2026-08-19 A | 223 | 100% |  | 2026-03-26 | 2026-03-27 | 1d |  | feature/rpg-api | Backend/Chat | feature/chat-history |
| 225 | 3.1.9.3 | Endpoint: POST /api/tables/:id/messages | 1d | 2026-08-18 A | 2026-08-19 A | 224 | 100% |  | 2026-03-27 | 2026-03-28 | 1d |  | feature/rpg-api | Backend/Chat | feature/chat-send |
| 226 | 3.1.9.4 | Implementacja serwera WebSocket (Socket.io) | 1d | 2026-08-18 A | 2026-08-19 A | 225 | 100% |  | 2026-03-28 | 2026-03-29 | 1d |  | feature/rpg-api | WebSocket | feature/websocket-server |
| 227 | 3.1.9.5 | WebSocket Event: join_table | 1d | 2026-08-18 A | 2026-08-19 A | 226 | 100% |  | 2026-03-29 | 2026-03-30 | 1d |  |  | WebSocket | feature/ws-join-room |
| 228 | 3.1.9.6 | WebSocket Event: chat_message | 1d | 2026-08-18 A | 2026-08-19 A | 227 | 100% |  | 2026-03-30 | 2026-03-31 | 1d |  | feature/rpg-api | WebSocket | feature/ws-chat-message |
| 229 | 3.1.9.7 | WebSocket Event: private_message | 4d | 2026-10-28 | 2026-11-01 | 228 |  |  | 2026-03-31 | 2026-04-01 | 1d | 0d | feature/rpg-api | WebSocket | feature/ws-private-message |
| 230 | 3.1.9.8 | Middleware WebSocket: JWT Authentication | 1d | 2026-08-18 A | 2026-08-19 A | 229 | 100% |  | 2026-04-01 | 2026-04-02 | 1d |  | feature/rpg-api | WebSocket | feature/ws-auth-middleware |
| 231 | 3.1.9.9 | Buffer wiadomości (ostatnie 500 per stół) | 4d | 2026-08-18 A | 2026-11-03 | 230 | 40% | 2.4d | 2026-04-02 | 2026-04-08 | 1d | 0d | feature/rpg-api | WebSocket | feature/ws-message-buffer |
| 232 | 3.1.10 | **Moduł Rzutów Kośćmi (Dice Roller)** | 320.67d | 2025-12-21 A | 2026-11-24 |  | 9% | 291.81d | 2026-04-08 | 2026-04-17 | 9d | 0d | feature/rpg-api |  |  |
| 233 | 3.1.10.1 | Implementacja modelu DiceRoll | 1.6d | 2026-11-03 | 2026-11-05 | 231 |  |  | 2026-04-08 | 2026-04-09 | 1d | 0d | feature/rpg-api | Backend/Models | feature/dice-model |
| 234 | 3.1.10.2 | Biblioteka parsowania formuł dice | 1d | 2025-12-21 A | 2025-12-22 A | 233 | 100% |  | 2026-04-09 | 2026-04-10 | 1d |  | feature/rpg-api | Backend/Services | feature/dice-parser |
| 235 | 3.1.10.3 | Endpoint: POST /api/dice/roll | 2.4d | 2026-11-05 | 2026-11-07 | 234 |  |  | 2026-04-10 | 2026-04-11 | 1d | 0d | feature/rpg-api | Backend/Dice | feature/dice-roll-endpoint |
| 236 | 3.1.10.4 | Endpoint: GET /api/tables/:id/rolls | 1.6d | 2026-11-07 | 2026-11-09 | 235 |  |  | 2026-04-11 | 2026-04-12 | 1d | 0d | feature/rpg-api | Backend/Dice | feature/dice-history |
| 237 | 3.1.10.5 | WebSocket Event: dice_roll | 3.2d | 2026-11-09 | 2026-11-12 | 236 |  |  | 2026-04-12 | 2026-04-13 | 1d | 0d |  | WebSocket | feature/ws-dice-roll |
| 238 | 3.1.10.6 | Implementacja rzutów zaawansowanych (przewaga/utrudnienie D&D 5e) | 2.67d | 2025-12-21 A | 2026-11-14 | 237 | 40% | 1.6d | 2026-04-13 | 2026-04-14 | 1d | 0d | feature/dice-roller | Backend/Dice | feature/dice-advantage |
| 239 | 3.1.10.7 | System makr rzutów | 6.4d | 2026-11-14 | 2026-11-20 | 238 |  |  | 2026-04-14 | 2026-04-15 | 1d | 0d | feature/dice-roller | Backend/Macros | feature/macros-create |
| 240 | 3.1.10.8 | Endpoint: GET /api/macros | 1.6d | 2026-11-20 | 2026-11-22 | 239 |  |  | 2026-04-15 | 2026-04-16 | 1d | 0d | feature/dice-roller | Backend/Macros | feature/macros-list |
| 241 | 3.1.10.9 | Endpoint: POST /api/macros/:id/execute | 2.4d | 2026-11-22 | 2026-11-24 | 240 |  |  | 2026-04-16 | 2026-04-17 | 1d | 0d | feature/dice-roller | Backend/Macros | feature/macros-execute |

Notes:
- 210: Virtual Tabletop - mapy i pionki / [Status 2026-08-26] 52% — w toku; pozostało 169 h; prognoza zakończenia 2026-10-28. Zakres częściowo obecny; pozostaje kompletacja i odbiór.
- 211: Klasa: App\Models\MapModel; relacje: belongsTo(Table), hasMany(Tokens) / [Status 2026-08-26] 100% — zakończone; data rzeczywista 2026-08-19. Zakres potwierdzony przez kod, migracje, trasy lub zielone testy repozytorium.
- 212: Upload mapy; body: {table_id, name, image_file}; integracja Cloudinary / [Status 2026-08-26] 100% — zakończone; data rzeczywista 2026-08-19. Zakres potwierdzony przez kod, migracje, trasy lub zielone testy repozytorium.
- 213: Pobranie mapy; includes: tokeny, fog_of_war data / [Status 2026-08-26] 100% — zakończone; data rzeczywista 2026-08-19. Zakres potwierdzony przez kod, migracje, trasy lub zielone testy repozytorium.
- 214: Edycja konfiguracji mapy; body: {grid_size, layers_json} / [Status 2026-08-26] 100% — zakończone; data rzeczywista 2026-08-19. Zakres potwierdzony przez kod, migracje, trasy lub zielone testy repozytorium.
- 215: Usunięcie mapy (tylko GM) / [Status 2026-08-26] 100% — zakończone; data rzeczywista 2026-08-19. Zakres potwierdzony przez kod, migracje, trasy lub zielone testy repozytorium.
- 216: Klasa: App\Models\TokenModel; kolumny: x, y, rotation, scale, visibility / [Status 2026-08-26] 100% — zakończone; data rzeczywista 2026-08-24. Zakres potwierdzony przez kod, migracje, trasy lub zielone testy repozytorium.
- 217: Utworzenie tokena; body: {map_id, character_id, x, y, icon_url} / [Status 2026-08-26] 100% — zakończone; data rzeczywista 2026-08-24. Zakres potwierdzony przez kod, migracje, trasy lub zielone testy repozytorium.
- 218: Przesunięcie tokena; body: {x, y, rotation}; walidacja GM lub właściciel / [Status 2026-08-26] 100% — zakończone; data rzeczywista 2026-08-24. Zakres potwierdzony przez kod, migracje, trasy lub zielone testy repozytorium.
- 219: Usunięcie tokena z mapy / [Status 2026-08-26] 100% — zakończone; data rzeczywista 2026-08-24. Zakres potwierdzony przez kod, migracje, trasy lub zielone testy repozytorium.
- 220: Kolumna: fog_data (JSON) w maps; struktura: {revealed_areas: [[x,y],...]} / [Status 2026-08-26] 20% — w toku; pozostało 32 h; prognoza zakończenia 2026-10-25. Istnieją ustawienia i warstwa wizualna fog, ale brak trwałej eksploracji per użytkownik.
- 221: Aktualizacja Fog of War; body: {reveal: [[x,y]], hide: [[x,y]]} / [Status 2026-08-26] 0% — nierozpoczęte; estymacja 16 h; prognoza zakończenia 2026-10-28. Brak kompletnego endpointu zapisu/odkrywania Fog of War.
- 222: Czat z historią i kanałami / [Status 2026-08-26] 57% — w toku; pozostało 166 h; prognoza zakończenia 2026-11-03. Zakres częściowo obecny; pozostaje kompletacja i odbiór.
- 223: Klasa: App\Models\ChatMessageModel; kolumny: table_id, sender_id, channel, text, timestamp / [Status 2026-08-26] 100% — zakończone; data rzeczywista 2026-08-19. Zakres potwierdzony przez kod, migracje, trasy lub zielone testy repozytorium.
- 224: Historia czatu; query: ?limit=100, ?channel=public; sortowanie: DESC timestamp / [Status 2026-08-26] 100% — zakończone; data rzeczywista 2026-08-19. Zakres potwierdzony przez kod, migracje, trasy lub zielone testy repozytorium.
- 225: Wysłanie wiadomości (backup do DB); body: {channel, text} / [Status 2026-08-26] 100% — zakończone; data rzeczywista 2026-08-19. Zakres potwierdzony przez kod, migracje, trasy lub zielone testy repozytorium.
- 226: Plik: websocket/server.js; biblioteka: socket.io v4; port: 8082 / [Status 2026-08-26] 100% — zakończone; data rzeczywista 2026-08-19. Zakres potwierdzony przez kod, migracje, trasy lub zielone testy repozytorium.
- 227: Klient dołącza do pokoju (Socket.io Room); payload: {table_id, token} / [Status 2026-08-26] 100% — zakończone; data rzeczywista 2026-08-19. Zakres potwierdzony przez kod, migracje, trasy lub zielone testy repozytorium.
- 228: Broadcast wiadomości w pokoju; payload: {channel, text, sender} / [Status 2026-08-26] 100% — zakończone; data rzeczywista 2026-08-19. Zakres potwierdzony przez kod, migracje, trasy lub zielone testy repozytorium.
- 229: Wiadomość DM do konkretnego użytkownika; payload: {recipient_id, text} / [Status 2026-08-26] 0% — nierozpoczęte; estymacja 20 h; prognoza zakończenia 2026-11-01. Brak prywatnych wiadomości WebSocket.
- 230: Weryfikacja tokenu w handshake; odrzucenie połączenia jeśli invalid / [Status 2026-08-26] 100% — zakończone; data rzeczywista 2026-08-19. Zakres potwierdzony przez kod, migracje, trasy lub zielone testy repozytorium.
- 231: Cache w Redis lub pamięci Node.js; przy dołączeniu wysłać historię / [Status 2026-08-26] 40% — w toku; pozostało 12 h; prognoza zakończenia 2026-11-03. Historia czatu jest trwała i stronicowana; brak jawnej polityki bufora 500 wiadomości.
- 232: System rzutów z historią / [Status 2026-08-26] 9% — w toku; pozostało 1459 h; prognoza zakończenia 2026-11-24. Zakres częściowo obecny; pozostaje kompletacja i odbiór.
- 233: Klasa: App\Models\DiceRollModel; kolumny: user_id, table_id, formula, result, timestamp / [Status 2026-08-26] 0% — nierozpoczęte; estymacja 8 h; prognoza zakończenia 2026-11-05. Brak backendowego modelu DiceRoll.
- 234: Parser: regex lub ANTLR; wsparcie: 3d6+5, 2d20kh1 (keep highest), d100 / [Status 2026-08-26] 100% — zakończone; data rzeczywista 2025-12-22. Zakres potwierdzony przez kod, migracje, trasy lub zielone testy repozytorium.
- 235: Rzut kośćmi; body: {formula, table_id}; zapis do DB + zwrot wyniku / [Status 2026-08-26] 0% — nierozpoczęte; estymacja 12 h; prognoza zakończenia 2026-11-07. Brak endpointu POST /api/dice/roll.
- 236: Historia rzutów stołu; query: ?limit=50; sortowanie: DESC / [Status 2026-08-26] 0% — nierozpoczęte; estymacja 8 h; prognoza zakończenia 2026-11-09. Brak endpointu historii rzutów stołu.
- 237: Broadcast rzutu w czasie rzeczywistym; payload: {formula, result, user} / [Status 2026-08-26] 0% — nierozpoczęte; estymacja 16 h; prognoza zakończenia 2026-11-12. Brak zdarzenia WebSocket dice_roll.
- 238: Formuły: 2d20kh1 (advantage), 2d20kl1 (disadvantage) / [Status 2026-08-26] 40% — w toku; pozostało 8 h; prognoza zakończenia 2026-11-14. Zakres częściowo obecny; pozostaje kompletacja i odbiór.
- 239: Model: MacroModel; endpoint: POST /api/macros; body: {name, formula, description} / [Status 2026-08-26] 0% — nierozpoczęte; estymacja 32 h; prognoza zakończenia 2026-11-20. Brak kompletnego systemu makr rzutów.
- 240: Lista makr użytkownika + publiczne makra / [Status 2026-08-26] 0% — nierozpoczęte; estymacja 8 h; prognoza zakończenia 2026-11-22. Brak endpointu GET /api/macros.
- 241: Wykonanie makra; zwraca wynik rzutu; broadcast przez WebSocket / [Status 2026-08-26] 0% — nierozpoczęte; estymacja 12 h; prognoza zakończenia 2026-11-24. Brak endpointu wykonania makra.

| ID | WBS | Task | Duration | Start | Finish | Predecessors | Complete | Remaining | Baseline start | Baseline finish | Baseline duration | Total slack | Repo Branch | Lokalizacja | Branch Feature |
| --- | --- | --- | --- | --- | --- | --- | --- | --- | --- | --- | --- | --- | --- | --- | --- |
| 242 | 3.1.11 | **Moduł Panelu Admina** | 95.2d | 2026-08-22 A | 2026-11-26 |  | 71% | 27.61d | 2026-04-17 | 2026-04-22 | 5d | 0d | feature/rpg-api |  |  |
| 243 | 3.1.11.1 | Endpoint: GET /api/admin/stats | 1d | 2026-08-22 A | 2026-08-23 A | 241 | 100% |  | 2026-04-17 | 2026-04-18 | 1d |  | feature/dice-roller | Backend/Admin | feature/admin-dashboard |
| 244 | 3.1.11.2 | Endpoint: GET /api/admin/users | 1d | 2026-08-22 A | 2026-08-23 A | 243 | 100% |  | 2026-04-18 | 2026-04-19 | 1d |  | feature/dice-roller | Backend/Admin | feature/admin-users-list |
| 245 | 3.1.11.3 | Endpoint: PUT /api/admin/users/:id | 1d | 2026-08-22 A | 2026-08-23 A | 244 | 100% |  | 2026-04-19 | 2026-04-20 | 1d |  | feature/dice-roller | Backend/Admin | feature/admin-user-edit |
| 246 | 3.1.11.4 | Endpoint: DELETE /api/admin/users/:id | 1.6d | 2026-11-24 | 2026-11-26 | 245 |  |  | 2026-04-20 | 2026-04-21 | 1d | 0d | feature/dice-roller | Backend/Admin | feature/admin-user-delete |
| 247 | 3.1.11.5 | Middleware: AdminMiddleware | 1d | 2026-08-22 A | 2026-08-23 A | 246 | 100% |  | 2026-04-21 | 2026-04-22 | 1d |  | feature/dice-roller | Backend/Middleware | feature/admin-middleware |
| 248 | 3.1.12 | **Warstwa Front-End: Struktura Aplikacji** | 1d | 2025-12-03 A | 2025-12-04 A |  | 100% |  | 2026-04-22 | 2026-04-29 | 7d |  | feature/dice-roller |  |  |
| 249 | 3.1.12.1 | Inicjalizacja projektu Vue 3 (webpack) | 1d | 2025-12-03 A | 2025-12-04 A | 247 | 100% |  | 2026-04-22 | 2026-04-23 | 1d |  | feature/dice-roller-v2 | Frontend | feature/frontend-init |
| 250 | 3.1.12.2 | Instalacja zależności: Vue Router | 1d | 2025-12-03 A | 2025-12-04 A | 249 | 100% |  | 2026-04-23 | 2026-04-24 | 1d |  |  | Frontend | feature/vue-router |
| 251 | 3.1.12.3 | Instalacja zależności: Vuex (State Management) | 1d | 2025-12-03 A | 2025-12-04 A | 250 | 100% |  | 2026-04-24 | 2026-04-25 | 1d |  | feature/rpg-api | Frontend | feature/pinia-state |
| 252 | 3.1.12.4 | Instalacja zależności: Axios (HTTP Client) | 1d | 2025-12-03 A | 2025-12-04 A | 251 | 100% |  | 2026-04-25 | 2026-04-26 | 1d |  | feature/rpg-api | Frontend | feature/axios-client |
| 253 | 3.1.12.5 | Client | 1d | 2025-12-03 A | 2025-12-04 A | 252 | 100% |  | 2026-04-26 | 2026-04-27 | 1d |  | feature/rpg-api | Frontend | feature/socketio-client |
| 254 | 3.1.12.6 | Konfiguracja Vite Proxy (dev server) | 1d | 2025-12-03 A | 2025-12-04 A | 253 | 100% |  | 2026-04-27 | 2026-04-28 | 1d |  | feature/rpg-api | Frontend | feature/vite-proxy |
| 255 | 3.1.12.7 | Struktura katalogów projektu | 1d | 2025-12-03 A | 2025-12-04 A | 254 | 100% |  | 2026-04-28 | 2026-04-29 | 1d |  | feature/rpg-api | Frontend | feature/frontend-structure |
| 256 | 3.1.13 | **Front-End: Moduł Uwierzytelniania (UI)** | 97.6d | 2026-08-22 A | 2026-11-28 |  | 68% | 31.23d | 2026-04-29 | 2026-05-05 | 6d | 0d |  |  |  |
| 257 | 3.1.13.1 | Komponent: LoginPage.vue | 1d | 2026-08-22 A | 2026-08-23 A | 255 | 100% |  | 2026-04-29 | 2026-04-30 | 1d |  | feature/frontend-config | Frontend/Views | feature/frontend-login |
| 258 | 3.1.13.2 | Komponent: RegisterPage.vue | 1d | 2026-08-22 A | 2026-08-23 A | 257 | 100% |  | 2026-04-30 | 2026-05-01 | 1d |  | feature/frontend-config | Frontend/Views | feature/frontend-register |
| 259 | 3.1.13.3 | Komponent: ResetPasswordPage.vue | 1d | 2026-08-22 A | 2026-08-23 A | 258 | 100% |  | 2026-05-01 | 2026-05-02 | 1d |  | feature/rpg-api | Frontend/Views | feature/frontend-reset-password |
| 260 | 3.1.13.4 | Store Vuex: authStore | 1d | 2026-08-22 A | 2026-08-23 A | 259 | 100% |  | 2026-05-02 | 2026-05-03 | 1d |  | feature/frontend-config | Frontend/Stores | feature/auth-store |
| 261 | 3.1.13.5 | Axios Interceptor: JWT Auto-refresh | 2.4d | 2026-11-26 | 2026-11-28 | 260 |  |  | 2026-05-03 | 2026-05-04 | 1d | 0d | feature/frontend-config | Frontend/Services | feature/axios-interceptor |
| 262 | 3.1.13.6 | Router Guard: requireAuth | 1d | 2026-08-22 A | 2026-08-23 A | 261 | 100% |  | 2026-05-04 | 2026-05-05 | 1d |  | feature/frontend-config | Frontend/Router | feature/router-guard |
| 263 | 3.1.14 | **Front-End: Dashboard i Nawigacja** | 1d | 2026-08-22 A | 2026-08-23 A |  | 100% |  | 2026-05-05 | 2026-05-12 | 7d |  | feature/frontend-config |  |  |
| 264 | 3.1.14.1 | Komponent: HomeView.vue | 1d | 2026-08-22 A | 2026-08-23 A | 262 | 100% |  | 2026-05-06 | 2026-05-07 | 1d |  | feature/frontend-config | Frontend/Layouts | feature/home-page |
| 265 | 3.1.14.1 | Komponent: AppLayout.vue | 1d | 2026-08-22 A | 2026-08-23 A | 262 | 100% |  | 2026-05-05 | 2026-05-06 | 1d |  | feature/frontend-config | Frontend/Layouts | feature/app-layout |
| 266 | 3.1.14.2 | Komponent: Navbar.vue | 1d | 2026-08-22 A | 2026-08-23 A | 265, 264 | 100% |  | 2026-05-07 | 2026-05-08 | 1d |  |  | Frontend/Components | feature/navbar |
| 267 | 3.1.14.3 | Komponent: Sidebar.vue | 1d | 2026-08-22 A | 2026-08-23 A | 266 | 100% |  | 2026-05-08 | 2026-05-09 | 1d |  | feature/rpg-api | Frontend/Components | feature/sidebar |
| 268 | 3.1.14.4 | Strona: DashboardPage.vue | 1d | 2026-08-22 A | 2026-08-23 A | 267 | 100% |  | 2026-05-09 | 2026-05-10 | 1d |  | feature/rpg-api | Frontend/Views | feature/dashboard-page |
| 269 | 3.1.14.5 | Strona 404 | 1d | 2026-08-22 A | 2026-08-23 A | 268 | 100% |  | 2026-05-10 | 2026-05-11 | 1d |  | feature/rpg-api | Frontend/Views | feature/404-page |
| 270 | 3.1.14.6 | Strona 403 | 1d | 2026-08-22 A | 2026-08-23 A | 269 | 100% |  | 2026-05-11 | 2026-05-12 | 1d |  | feature/auth-jwt | Frontend/Views | feature/403-page |

Notes:
- 242: Zarządzanie systemem / [Status 2026-08-26] 71% — w toku; pozostało 138 h; prognoza zakończenia 2026-11-26. Zakres częściowo obecny; pozostaje kompletacja i odbiór.
- 243: Dashboard: liczba użytkowników, aktywne stoły, rzuty ostatnie 24h / [Status 2026-08-26] 100% — zakończone; data rzeczywista 2026-08-23. Zakres potwierdzony przez kod, migracje, trasy lub zielone testy repozytorium.
- 244: Lista wszystkich użytkowników; query: ?role=admin, ?banned=true / [Status 2026-08-26] 100% — zakończone; data rzeczywista 2026-08-23. Zakres potwierdzony przez kod, migracje, trasy lub zielone testy repozytorium.
- 245: Edycja roli lub ban użytkownika; body: {role, is_banned} / [Status 2026-08-26] 100% — zakończone; data rzeczywista 2026-08-23. Zakres potwierdzony przez kod, migracje, trasy lub zielone testy repozytorium.
- 246: Usunięcie konta użytkownika (hard delete) / [Status 2026-08-26] 0% — nierozpoczęte; estymacja 8 h; prognoza zakończenia 2026-11-26. Brak endpointu usuwania użytkownika w panelu admina.
- 247: Sprawdzenie: user.role === 'admin'; dostęp tylko dla adminów / [Status 2026-08-26] 100% — zakończone; data rzeczywista 2026-08-23. Zakres potwierdzony przez kod, migracje, trasy lub zielone testy repozytorium.
- 248: Setup Vue 3 + Router + State Management / [Status 2026-08-26] 100% — zakończone; data rzeczywista 2025-12-04. Zakres potwierdzony przez kod, migracje, trasy lub zielone testy repozytorium.
- 249: Komenda: npm create vite@latest frontend -- --template vue; TypeScript opcjonalnie / [Status 2026-08-26] 100% — zakończone; data rzeczywista 2025-12-04. Zakres potwierdzony przez kod, migracje, trasy lub zielone testy repozytorium.
- 250: Biblioteka: vue-router@4; konfiguracja routingu w /src/router/index.js / [Status 2026-08-26] 100% — zakończone; data rzeczywista 2025-12-04. Zakres potwierdzony przez kod, migracje, trasy lub zielone testy repozytorium.
- 251: Biblioteka: vuex; store: /src/stores/auth.js, user.js, game.js / [Status 2026-08-26] 100% — zakończone; data rzeczywista 2025-12-04. Zakres potwierdzony przez kod, migracje, trasy lub zielone testy repozytorium.
- 252: Biblioteka: axios; konfiguracja interceptorów JWT w /src/api/axios.js / [Status 2026-08-26] 100% — zakończone; data rzeczywista 2025-12-04. Zakres potwierdzony przez kod, migracje, trasy lub zielone testy repozytorium.
- 253: Biblioteka: socket.io-client; moduł: /src/services/websocket.js / [Status 2026-08-26] 100% — zakończone; data rzeczywista 2025-12-04. Zakres potwierdzony przez kod, migracje, trasy lub zielone testy repozytorium.
- 254: Plik: vite.config.js; proxy: /api → http://localhost:8000, /socket.io → http://localhost:8082 / [Status 2026-08-26] 100% — zakończone; data rzeczywista 2025-12-04. Zakres potwierdzony przez kod, migracje, trasy lub zielone testy repozytorium.
- 255: src/components, /views, /layouts, /composables, /utils / [Status 2026-08-26] 100% — zakończone; data rzeczywista 2025-12-04. Zakres potwierdzony przez kod, migracje, trasy lub zielone testy repozytorium.
- 256: Strony logowania i rejestracji / [Status 2026-08-26] 68% — w toku; pozostało 156 h; prognoza zakończenia 2026-11-28. Zakres częściowo obecny; pozostaje kompletacja i odbiór.
- 257: Formularz: email, password; wywołanie: authStore.login(); redirect: /dashboard / [Status 2026-08-26] 100% — zakończone; data rzeczywista 2026-08-23. Zakres potwierdzony przez kod, migracje, trasy lub zielone testy repozytorium.
- 258: Formularz: email, password, confirm_password; walidacja po stronie klienta / [Status 2026-08-26] 100% — zakończone; data rzeczywista 2026-08-23. Zakres potwierdzony przez kod, migracje, trasy lub zielone testy repozytorium.
- 259: Formularz: email; endpoint: /api/auth/reset-password / [Status 2026-08-26] 100% — zakończone; data rzeczywista 2026-08-23. Zakres potwierdzony przez kod, migracje, trasy lub zielone testy repozytorium.
- 260: State: user, token, isAuthenticated; actions: login, logout, refresh, checkAuth / [Status 2026-08-26] 100% — zakończone; data rzeczywista 2026-08-23. Zakres potwierdzony przez kod, migracje, trasy lub zielone testy repozytorium.
- 261: Przechwytywanie 401; automatyczne wywołanie /api/auth/refresh; retry request / [Status 2026-08-26] 0% — nierozpoczęte; estymacja 12 h; prognoza zakończenia 2026-11-28. Brak mechanizmu JWT auto-refresh; sesje są obsługiwane innym kontraktem.
- 262: Navigation guard: beforeEach; przekierowanie na /login jeśli brak tokenu / [Status 2026-08-26] 100% — zakończone; data rzeczywista 2026-08-23. Zakres potwierdzony przez kod, migracje, trasy lub zielone testy repozytorium.
- 263: Główny layout aplikacji / [Status 2026-08-26] 100% — zakończone; data rzeczywista 2026-08-23. Zakres potwierdzony przez kod, migracje, trasy lub zielone testy repozytorium.
- 264: Strona domowa aplikacji. Stash WIP(home): HomeView.vue scaffold [move to feature/home-page] / [Status 2026-08-26] 100% — zakończone; data rzeczywista 2026-08-23. Zakres potwierdzony przez kod, migracje, trasy lub zielone testy repozytorium.
- 265: Layout: navbar + sidebar + <router-view>; responsive / [Status 2026-08-26] 100% — zakończone; data rzeczywista 2026-08-23. Zakres potwierdzony przez kod, migracje, trasy lub zielone testy repozytorium.
- 266: Logo, menu użytkownika, notyfikacje, wylogowanie / [Status 2026-08-26] 100% — zakończone; data rzeczywista 2026-08-23. Zakres potwierdzony przez kod, migracje, trasy lub zielone testy repozytorium.
- 267: Menu: Dashboard, Kampanie, Moje Postacie, Ustawienia / [Status 2026-08-26] 100% — zakończone; data rzeczywista 2026-08-23. Zakres potwierdzony przez kod, migracje, trasy lub zielone testy repozytorium.
- 268: Widok główny: lista aktywnych kampanii, ostatnie rzuty, statystyki / [Status 2026-08-26] 100% — zakończone; data rzeczywista 2026-08-23. Zakres potwierdzony przez kod, migracje, trasy lub zielone testy repozytorium.
- 269: Komponent obsługi błędu 404; link powrotu do dashboard / [Status 2026-08-26] 100% — zakończone; data rzeczywista 2026-08-23. Zakres potwierdzony przez kod, migracje, trasy lub zielone testy repozytorium.
- 270: Komponent obsługi braku uprawnień / [Status 2026-08-26] 100% — zakończone; data rzeczywista 2026-08-23. Zakres potwierdzony przez kod, migracje, trasy lub zielone testy repozytorium.

| ID | WBS | Task | Duration | Start | Finish | Predecessors | Complete | Remaining | Baseline start | Baseline finish | Baseline duration | Total slack | Repo Branch | Lokalizacja | Branch Feature |
| --- | --- | --- | --- | --- | --- | --- | --- | --- | --- | --- | --- | --- | --- | --- | --- |
| 271 | 3.1.15 | **Front-End: Moduł Kampanii** | 1d | 2026-08-22 A | 2026-08-23 A |  | 100% |  | 2026-05-12 | 2026-05-17 | 5d |  | feature/frontend-config |  |  |
| 272 | 3.1.15.1 | Strona: CampaignsListPage.vue | 1d | 2026-08-22 A | 2026-08-23 A | 270 | 100% |  | 2026-05-12 | 2026-05-13 | 1d |  | feature/rpg-api | Frontend/Views | feature/campaigns-list-page |
| 273 | 3.1.15.2 | Komponent: CampaignCard.vue | 1d | 2026-08-22 A | 2026-08-23 A | 272 | 100% |  | 2026-05-13 | 2026-05-14 | 1d |  |  | Frontend/Components | feature/campaign-card |
| 274 | 3.1.15.3 | Strona: CampaignCreatePage.vue | 1d | 2026-08-22 A | 2026-08-23 A | 273 | 100% |  | 2026-05-14 | 2026-05-15 | 1d |  | feature/rpg-api | Frontend/Views | feature/campaign-create-page |
| 275 | 3.1.15.4 | Strona: CampaignDetailsPage.vue | 1d | 2026-08-22 A | 2026-08-23 A | 274 | 100% |  | 2026-05-15 | 2026-05-16 | 1d |  | feature/rpg-api | Frontend/Views | feature/campaign-details-page |
| 276 | 3.1.15.5 | Store Vuex: campaignsStore | 1d | 2026-08-22 A | 2026-08-23 A | 275 | 100% |  | 2026-05-16 | 2026-05-17 | 1d |  | feature/rpg-api | Frontend/Stores | feature/campaigns-store |
| 277 | 3.1.16 | **Front-End: Moduł Wirtualnego Stołu (VTT UI)** | 116d | 2026-08-13 A | 2026-12-07 |  | 75% | 29d | 2026-05-17 | 2026-05-31 | 14d | 0d | feature/rpg-api |  |  |
| 278 | 3.1.16.1 | Strona: TableRoomPage.vue | 1d | 2026-08-22 A | 2026-08-23 A | 276 | 100% |  | 2026-05-17 | 2026-05-18 | 1d |  | feature/rpg-api | Frontend/Views | feature/table-room-page |
| 279 | 3.1.16.2 | Komponent: MapCanvas.vue | 1d | 2026-08-23 A | 2026-08-24 A | 278 | 100% |  | 2026-05-18 | 2026-05-19 | 1d |  | feature/rpg-api | Frontend/Components | feature/map-canvas |
| 280 | 3.1.16.3 | Komponent: TokenLayer.vue | 1d | 2026-08-23 A | 2026-08-24 A | 279 | 100% |  | 2026-05-19 | 2026-05-20 | 1d |  |  | Frontend/Components | feature/token-layer |
| 281 | 3.1.16.4 | Komponent: GridLayer.vue | 1d | 2026-08-23 A | 2026-08-24 A | 280 | 100% |  | 2026-05-20 | 2026-05-21 | 1d |  | feature/rpg-api | Frontend/Components | feature/grid-layer |
| 282 | 3.1.16.5 | Komponent: FogOfWarLayer.vue | 7.11d | 2026-08-26 A | 2026-12-04 | 281 | 10% | 6.4d | 2026-05-21 | 2026-05-22 | 1d | 0d | feature/rpg-api | Frontend/Components | feature/fog-layer |
| 283 | 3.1.16.6 | Komponent: DrawingToolbar.vue | 1d | 2026-08-25 A | 2026-08-26 A | 282 | 100% |  | 2026-05-22 | 2026-05-23 | 1d |  | feature/rpg-api | Frontend/Components | feature/drawing-toolbar |
| 284 | 3.1.16.7 | Komponent: Sidebar.vue (w grze) | 1d | 2026-08-25 A | 2026-08-26 A | 283 | 100% |  | 2026-05-23 | 2026-05-24 | 1d |  | feature/rpg-api | Frontend/Components | feature/game-sidebar |
| 285 | 3.1.16.8 | Komponent: ChatPanel.vue | 1d | 2026-08-25 A | 2026-08-26 A | 284 | 100% |  | 2026-05-24 | 2026-05-25 | 1d |  | feature/rpg-api | Frontend/Components | feature/chat-panel |
| 286 | 3.1.16.9 | Komponent: DiceRollerWidget.vue | 1d | 2026-08-25 A | 2026-08-26 A | 285 | 100% |  | 2026-05-25 | 2026-05-26 | 1d |  |  | Frontend/Components | feature/dice-widget |
| 287 | 3.1.16.10 | Komponent: CharacterSheetModal.vue | 1d | 2026-08-25 A | 2026-08-26 A | 286 | 100% |  | 2026-05-26 | 2026-05-27 | 1d |  | feature/rpg-api | Frontend/Components | feature/character-sheet-modal |
| 288 | 3.1.16.11 | Komponent: InventoryPanel.vue | 1d | 2026-08-25 A | 2026-08-26 A | 287 | 100% |  | 2026-05-27 | 2026-05-28 | 1d |  | feature/rpg-api | Frontend/Components | feature/inventory-panel |
| 289 | 3.1.16.12 | Komponent: InitiativeTracker.vue | 16d | 2026-08-13 A | 2026-12-07 | 288 | 85% | 2.4d | 2026-05-28 | 2026-05-29 | 1d | 0d | feature/rpg-api | Frontend/Components | feature/initiative-tracker |
| 290 | 3.1.16.13 | Store Vuex: gameStore | 1d | 2026-08-25 A | 2026-08-26 A | 289 | 100% |  | 2026-05-29 | 2026-05-30 | 1d |  | feature/rpg-api | Frontend/Stores | feature/game-store |
| 291 | 3.1.16.14 | WebSocket Service: Integration | 1d | 2026-08-25 A | 2026-08-26 A | 290 | 100% |  | 2026-05-30 | 2026-05-31 | 1d |  | feature/rpg-api | Frontend/Services | feature/ws-integration |
| 292 | 3.1.17 | **Front-End: Moduł Profilu** | 108.8d | 2026-08-22 A | 2026-12-09 |  | 61% | 42.43d | 2026-05-31 | 2026-06-04 | 4d | 0d | feature/rpg-api |  |  |
| 293 | 3.1.17.1 | Strona: ProfilePage.vue | 1d | 2026-08-22 A | 2026-08-23 A | 291 | 100% |  | 2026-05-31 | 2026-06-01 | 1d |  | feature/rpg-api | Frontend/Views | feature/profile-page |
| 294 | 3.1.17.2 | Komponent: AvatarUpload.vue | 3.2d | 2026-08-23 A | 2026-12-09 | 293 | 25% | 2.4d | 2026-06-01 | 2026-06-02 | 1d | 0d | feature/rpg-api | Frontend/Components | feature/avatar-upload |
| 295 | 3.1.17.3 | Strona: SettingsPage.vue | 1d | 2026-08-22 A | 2026-08-23 A | 294 | 100% |  | 2026-06-02 | 2026-06-03 | 1d |  | feature/dice-roller | Frontend/Views | feature/settings-page |
| 296 | 3.1.17.4 | Store Vuex: userStore | 1d | 2026-08-22 A | 2026-08-23 A | 295 | 100% |  | 2026-06-03 | 2026-06-04 | 1d |  | feature/character-manager | Frontend/Stores | feature/user-store |

Notes:
- 271: Zarządzanie kampaniami / [Status 2026-08-26] 100% — zakończone; data rzeczywista 2026-08-23. Zakres potwierdzony przez kod, migracje, trasy lub zielone testy repozytorium.
- 272: Lista kampanii; przyciski: Utwórz, Filtruj (aktywne/archiwalne) / [Status 2026-08-26] 100% — zakończone; data rzeczywista 2026-08-23. Zakres potwierdzony przez kod, migracje, trasy lub zielone testy repozytorium.
- 273: Karta kampanii: nazwa, GM, liczba graczy, przycisk Wejdź / [Status 2026-08-26] 100% — zakończone; data rzeczywista 2026-08-23. Zakres potwierdzony przez kod, migracje, trasy lub zielone testy repozytorium.
- 274: Formularz tworzenia kampanii: nazwa, opis, system (dropdown: WFRP/D&D 5e) / [Status 2026-08-26] 100% — zakończone; data rzeczywista 2026-08-23. Zakres potwierdzony przez kod, migracje, trasy lub zielone testy repozytorium.
- 275: Szczegóły kampanii: lista stołów, lista graczy, opcje edycji (GM only) / [Status 2026-08-26] 100% — zakończone; data rzeczywista 2026-08-23. Zakres potwierdzony przez kod, migracje, trasy lub zielone testy repozytorium.
- 276: State: campaigns, currentCampaign; actions: fetchCampaigns, createCampaign, deleteCampaign / [Status 2026-08-26] 100% — zakończone; data rzeczywista 2026-08-23. Zakres potwierdzony przez kod, migracje, trasy lub zielone testy repozytorium.
- 277: Główny interfejs gry / [Status 2026-08-26] 75% — w toku; pozostało 145 h; prognoza zakończenia 2026-12-07. Zakres częściowo obecny; pozostaje kompletacja i odbiór.
- 278: Layout gry: canvas mapy (lewo), sidebar (prawo), toolbar (góra) / [Status 2026-08-26] 100% — zakończone; data rzeczywista 2026-08-23. Zakres potwierdzony przez kod, migracje, trasy lub zielone testy repozytorium.
- 279: Canvas HTML5 lub biblioteka Konva.js/PixiJS; render mapy + tokenów + siatki / [Status 2026-08-26] 100% — zakończone; data rzeczywista 2026-08-24. Zakres potwierdzony przez kod, migracje, trasy lub zielone testy repozytorium.
- 280: Warstwa tokenów; drag & drop; synchronizacja WebSocket / [Status 2026-08-26] 100% — zakończone; data rzeczywista 2026-08-24. Zakres potwierdzony przez kod, migracje, trasy lub zielone testy repozytorium.
- 281: Warstwa siatki (grid); rozmiar: 5ft × 5ft; snap-to-grid / [Status 2026-08-26] 100% — zakończone; data rzeczywista 2026-08-24. Zakres potwierdzony przez kod, migracje, trasy lub zielone testy repozytorium.
- 282: Warstwa czarnej mgły; możliwość odkrywania przez GM (narzędzie brush) / [Status 2026-08-26] 10% — w toku; pozostało 32 h; prognoza zakończenia 2026-12-04. Warstwa fog ma jedynie ustawienia/wizualizację, bez pełnego odkrywania per użytkownik.
- 283: Toolbar narzędzi: ołówek, linia, kształty, gumka, FOW brush / [Status 2026-08-26] 100% — zakończone; data rzeczywista 2026-08-26. Zakres potwierdzony przez kod, migracje, trasy lub zielone testy repozytorium.
- 284: Zakładki: Czat, Lista walki, Sceny, Postacie, Przedmioty, Dziennik, Ustawienia / [Status 2026-08-26] 100% — zakończone; data rzeczywista 2026-08-26. Zakres potwierdzony przez kod, migracje, trasy lub zielone testy repozytorium.
- 285: Panel czatu; input wiadomości; historia; kanały (public/dm/gm) / [Status 2026-08-26] 100% — zakończone; data rzeczywista 2026-08-26. Zakres potwierdzony przez kod, migracje, trasy lub zielone testy repozytorium.
- 286: Widget rzutów: przyciski d4-d100, input formuły, lista ostatnich rzutów / [Status 2026-08-26] 100% — zakończone; data rzeczywista 2026-08-26. Zakres potwierdzony przez kod, migracje, trasy lub zielone testy repozytorium.
- 287: Modal karty postaci; wyświetlanie statystyk, ekwipunku; edycja (owner/GM) / [Status 2026-08-26] 100% — zakończone; data rzeczywista 2026-08-26. Zakres potwierdzony przez kod, migracje, trasy lub zielone testy repozytorium.
- 288: Panel ekwipunku; lista przedmiotów, drag & drop, opcja equip/unequip / [Status 2026-08-26] 100% — zakończone; data rzeczywista 2026-08-26. Zakres potwierdzony przez kod, migracje, trasy lub zielone testy repozytorium.
- 289: Lista walki (initiative order); możliwość sortowania, HP tracking / [Status 2026-08-26] 85% — w toku; pozostało 12 h; prognoza zakończenia 2026-12-07. Combat tracker działa w bieżącym drzewie; pozostaje domknięcie regresji i integracji.
- 290: State: currentTable, map, tokens, players; actions: joinTable, updateTokenPosition / [Status 2026-08-26] 100% — zakończone; data rzeczywista 2026-08-26. Zakres potwierdzony przez kod, migracje, trasy lub zielone testy repozytorium.
- 291: Połączenie przy wejściu na stół; eventy: chat_message, dice_roll, token_move, fog_update / [Status 2026-08-26] 100% — zakończone; data rzeczywista 2026-08-26. Zakres potwierdzony przez kod, migracje, trasy lub zielone testy repozytorium.
- 292: Strona profilu użytkownika / [Status 2026-08-26] 61% — w toku; pozostało 212 h; prognoza zakończenia 2026-12-09. Zakres częściowo obecny; pozostaje kompletacja i odbiór.
- 293: Widok profilu: awatar, username, bio, statystyki (liczba postaci, sesji) / [Status 2026-08-26] 100% — zakończone; data rzeczywista 2026-08-23. Zakres potwierdzony przez kod, migracje, trasy lub zielone testy repozytorium.
- 294: Upload awatara przez Cloudinary; podgląd przed wysłaniem / [Status 2026-08-26] 25% — w toku; pozostało 12 h; prognoza zakończenia 2026-12-09. Assety postaci Cloudinary istnieją, ale upload avatara profilu użytkownika jest niepełny.
- 295: Ustawienia konta: zmiana hasła, email, język, motyw (dark/light) / [Status 2026-08-26] 100% — zakończone; data rzeczywista 2026-08-23. Zakres potwierdzony przez kod, migracje, trasy lub zielone testy repozytorium.
- 296: State: profile; actions: fetchProfile, updateProfile, uploadAvatar / [Status 2026-08-26] 100% — zakończone; data rzeczywista 2026-08-23. Zakres potwierdzony przez kod, migracje, trasy lub zielone testy repozytorium.

| ID | WBS | Task | Duration | Start | Finish | Predecessors | Complete | Remaining | Baseline start | Baseline finish | Baseline duration | Total slack | Repo Branch | Lokalizacja | Branch Feature |
| --- | --- | --- | --- | --- | --- | --- | --- | --- | --- | --- | --- | --- | --- | --- | --- |
| 297 | 3.1.18 | **Lokalizacja i i18n** | 1d | 2026-01-16 A | 2026-01-17 A |  | 100% |  | 2026-06-04 | 2026-06-08 | 4d |  | feature/rpg-api |  |  |
| 298 | 3.1.18.1 | Instalacja biblioteki Vue I18n | 1d | 2026-01-16 A | 2026-01-17 A | 296 | 100% |  | 2026-06-04 | 2026-06-05 | 1d |  | feature/rpg-api | Frontend | feature/i18n-setup |
| 299 | 3.1.18.2 | pl.json | 1d | 2026-01-16 A | 2026-01-17 A | 298 | 100% |  | 2026-06-05 | 2026-06-06 | 1d |  | feature/rpg-api | Frontend/Locales | feature/i18n-translations |
| 300 | 3.1.18.3 | Endpoint: GET /api/i18n/:lang | 1d | 2026-01-16 A | 2026-01-17 A | 299 | 100% |  | 2026-06-06 | 2026-06-07 | 1d |  | feature/rpg-api | Backend/i18n | feature/i18n-endpoint |
| 301 | 3.1.18.4 | Selector języka w Navbar | 1d | 2026-01-16 A | 2026-01-17 A | 300 | 100% |  | 2026-06-07 | 2026-06-08 | 1d |  |  | Frontend/Components | feature/language-selector |
| 302 | 3.2 | **Zaawansowane funkcjonalności aplikacji** | 126.4d | 2026-08-22 A | 2026-12-27 |  | 5% | 120.08d | 2026-06-08 | 2026-06-12 | 4d | 0d | feature/rpg-api |  |  |
| 303 | 3.2.1 | **Front-End: Moduł Zaawansowany (Opcjonalny)** | 126.4d | 2026-08-22 A | 2026-12-27 |  | 5% | 120.08d | 2026-06-08 | 2026-06-12 | 4d | 0d | feature/rpg-api |  |  |
| 304 | 3.2.1.1 | (Jitsi Embed) | 8d | 2026-12-09 | 2026-12-17 | 301 |  |  | 2026-06-08 | 2026-06-09 | 1d | 0d | feature/rpg-api | Frontend/Components | feature/video-chat |
| 305 | 3.2.1.2 | Strona: MacrosPage.vue | 4.8d | 2026-12-17 | 2026-12-22 | 304 |  |  | 2026-06-09 | 2026-06-10 | 1d | 0d | feature/rpg-api | Frontend/Views | feature/macros-page |
| 306 | 3.2.1.3 | Komponent: MacroEditor.vue | 4.8d | 2026-12-22 | 2026-12-27 | 305 |  |  | 2026-06-10 | 2026-06-11 | 1d | 0d |  | Frontend/Components | feature/macro-editor |
| 307 | 3.2.1.4 | Strona: AdminPanel.vue | 1d | 2026-08-22 A | 2026-08-23 A | 306 | 100% |  | 2026-06-11 | 2026-06-12 | 1d |  | feature/localization | Frontend/Views | feature/admin-panel |
| 308 | 3.3 | Etap testów i wdrożenia | 1.6d | 2026-12-27 | 2026-12-28 | 307 |  |  | 2026-06-12 | 2026-06-13 | 1d | 0d | feature/localization |  |  |
| 309 | 3.4 | **Testy Jednostkowe Backend** | 129d | 2026-08-25 A | 2027-01-01 |  | 56% | 56.76d | 2026-06-13 | 2026-06-20 | 7d | 0d | feature/localization |  |  |
| 310 | 3.4.1 | Setup PHPUnit w projekcie | 1d | 2026-08-25 A | 2026-08-26 A | 308 | 100% |  | 2026-06-13 | 2026-06-14 | 1d |  | feature/localization | Backend/Tests | feature/phpunit-setup |
| 311 | 3.4.2 | Testy: AuthController | 1d | 2026-08-25 A | 2026-08-26 A | 310 | 100% |  | 2026-06-14 | 2026-06-15 | 1d |  | feature/localization | Backend/Tests | feature/tests-auth |
| 312 | 3.4.3 | Testy: CampaignsController | 1d | 2026-08-25 A | 2026-08-26 A | 311 | 100% |  | 2026-06-15 | 2026-06-16 | 1d |  | feature/rpg-catalog | Backend/Tests | feature/tests-campaigns |
| 313 | 3.4.4 | Testy: TablesController | 1d | 2026-08-25 A | 2026-08-26 A | 312 | 100% |  | 2026-06-16 | 2026-06-17 | 1d |  | feature/rpg-api | Backend/Tests | feature/tests-tables |
| 314 | 3.4.5 | Testy: CharactersController | 1d | 2026-08-25 A | 2026-08-26 A | 313 | 100% |  | 2026-06-17 | 2026-06-18 | 1d |  | feature/rpg-api | Backend/Tests | feature/tests-characters |
| 315 | 3.4.6 | Testy: DiceRoller Service | 2.4d | 2026-12-29 | 2026-12-31 | 314 |  |  | 2026-06-18 | 2026-06-19 | 1d | 0d | feature/rpg-api-v2 | Backend/Tests | feature/tests-dice |
| 316 | 3.4.7 | Raport coverage PHPUnit | 1.6d | 2026-12-31 | 2027-01-01 | 315 |  |  | 2026-06-19 | 2026-06-20 | 1d | 0d | feature/rpg-catalog | Backend/Tests | feature/tests-coverage |
| 317 | 3.5 | **Testy Jednostkowe Frontend** | 1d | 2026-08-25 A | 2026-08-26 A |  | 100% |  | 2026-06-20 | 2026-06-24 | 4d |  | feature/rpg-api-v3 |  |  |
| 318 | 3.5.1 | Setup Vitest w projekcie | 1d | 2026-08-25 A | 2026-08-26 A | 316 | 100% |  | 2026-06-20 | 2026-06-21 | 1d |  | feature/rpg-coc7ed-db | Frontend/Tests | feature/vitest-setup |
| 319 | 3.5.2 | Testy: authStore | 1d | 2026-08-25 A | 2026-08-26 A | 318 | 100% |  | 2026-06-21 | 2026-06-22 | 1d |  | feature/character-module-v2 | Frontend/Tests | feature/tests-auth-store |
| 320 | 3.5.3 | Testy: componenty Vue (przykładowe) | 1d | 2026-08-25 A | 2026-08-26 A | 319 | 100% |  | 2026-06-22 | 2026-06-23 | 1d |  | feature/character-module-v2 | Frontend/Tests | feature/tests-components |
| 321 | 3.5.4 | Testy: WebSocket Service | 1d | 2026-08-25 A | 2026-08-26 A | 320 | 100% |  | 2026-06-23 | 2026-06-24 | 1d |  | feature/character-module-v2 | Frontend/Tests | feature/tests-websocket |

Notes:
- 297: Wsparcie wielojęzyczne / [Status 2026-08-26] 100% — zakończone; data rzeczywista 2026-01-17. Zakres potwierdzony przez kod, migracje, trasy lub zielone testy repozytorium.
- 298: Biblioteka: vue-i18n@9; konfiguracja w /src/i18n/index.js / [Status 2026-08-26] 100% — zakończone; data rzeczywista 2026-01-17. Zakres potwierdzony przez kod, migracje, trasy lub zielone testy repozytorium.
- 299: Struktura: /src/locales/pl.json; klucze: common, auth, game, errors / [Status 2026-08-26] 100% — zakończone; data rzeczywista 2026-01-17. Zakres potwierdzony przez kod, migracje, trasy lub zielone testy repozytorium.
- 300: Dynamiczne pobieranie tłumaczeń z backendu (opcjonalnie) / [Status 2026-08-26] 100% — zakończone; data rzeczywista 2026-01-17. Zakres potwierdzony przez kod, migracje, trasy lub zielone testy repozytorium.
- 301: Dropdown: Zmiana języka; zapis w localStorage; reload tłumaczeń / [Status 2026-08-26] 100% — zakończone; data rzeczywista 2026-01-17. Zakres potwierdzony przez kod, migracje, trasy lub zielone testy repozytorium.
- 302: [Status 2026-08-26] 5% — w toku; pozostało 600 h; prognoza zakończenia 2026-12-27. Zakres częściowo obecny; pozostaje kompletacja i odbiór.
- 303: Funkcje Premium / [Status 2026-08-26] 5% — w toku; pozostało 600 h; prognoza zakończenia 2026-12-27. Zakres częściowo obecny; pozostaje kompletacja i odbiór.
- 304: Iframe Jitsi Meet; integracja z table_id; przycisk Toggle Video / [Status 2026-08-26] 0% — nierozpoczęte; estymacja 40 h; prognoza zakończenia 2026-12-17. Brak integracji Jitsi.
- 305: Lista makr użytkownika; formularz tworzenia; przycisk Execute / [Status 2026-08-26] 0% — nierozpoczęte; estymacja 24 h; prognoza zakończenia 2026-12-22. Brak strony zarządzania makrami.
- 306: Modal edycji makra; live preview wyniku rzutu / [Status 2026-08-26] 0% — nierozpoczęte; estymacja 24 h; prognoza zakończenia 2026-12-27. Brak edytora makr.
- 307: Dashboard admina; lista użytkowników; statystyki systemu / [Status 2026-08-26] 100% — zakończone; data rzeczywista 2026-08-23. Zakres potwierdzony przez kod, migracje, trasy lub zielone testy repozytorium.
- 308: [Status 2026-08-26] 0% — nierozpoczęte; estymacja 8 h; prognoza zakończenia 2026-12-28. Brak kompletnego artefaktu lub dowodu odbioru w repozytorium.
- 309: Code coverage > 70% / [Status 2026-08-26] 56% — w toku; pozostało 284 h; prognoza zakończenia 2027-01-01. Zakres częściowo obecny; pozostaje kompletacja i odbiór.
- 310: Plik: phpunit.xml; katalog: backend/tests/; konfiguracja DB testowej / [Status 2026-08-26] 100% — zakończone; data rzeczywista 2026-08-26. Zakres potwierdzony przez kod, migracje, trasy lub zielone testy repozytorium.
- 311: Test cases: register, login, refresh, logout, invalid credentials / [Status 2026-08-26] 100% — zakończone; data rzeczywista 2026-08-26. Zakres potwierdzony przez kod, migracje, trasy lub zielone testy repozytorium.
- 312: Test cases: create, update, delete, ownership validation / [Status 2026-08-26] 100% — zakończone; data rzeczywista 2026-08-26. Zakres potwierdzony przez kod, migracje, trasy lub zielone testy repozytorium.
- 313: Test cases: CRUD, invitations, permissions / [Status 2026-08-26] 100% — zakończone; data rzeczywista 2026-08-26. Zakres potwierdzony przez kod, migracje, trasy lub zielone testy repozytorium.
- 314: Test cases: create, edit, permissions, delete / [Status 2026-08-26] 100% — zakończone; data rzeczywista 2026-08-26. Zakres potwierdzony przez kod, migracje, trasy lub zielone testy repozytorium.
- 315: Test cases: parsowanie formuł, rzuty z modyfikatorami, edge cases / [Status 2026-08-26] 0% — nierozpoczęte; estymacja 12 h; prognoza zakończenia 2026-12-31. Brak dedykowanych testów backendowego DiceRoller Service.
- 316: Generowanie HTML report; upload do GitHub Actions artifacts / [Status 2026-08-26] 0% — nierozpoczęte; estymacja 8 h; prognoza zakończenia 2027-01-01. PHPUnit zgłasza brak sterownika coverage; raport nie został wytworzony.
- 317: Vitest + Vue Test Utils / [Status 2026-08-26] 100% — zakończone; data rzeczywista 2026-08-26. Zakres potwierdzony przez kod, migracje, trasy lub zielone testy repozytorium.
- 318: Plik: vitest.config.js; katalog: frontend/tests/unit / [Status 2026-08-26] 100% — zakończone; data rzeczywista 2026-08-26. Zakres potwierdzony przez kod, migracje, trasy lub zielone testy repozytorium.
- 319: Test cases: login action, token refresh, logout / [Status 2026-08-26] 100% — zakończone; data rzeczywista 2026-08-26. Zakres potwierdzony przez kod, migracje, trasy lub zielone testy repozytorium.
- 320: Test: LoginPage.vue - submit form, validation errors / [Status 2026-08-26] 100% — zakończone; data rzeczywista 2026-08-26. Zakres potwierdzony przez kod, migracje, trasy lub zielone testy repozytorium.
- 321: Mock Socket.io; test: join room, handle events / [Status 2026-08-26] 100% — zakończone; data rzeczywista 2026-08-26. Zakres potwierdzony przez kod, migracje, trasy lub zielone testy repozytorium.

| ID | WBS | Task | Duration | Start | Finish | Predecessors | Complete | Remaining | Baseline start | Baseline finish | Baseline duration | Total slack | Repo Branch | Lokalizacja | Branch Feature |
| --- | --- | --- | --- | --- | --- | --- | --- | --- | --- | --- | --- | --- | --- | --- | --- |
| 322 | 3.6 | **Testy E2E (End-to-End)** | 16d | 2027-01-02 | 2027-01-17 |  |  |  | 2026-06-24 | 2026-06-29 | 5d | 0d | feature/character-module-v2 |  |  |
| 323 | 3.6.1 | Setup Cypress w projekcie | 1.6d | 2027-01-02 | 2027-01-03 | 321 |  |  | 2026-06-24 | 2026-06-25 | 1d | 0d | feature/character-module-v2 | Frontend/Tests | feature/cypress-setup |
| 324 | 3.6.2 | Test E2E: User Registration Flow | 3.2d | 2027-01-03 | 2027-01-06 | 323 |  |  | 2026-06-25 | 2026-06-26 | 1d | 0d | feature/professions-option-b | Frontend/Tests | feature/e2e-registration |
| 325 | 3.6.3 | Test E2E: Login → Create Campaign → Join Table | 4.8d | 2027-01-06 | 2027-01-11 | 324 |  |  | 2026-06-26 | 2026-06-27 | 1d | 0d | feature/professions-option-b | Frontend/Tests | feature/e2e-game-flow |
| 326 | 3.6.4 | Test E2E: Dice Roll w grze | 3.2d | 2027-01-11 | 2027-01-14 | 325 |  |  | 2026-06-27 | 2026-06-28 | 1d | 0d |  | Frontend/Tests | feature/e2e-dice-roll |
| 327 | 3.6.5 | Test E2E: Chat Real-Time | 3.2d | 2027-01-14 | 2027-01-17 | 326 |  |  | 2026-06-28 | 2026-06-29 | 1d | 0d |  | Frontend/Tests | feature/e2e-chat |
| 328 | 3.7 | **Testy Wydajnościowe** | 12d | 2027-01-18 | 2027-01-29 |  |  |  | 2026-06-29 | 2026-07-03 | 4d | 0d | feature/rpg-api |  |  |
| 329 | 3.7.1 | Setup narzędzia k6 lub Apache JMeter | 1.6d | 2027-01-18 | 2027-01-19 | 327 |  |  | 2026-06-29 | 2026-06-30 | 1d | 0d | feature/dice-roller | DevOps/Tests | feature/load-testing-setup |
| 330 | 3.7.2 | Test: 50 równoczesnych połączeń WebSocket | 4.8d | 2027-01-19 | 2027-01-24 | 329 |  |  | 2026-06-30 | 2026-07-01 | 1d | 0d | feature/rpg-api | DevOps/Tests | feature/load-test-websocket |
| 331 | 3.7.3 | Test: API Throughput (requests/sec) | 3.2d | 2027-01-24 | 2027-01-27 | 330 |  |  | 2026-07-01 | 2026-07-02 | 1d | 0d | feature/rpg-api | DevOps/Tests | feature/load-test-api |
| 332 | 3.7.4 | Analiza wyników i optymalizacja | 2.4d | 2027-01-27 | 2027-01-29 | 331 |  |  | 2026-07-02 | 2026-07-03 | 1d | 0d |  | Backend | feature/performance-optimization |
| 333 | 3.8 | **Optymalizacja i Refactoring** | 180d | 2026-08-20 A | 2027-02-16 |  | 59% | 73.8d | 2026-07-03 | 2026-07-09 | 6d | 0d |  |  |  |
| 334 | 3.8.1 | Code Review: Backend | 10d | 2026-08-20 A | 2027-02-02 | 332 | 60% | 4d | 2026-07-03 | 2026-07-04 | 1d | 0d | feature/rpg-api | Backend | feature/code-review-backend |
| 335 | 3.8.2 | Code Review: Frontend | 10d | 2026-08-20 A | 2027-02-06 | 334 | 60% | 4d | 2026-07-04 | 2026-07-05 | 1d | 0d | feature/rpg-api | Frontend | feature/code-review-frontend |
| 336 | 3.8.3 | Refactoring: usunięcie dead code | 8d | 2026-08-23 A | 2027-02-11 | 335 | 40% | 4.8d | 2026-07-05 | 2026-07-06 | 1d | 0d | feature/rpg-api | All | feature/remove-dead-code |
| 337 | 3.8.4 | Optymalizacja zapytań SQL | 6.4d | 2026-08-23 A | 2027-02-14 | 336 | 50% | 3.2d | 2026-07-06 | 2026-07-07 | 1d | 0d | feature/rpg-api | Backend/Database | feature/sql-optimization |
| 338 | 3.8.5 | Lazy Loading komponentów Vue | 1d | 2026-08-25 A | 2026-08-26 A | 337 | 100% |  | 2026-07-07 | 2026-07-08 | 1d |  | feature/rpg-api | Frontend | feature/lazy-loading |
| 339 | 3.8.6 | Optymalizacja obrazów (Cloudinary) | 8d | 2026-08-20 A | 2027-02-16 | 338 | 80% | 1.6d | 2026-07-08 | 2026-07-09 | 1d | 0d | feature/rpg-api | Frontend/Backend | feature/image-optimization |
| 340 | 3.9 | **Przygotowanie Wersji Beta** | 32d | 2027-02-16 | 2027-03-20 |  |  |  | 2026-07-09 | 2026-07-15 | 6d | 0d | feature/rpg-api |  |  |
| 341 | 3.9.1 | Konfiguracja serwera staging (beta.blatyrpg.pl) | 4.8d | 2027-02-16 | 2027-02-21 | 339 |  |  | 2026-07-09 | 2026-07-10 | 1d | 0d |  | DevOps | feature/staging-server |
| 342 | 3.9.2 | Setup Nginx na produkcji | 3.2d | 2027-02-21 | 2027-02-24 | 341 |  |  | 2026-07-10 | 2026-07-11 | 1d | 0d | feature/rpg-api | DevOps | feature/nginx-production |
| 343 | 3.9.3 | Setup CI/CD: Auto-deploy do staging | 4.8d | 2027-02-24 | 2027-03-01 | 342 |  |  | 2026-07-11 | 2026-07-12 | 1d | 0d | feature/rpg-api | DevOps/CI | feature/cicd-deploy-staging |
| 344 | 3.9.4 | Migracja bazy danych na staging | 3.2d | 2027-03-01 | 2027-03-04 | 343 |  |  | 2026-07-12 | 2026-07-13 | 1d | 0d | feature/rpg-api | DevOps/Database | feature/staging-db-migration |
| 345 | 3.9.5 | Testy akceptacyjne z użytkownikami (UAT) | 8d | 2027-03-04 | 2027-03-12 | 344 |  |  | 2026-07-13 | 2026-07-14 | 1d | 0d | feature/rpg-api | QA | feature/uat-testing |
| 346 | 3.9.6 | Bug fixing na podstawie feedbacku | 8d | 2027-03-12 | 2027-03-20 | 345 |  |  | 2026-07-14 | 2026-07-15 | 1d | 0d |  | All | feature/beta-bugfixes |

Notes:
- 322: Cypress / [Status 2026-08-26] 0% — nierozpoczęte; estymacja 80 h; prognoza zakończenia 2027-01-17. Brak kompletnego artefaktu lub dowodu odbioru w repozytorium.
- 323: Instalacja: npm install cypress; katalog: frontend/cypress/e2e / [Status 2026-08-26] 0% — nierozpoczęte; estymacja 8 h; prognoza zakończenia 2027-01-03. Brak Cypress w zależnościach i konfiguracji.
- 324: Scenariusz: /register → wypełnienie formularza → redirect /dashboard / [Status 2026-08-26] 0% — nierozpoczęte; estymacja 16 h; prognoza zakończenia 2027-01-06. Brak kompletnego artefaktu lub dowodu odbioru w repozytorium.
- 325: Scenariusz: pełna ścieżka od logowania do wejścia na stół / [Status 2026-08-26] 0% — nierozpoczęte; estymacja 24 h; prognoza zakończenia 2027-01-11. Brak kompletnego artefaktu lub dowodu odbioru w repozytorium.
- 326: Scenariusz: rzut kośćmi → weryfikacja wyniku w czacie / [Status 2026-08-26] 0% — nierozpoczęte; estymacja 16 h; prognoza zakończenia 2027-01-14. Brak kompletnego artefaktu lub dowodu odbioru w repozytorium.
- 327: Scenariusz: 2 użytkowników, wysłanie wiadomości, weryfikacja synchronizacji / [Status 2026-08-26] 0% — nierozpoczęte; estymacja 16 h; prognoza zakończenia 2027-01-17. Brak kompletnego artefaktu lub dowodu odbioru w repozytorium.
- 328: Load Testing / [Status 2026-08-26] 0% — nierozpoczęte; estymacja 60 h; prognoza zakończenia 2027-01-29. Brak kompletnego artefaktu lub dowodu odbioru w repozytorium.
- 329: Instalacja k6; skrypt: load-tests/websocket-test.js / [Status 2026-08-26] 0% — nierozpoczęte; estymacja 8 h; prognoza zakończenia 2027-01-19. Brak k6/JMeter i scenariuszy obciążeniowych.
- 330: Symulacja 50 graczy w jednym stole; pomiar latencji, packet loss / [Status 2026-08-26] 0% — nierozpoczęte; estymacja 24 h; prognoza zakończenia 2027-01-24. Brak wyniku testu 50 równoczesnych połączeń WebSocket.
- 331: Endpoint: POST /api/dice/roll; pomiar: ile req/s serwer wytrzyma / [Status 2026-08-26] 0% — nierozpoczęte; estymacja 16 h; prognoza zakończenia 2027-01-27. Brak pomiaru przepustowości API.
- 332: Identyfikacja bottlenecków; optymalizacja zapytań SQL, cache Redis / [Status 2026-08-26] 0% — nierozpoczęte; estymacja 12 h; prognoza zakończenia 2027-01-29. Brak kompletnego artefaktu lub dowodu odbioru w repozytorium.
- 333: Code Quality Improvements / [Status 2026-08-26] 59% — w toku; pozostało 369 h; prognoza zakończenia 2027-02-16. Zakres częściowo obecny; pozostaje kompletacja i odbiór.
- 334: Review przez zespół; sprawdzenie: bezpieczeństwo, SQL injection, XSS / [Status 2026-08-26] 60% — w toku; pozostało 20 h; prognoza zakończenia 2027-02-02. Zakres częściowo obecny; pozostaje kompletacja i odbiór.
- 335: Review: accessibility (a11y), performance, unused code / [Status 2026-08-26] 60% — w toku; pozostało 20 h; prognoza zakończenia 2027-02-06. Zakres częściowo obecny; pozostaje kompletacja i odbiór.
- 336: Narzędzie: PHPStan (backend), ESLint (frontend); usunięcie nieużywanego kodu / [Status 2026-08-26] 40% — w toku; pozostało 24 h; prognoza zakończenia 2027-02-11. Zakres częściowo obecny; pozostaje kompletacja i odbiór.
- 337: Dodanie indeksów; użycie EXPLAIN; cache częstych zapytań w Redis / [Status 2026-08-26] 50% — w toku; pozostało 16 h; prognoza zakończenia 2027-02-14. Zakres częściowo obecny; pozostaje kompletacja i odbiór.
- 338: Dynamiczny import komponentów; redukcja bundle size / [Status 2026-08-26] 100% — zakończone; data rzeczywista 2026-08-26. Zakres potwierdzony przez kod, migracje, trasy lub zielone testy repozytorium.
- 339: Transformacje: resize, format webp, lazy loading / [Status 2026-08-26] 80% — w toku; pozostało 8 h; prognoza zakończenia 2027-02-16. Zakres częściowo obecny; pozostaje kompletacja i odbiór.
- 340: Deploy na środowisko testowe / [Status 2026-08-26] 0% — nierozpoczęte; estymacja 160 h; prognoza zakończenia 2027-03-20. Brak kompletnego artefaktu lub dowodu odbioru w repozytorium.
- 341: VPS: DigitalOcean/AWS; system: Ubuntu 22.04; Docker + Docker Compose / [Status 2026-08-26] 0% — nierozpoczęte; estymacja 24 h; prognoza zakończenia 2027-02-21. Brak dowodu skonfigurowanego środowiska staging.
- 342: Konfiguracja vhosta; SSL: Let's Encrypt (Certbot); HTTP/2 / [Status 2026-08-26] 0% — nierozpoczęte; estymacja 16 h; prognoza zakończenia 2027-02-24. Brak kompletnego artefaktu lub dowodu odbioru w repozytorium.
- 343: GitHub Actions: workflow deploy-staging.yml; trigger: push to develop branch / [Status 2026-08-26] 0% — nierozpoczęte; estymacja 24 h; prognoza zakończenia 2027-03-01. Brak kompletnego artefaktu lub dowodu odbioru w repozytorium.
- 344: Export DB lokalnej → Import na staging; uruchomienie migracji / [Status 2026-08-26] 0% — nierozpoczęte; estymacja 16 h; prognoza zakończenia 2027-03-04. Brak kompletnego artefaktu lub dowodu odbioru w repozytorium.
- 345: Zaproszenie 10 testerów beta; feedback w formularzu Google / [Status 2026-08-26] 0% — nierozpoczęte; estymacja 40 h; prognoza zakończenia 2027-03-12. Brak kompletnego artefaktu lub dowodu odbioru w repozytorium.
- 346: Priorityzacja błędów: Critical, High, Medium, Low; fix w osobnych branchach / [Status 2026-08-26] 0% — nierozpoczęte; estymacja 40 h; prognoza zakończenia 2027-03-20. Brak kompletnego artefaktu lub dowodu odbioru w repozytorium.

| ID | WBS | Task | Duration | Start | Finish | Predecessors | Baseline start | Baseline finish | Baseline duration | Total slack | Repo Branch | Lokalizacja | Branch Feature |
| --- | --- | --- | --- | --- | --- | --- | --- | --- | --- | --- | --- | --- | --- |
| 347 | 3.10 | **Wdrożenie Produkcyjne** | 32d | 2027-03-20 | 2027-04-21 |  | 2026-07-15 | 2026-07-25 | 10d | 0d | feature/rpg-api |  |  |
| 348 | 3.10.1 | Konfiguracja domeny produkcyjnej (blatyrpg.pl) | 3.2d | 2027-03-20 | 2027-03-23 | 346 | 2026-07-15 | 2026-07-16 | 1d | 0d | feature/rpg-api | DevOps | - |
| 349 | 3.10.2 | Setup serwera produkcyjnego | 4.8d | 2027-03-23 | 2027-03-28 | 348 | 2026-07-16 | 2026-07-17 | 1d | 0d | feature/rpg-api | DevOps | feature/production-server |
| 350 | 3.10.3 | Konfiguracja Backupów bazy danych | 3.2d | 2027-03-28 | 2027-03-31 | 349 | 2026-07-17 | 2026-07-18 | 1d | 0d | feature/rpg-api | DevOps/Database | feature/db-backups |
| 351 | 3.10.4 | Setup Monitoring: Sentry (error tracking) | 3.2d | 2027-03-31 | 2027-04-03 | 350 | 2026-07-18 | 2026-07-19 | 1d | 0d | feature/rpg-api | DevOps | feature/sentry-monitoring |
| 352 | 3.10.5 | Setup Monitoring: Grafana + Prometheus | 4.8d | 2027-04-04 | 2027-04-08 | 351 | 2026-07-19 | 2026-07-20 | 1d | 0d |  | DevOps | feature/grafana-prometheus |
| 353 | 3.10.6 | Setup Logowania: ELK Stack (opcjonalnie) | 3.2d | 2027-04-08 | 2027-04-11 | 352 | 2026-07-20 | 2026-07-21 | 1d | 0d | feature/rpg-api | DevOps | feature/elk-logging |
| 354 | 3.10.7 | Konfiguracja CDN (Cloudflare) | 1.6d | 2027-04-12 | 2027-04-13 | 353 | 2026-07-21 | 2026-07-22 | 1d | 0d | feature/rpg-api | DevOps | feature/cloudflare-cdn |
| 355 | 3.10.8 | Migracja danych z staging na produkcję | 3.2d | 2027-04-13 | 2027-04-16 | 354 | 2026-07-22 | 2026-07-23 | 1d | 0d | feature/rpg-api | DevOps/Database | feature/production-db-migration |
| 356 | 3.10.9 | Deploy aplikacji na produkcję | 3.2d | 2027-04-16 | 2027-04-19 | 355 | 2026-07-23 | 2026-07-24 | 1d | 0d | feature/rpg-api | DevOps/CI | feature/cicd-deploy-production |
| 357 | 3.10.10 | Smoke Tests po wdrożeniu | 1.6d | 2027-04-20 | 2027-04-21 | 356 | 2026-07-24 | 2026-07-25 | 1d | 0d |  | QA | feature/smoke-tests |
| 358 | 3.11 | **Utrzymanie i Maintenance** | 16.8d | 2027-04-21 | 2027-05-08 |  | 2026-07-25 | 2026-07-29 | 4d | 0d | feature/rpg-api |  |  |
| 359 | 3.11.1 | Plan Disaster Recovery | 3.2d | 2027-04-21 | 2027-04-24 | 357 | 2026-07-25 | 2026-07-26 | 1d | 0d | feature/rpg-api | Docs | docs/disaster-recovery |
| 360 | 3.11.2 | Harmonogram aktualizacji zależności | 1.6d | 2027-04-24 | 2027-04-26 | 359 | 2026-07-26 | 2026-07-27 | 1d | 0d | feature/rpg-api | DevOps | - |
| 361 | 3.11.3 | Monitoring wydajności i kosztów | 4d | 2027-04-26 | 2027-04-30 | 360 | 2026-07-27 | 2026-07-28 | 1d | 0d | feature/rpg-api | DevOps | - |
| 362 | 3.11.4 | Feedback Loop z użytkownikami | 8d | 2027-04-30 | 2027-05-08 | 361 | 2026-07-28 | 2026-07-29 | 1d | 0d | feature/rpg-api | Product | - |

Notes:
- 347: Launch na domenę produkcyjną / [Status 2026-08-26] 0% — nierozpoczęte; estymacja 160 h; prognoza zakończenia 2027-04-21. Brak kompletnego artefaktu lub dowodu odbioru w repozytorium.
- 348: Zakup domeny; konfiguracja DNS: A record → IP serwera / [Status 2026-08-26] 0% — nierozpoczęte; estymacja 16 h; prognoza zakończenia 2027-03-23. Brak dowodu konfiguracji domeny produkcyjnej.
- 349: VPS dedykowany; Docker Swarm lub Kubernetes (opcjonalnie) / [Status 2026-08-26] 0% — nierozpoczęte; estymacja 24 h; prognoza zakończenia 2027-03-28. Brak dowodu gotowego serwera produkcyjnego.
- 350: Cron job: mysqldump co 24h; upload do S3 lub Backblaze B2 / [Status 2026-08-26] 0% — nierozpoczęte; estymacja 16 h; prognoza zakończenia 2027-03-31. Brak kompletnego artefaktu lub dowodu odbioru w repozytorium.
- 351: Integracja Sentry w backend + frontend; alerty na email/Slack / [Status 2026-08-26] 0% — nierozpoczęte; estymacja 16 h; prognoza zakończenia 2027-04-03. Brak kompletnego artefaktu lub dowodu odbioru w repozytorium.
- 352: Metryki: CPU, RAM, Disk, network; dashboard Grafana / [Status 2026-08-26] 0% — nierozpoczęte; estymacja 24 h; prognoza zakończenia 2027-04-08. Brak kompletnego artefaktu lub dowodu odbioru w repozytorium.
- 353: Elasticsearch + Logstash + Kibana; centralne logi aplikacji / [Status 2026-08-26] 0% — nierozpoczęte; estymacja 16 h; prognoza zakończenia 2027-04-11. Brak kompletnego artefaktu lub dowodu odbioru w repozytorium.
- 354: Proxy DNS przez Cloudflare; cache statycznych zasobów; DDoS protection / [Status 2026-08-26] 0% — nierozpoczęte; estymacja 8 h; prognoza zakończenia 2027-04-13. Brak kompletnego artefaktu lub dowodu odbioru w repozytorium.
- 355: Final data migration; weryfikacja integralności / [Status 2026-08-26] 0% — nierozpoczęte; estymacja 16 h; prognoza zakończenia 2027-04-16. Brak kompletnego artefaktu lub dowodu odbioru w repozytorium.
- 356: GitHub Actions: workflow deploy-production.yml; trigger: tag v1.0.0 / [Status 2026-08-26] 0% — nierozpoczęte; estymacja 16 h; prognoza zakończenia 2027-04-19. Brak kompletnego artefaktu lub dowodu odbioru w repozytorium.
- 357: Weryfikacja: wszystkie endpointy działają, WebSocket online, DNS propagation / [Status 2026-08-26] 0% — nierozpoczęte; estymacja 8 h; prognoza zakończenia 2027-04-21. Brak kompletnego artefaktu lub dowodu odbioru w repozytorium.
- 358: Post-launch support / [Status 2026-08-26] 0% — nierozpoczęte; estymacja 84 h; prognoza zakończenia 2027-05-08. Brak kompletnego artefaktu lub dowodu odbioru w repozytorium.
- 359: Dokumentacja: procedury w przypadku awarii serwera, DB corruption / [Status 2026-08-26] 0% — nierozpoczęte; estymacja 16 h; prognoza zakończenia 2027-04-24. Brak kompletnego artefaktu lub dowodu odbioru w repozytorium.
- 360: Co 3 miesiące: update npm packages, Composer, Docker images / [Status 2026-08-26] 0% — nierozpoczęte; estymacja 8 h; prognoza zakończenia 2027-04-26. Brak kompletnego artefaktu lub dowodu odbioru w repozytorium.
- 361: Analiza: użycie zasobów, koszty hostingu, optymalizacja / [Status 2026-08-26] 0% — nierozpoczęte; estymacja 20 h; prognoza zakończenia 2027-04-30. Brak kompletnego artefaktu lub dowodu odbioru w repozytorium.
- 362: Formularz feedbacku; Discord/Slack community; priorityzacja feature requests / [Status 2026-08-26] 0% — nierozpoczęte; estymacja 40 h; prognoza zakończenia 2027-05-08. Brak kompletnego artefaktu lub dowodu odbioru w repozytorium.
