Schedule from MS Project XML, 2025-12-01 to 2027-03-26, status date 2026-08-26, A marks actual dates.
Pełny zakres aplikacji BlatyRPG i VTT v1
DreamV Studio

## Calendars

- Standard: Mon-Fri 08:00-12:00, 13:00-17:00; Sat-Sun off.

## Schedule

| ID | WBS | Task | Type | Duration | Start | Finish | Predecessors | Complete | Remaining | Baseline start | Baseline finish | Baseline duration | Deadline |
| --- | --- | --- | --- | --- | --- | --- | --- | --- | --- | --- | --- | --- | --- |
| 1 | 1 | **Zarządzanie projektem i kamienie milowe** |  | 345d | 2025-12-01 A | 2027-03-26 |  | 57% | 148.35d | 2025-12-01 | 2027-03-26 | 345d |  |
| 2 | 1.1 | Kick-off projektu | milestone | 0d | 2025-12-01 A | 2025-12-01 A |  | 100% |  | 2025-12-01 | 2025-12-01 |  |  |
| 3 | 1.2 | Rdzeń aplikacji gotowy | milestone | 0d | 2026-08-19 A | 2026-08-19 A | 16 | 100% |  | 2026-08-19 | 2026-08-19 |  |  |
| 4 | 1.3 | VTT MVP gotowy | milestone | 0d | 2026-09-18 | 2026-09-18 | 40, 47 |  |  | 2026-09-18 | 2026-09-18 |  |  |
| 5 | 1.4 | Feature complete v1 | milestone | 0d | 2027-01-29 | 2027-01-29 | 58 |  |  | 2027-01-29 | 2027-01-29 |  |  |
| 6 | 1.5 | Release Beta | milestone | 0d | 2027-02-19 | 2027-02-19 | 63 |  |  | 2027-02-19 | 2027-02-19 |  |  |
| 7 | 1.6 | Go-live produkcyjny | milestone | 0d | 2027-03-15 | 2027-03-15 | 66 |  |  | 2027-03-15 | 2027-03-15 |  | 2026-09-22 |
| 8 | 1.7 | Zamknięcie projektu | milestone | 0d | 2027-03-26 | 2027-03-26 | 68 |  |  | 2027-03-26 | 2027-03-26 |  |  |
| 9 | 2 | **Rdzeń aplikacji BlatyRPG** |  | 188d | 2025-12-01 A | 2026-08-19 A |  | 100% |  | 2025-12-01 | 2026-08-19 | 188d |  |
| 10 | 2.1 | Analiza, architektura i wybór technologii |  | 18d | 2025-12-01 A | 2025-12-24 A |  | 100% |  | 2025-12-01 | 2025-12-24 | 18d |  |
| 11 | 2.2 | Fundament danych, katalog RPG i środowisko |  | 35d | 2025-12-29 A | 2026-02-13 A | 10 | 100% |  | 2025-12-29 | 2026-02-13 | 35d |  |
| 12 | 2.3 | Uwierzytelnianie, sesje, role i polityki dostępu |  | 20d | 2026-02-16 A | 2026-03-13 A | 11 | 100% |  | 2026-02-16 | 2026-03-13 | 20d |  |
| 13 | 2.4 | Kampanie, zaproszenia, profile i postacie |  | 25d | 2026-03-16 A | 2026-04-17 A | 12 | 100% |  | 2026-03-16 | 2026-04-17 | 25d |  |
| 14 | 2.5 | Sklep, ekwipunek, waluty i handel |  | 45d | 2026-04-20 A | 2026-06-19 A | 13 | 100% |  | 2026-04-20 | 2026-06-19 | 45d |  |
| 15 | 2.6 | Kości 3D, panel administracyjny i i18n |  | 20d | 2026-06-22 A | 2026-07-17 A | 14 | 100% |  | 2026-06-22 | 2026-07-17 | 20d |  |
| 16 | 2.7 | Utwardzenie rdzenia i kampanijny workspace |  | 23d | 2026-07-20 A | 2026-08-19 A | 15 | 100% |  | 2026-07-20 | 2026-08-19 | 23d |  |
| 17 | 3 | **Fundament VTT** |  | 23d | 2026-08-19 A | 2026-09-18 |  | 59% | 9.43d | 2026-08-19 | 2026-09-18 | 23d |  |
| 18 | 3.1 | Bezpieczeństwo kampanii i autorytatywny realtime |  | 3d | 2026-08-19 A | 2026-08-21 A | 16 | 100% |  | 2026-08-19 | 2026-08-21 | 3d |  |
| 19 | 3.2 | Scena, mapa, grid i workspace stołu |  | 4d | 2026-08-19 A | 2026-08-24 A | 16 | 100% |  | 2026-08-19 | 2026-08-24 | 4d |  |
| 20 | 3.3 | **Token / Actor i ruch** |  | 10d | 2026-08-24 A | 2026-09-04 |  | 78% | 2.2d | 2026-08-24 | 2026-09-04 | 10d |  |
| 21 | 3.3.1 | Model linked/unlinked i uprawnienia tokenu |  | 2d | 2026-08-24 A | 2026-08-25 A | 19 | 100% |  | 2026-08-24 | 2026-08-25 | 2d |  |
| 22 | 3.3.2 | Autorytatywny ruch, snapping i obrót |  | 3d | 2026-08-24 A | 2026-08-26 A | 21 | 100% |  | 2026-08-24 | 2026-08-26 | 3d |  |
| 23 | 3.3.3 | HUD, zasoby, statusy i ustawienia tokenu |  | 4d | 2026-08-25 A | 2026-08-28 | 22 | 85% | 0.6d | 2026-08-25 | 2026-08-28 | 4d |  |
| 24 | 3.3.4 | Ruch grupowy i akceptacja przekroczeń przez MG |  | 4d | 2026-08-26 A | 2026-08-31 | 22 | 75% | 1d | 2026-08-26 | 2026-08-31 | 4d |  |
| 25 | 3.3.5 | Test 100+ tokenów i brama regresji |  | 4d | 2026-09-01 | 2026-09-04 | 23, 24 |  |  | 2026-09-01 | 2026-09-04 | 4d |  |

Notes:
- 1: Zrewidowana linia bazowa; status na 26.08.2026.
- 2: Rozpoczęcie prac.
- 3: Auth, kampanie, postacie, sklep, panel administracyjny, kości i i18n obecne w repozytorium.
- 4: Sceny, tokeny, ściany, światło, fog i podstawowa walka z bramami jakości.
- 5: Zakres funkcjonalny v1 zamknięty; zaczyna się wyłącznie stabilizacja i release.
- 6: Wersja po regresji, E2E, testach bezpieczeństwa i wydajności.
- 7: Prognozowany termin wdrożenia produkcyjnego.
- 8: Po okresie stabilizacji i przekazaniu do utrzymania.
- 9: Zakres zweryfikowany na podstawie kodu, migracji, dokumentacji i historii commitów.
- 10: CodeIgniter 4, Vue 3/Vuex, MySQL, nginx i Docker Compose.
- 11: Migracje, seedery, katalog systemów/uniwersów oraz środowisko uruchomieniowe.
- 12: JWT, sesje logowania, role globalne i kampanijne oraz ACL.
- 13: Działające pionowe przepływy użytkownika i panel postaci.
- 14: Istniejący moduł sklepu pozostaje jedynym źródłem katalogu, kontenerów i transakcji.
- 15: Rzutnik lokalny, zarządzanie administracyjne oraz polska i angielska lokalizacja.
- 16: Zamknięcie BOLA/IDOR, membership kampanii, chat i wspólny workspace.
- 17: W toku. Postęp oparty na obecnym kodzie, nie na samych nazwach zadań.
- 18: JWT handshake, pokoje kampanii, reconnect, heartbeat, limity i fail-closed; 68/68 testów WebSocket.
- 19: CRUD scen, aktywacja, pan/zoom, grid, warstwy bazowe i synchronizacja.
- 20: Główne przepływy istnieją; pozostały test obciążenia, regresja i domknięcie ustawień.
- 21: Instancje tokenów, aktor, granularne uprawnienia.
- 22: Persistencja i realtime są obecne.
- 23: Kod obecny; wymagane domknięcie regresji UI.
- 24: Przepływ zaimplementowany, potrzebne testy pełnego scenariusza.
- 25: Warunek zamknięcia etapu.

| ID | WBS | Task | Duration | Start | Finish | Predecessors | Complete | Remaining | Baseline start | Baseline finish | Baseline duration |
| --- | --- | --- | --- | --- | --- | --- | --- | --- | --- | --- | --- |
| 26 | 3.4 | **Ściany, drzwi i kolizje** | 10d | 2026-08-24 A | 2026-09-04 |  | 72% | 2.8d | 2026-08-24 | 2026-09-04 | 10d |
| 27 | 3.4.1 | Persistencja, CRUD i realtime ścian | 1d | 2026-08-24 A | 2026-08-24 A | 19 | 100% |  | 2026-08-24 | 2026-08-24 | 1d |
| 28 | 3.4.2 | Drzwi, typy blokad i sekrety | 4d | 2026-08-25 A | 2026-08-28 | 27 | 80% | 0.8d | 2026-08-25 | 2026-08-28 | 4d |
| 29 | 3.4.3 | Serwerowa walidacja kolizji | 6d | 2026-08-25 A | 2026-09-01 | 27 | 75% | 1.5d | 2026-08-25 | 2026-09-01 | 6d |
| 30 | 3.4.4 | Indeks przestrzenny i testy wydajności | 3d | 2026-09-02 | 2026-09-04 | 28, 29 |  |  | 2026-09-02 | 2026-09-04 | 3d |
| 31 | 3.5 | **Widzenie i oświetlenie** | 11d | 2026-08-24 A | 2026-09-07 |  | 76% | 2.64d | 2026-08-24 | 2026-09-07 | 11d |
| 32 | 3.5.1 | Światła typowane, darkness i global illumination | 3d | 2026-08-24 A | 2026-08-26 A | 27 | 100% |  | 2026-08-24 | 2026-08-26 | 3d |
| 33 | 3.5.2 | LOS i cienie od ścian | 5d | 2026-08-24 A | 2026-08-28 | 32 | 90% | 0.5d | 2026-08-24 | 2026-08-28 | 5d |
| 34 | 3.5.3 | Percepcja i widok gracza per token | 6d | 2026-08-26 A | 2026-09-02 | 33 | 50% | 3d | 2026-08-26 | 2026-09-02 | 6d |
| 35 | 3.5.4 | Deterministyczne testy LOS/światła/reconnect | 3d | 2026-09-03 | 2026-09-07 | 34, 30 |  |  | 2026-09-03 | 2026-09-07 | 3d |
| 36 | 3.6 | **Fog of War** | 9d | 2026-09-08 | 2026-09-18 |  |  |  | 2026-09-08 | 2026-09-18 | 9d |
| 37 | 3.6.1 | Widoczność chwilowa i bezpieczne payloady | 4d | 2026-09-08 | 2026-09-11 | 35 |  |  | 2026-09-08 | 2026-09-11 | 4d |
| 38 | 3.6.2 | Eksploracja per użytkownik | 3d | 2026-09-14 | 2026-09-16 | 37 |  |  | 2026-09-14 | 2026-09-16 | 3d |
| 39 | 3.6.3 | Reveal / hide / reset dla MG | 1d | 2026-09-17 | 2026-09-17 | 38 |  |  | 2026-09-17 | 2026-09-17 | 1d |
| 40 | 3.6.4 | Test ACL, reconnect i brak wycieku fog | 1d | 2026-09-18 | 2026-09-18 | 39 |  |  | 2026-09-18 | 2026-09-18 | 1d |
| 41 | 4 | **Mechaniki i rozszerzenia VTT** | 113d | 2026-08-26 A | 2027-01-29 |  | 11% | 100.57d | 2026-08-26 | 2027-01-29 | 113d |
| 42 | 4.1 | **Combat Tracker i walka** | 13d | 2026-08-26 A | 2026-09-11 |  | 63% | 4.81d | 2026-08-26 | 2026-09-11 | 13d |
| 43 | 4.1.1 | Stan walki, inicjatywa, rundy i tury | 3d | 2026-08-26 A | 2026-08-28 | 22 | 90% | 0.3d | 2026-08-26 | 2026-08-28 | 3d |
| 44 | 4.1.2 | Realtime i atomowe przejście tury | 5d | 2026-08-26 A | 2026-09-01 | 43, 18 | 85% | 0.75d | 2026-08-26 | 2026-09-01 | 5d |
| 45 | 4.1.3 | Combat Tracker i kontrola ruchu | 6d | 2026-08-26 A | 2026-09-02 | 43 | 80% | 1.2d | 2026-08-26 | 2026-09-02 | 6d |
| 46 | 4.1.4 | Targetowanie i integracja area templates | 3d | 2026-09-03 A | 2026-09-07 | 45 | 25% | 2.25d | 2026-09-03 | 2026-09-07 | 3d |
| 47 | 4.1.5 | Test ról, duplikatów, reconnect i dwóch klientów | 4d | 2026-09-08 | 2026-09-11 | 44, 46 |  |  | 2026-09-08 | 2026-09-11 | 4d |
| 48 | 4.2 | Statusy i Active Effects | 10d | 2026-09-21 | 2026-10-02 | 4 |  |  | 2026-09-21 | 2026-10-02 | 10d |
| 49 | 4.3 | Journal, handouty, ACL i stabilne linki | 10d | 2026-10-05 | 2026-10-16 | 48 |  |  | 2026-10-05 | 2026-10-16 | 10d |
| 50 | 4.4 | Compendium, Roll Tables i import/eksport | 15d | 2026-10-19 | 2026-11-06 | 49 |  |  | 2026-10-19 | 2026-11-06 | 15d |
| 51 | 4.5 | Playlisty, ambient i synchronizacja audio | 10d | 2026-11-09 | 2026-11-20 | 50 |  |  | 2026-11-09 | 2026-11-20 | 10d |
| 52 | 4.6 | Regiony, teleporty, pułapki i interakcje | 15d | 2026-11-23 | 2026-12-11 | 51 |  |  | 2026-11-23 | 2026-12-11 | 15d |
| 53 | 4.7 | Modules/Hooks i rejestr typów | 20d | 2026-12-14 | 2027-01-08 | 52 |  |  | 2026-12-14 | 2027-01-08 | 20d |

Notes:
- 26: Persistencja i edycja istnieją; brakuje pełnej bramy semantyki drzwi i wydajności.
- 27: Potwierdzone kodem i commitami.
- 28: W toku w bieżącym drzewie roboczym.
- 29: Serwis kolizji i testy jednostkowe istnieją; wymagane domknięcie.
- 30: Warunek zamknięcia etapu.
- 31: Zaawansowane światła są w HEAD; deterministyczna brama LOS nadal otwarta.
- 32: Persistencja, UI i autorytatywna synchronizacja obecne.
- 33: Render działa; potrzebna regresja scen granicznych.
- 34: Ograniczenie widzenia jest obecne, pełne tryby percepcji pozostają w toku.
- 35: Warunek zamknięcia etapu.
- 36: Nie znaleziono kompletnego przepływu; etap zaplanowany po stabilizacji widzenia.
- 41: Pozostały zasadniczy zakres pełnego v1.
- 42: Rdzeń autorytatywnej walki jest obecny; brakuje pełnej bramy reconnect/targeting.
- 48: Deterministyczny resolver, źródła i wygaszanie w turach.
- 53: Plan uwzględnia przerwę świąteczno-noworoczną.

| ID | WBS | Task | Type | Duration | Start | Finish | Predecessors | Baseline start | Baseline finish | Baseline duration |
| --- | --- | --- | --- | --- | --- | --- | --- | --- | --- | --- |
| 54 | 4.8 | **Automatyzacja, makra i rozliczanie akcji** |  | 15d | 2027-01-11 | 2027-01-29 |  | 2027-01-11 | 2027-01-29 | 15d |
| 55 | 4.8.1 | Model bezpiecznych komend i hotbar |  | 5d | 2027-01-11 | 2027-01-15 | 53 | 2027-01-11 | 2027-01-15 | 5d |
| 56 | 4.8.2 | Testy, ataki, obrażenia i zapisy |  | 5d | 2027-01-18 | 2027-01-22 | 55 | 2027-01-18 | 2027-01-22 | 5d |
| 57 | 4.8.3 | Roll Tables i aplikowanie efektów |  | 3d | 2027-01-25 | 2027-01-27 | 56 | 2027-01-25 | 2027-01-27 | 3d |
| 58 | 4.8.4 | Audyt ról, bezpieczeństwa i deterministyczności |  | 2d | 2027-01-28 | 2027-01-29 | 57 | 2027-01-28 | 2027-01-29 | 2d |
| 59 | 5 | **Stabilizacja, beta i wdrożenie** |  | 40d | 2027-02-01 | 2027-03-26 |  | 2027-02-01 | 2027-03-26 | 40d |
| 60 | 5.1 | Integracja i pełna regresja frontend/backend/realtime |  | 5d | 2027-02-01 | 2027-02-05 | 5 | 2027-02-01 | 2027-02-05 | 5d |
| 61 | 5.2 | Bezpieczeństwo, migracje upgrade i backup/restore |  | 5d | 2027-02-01 | 2027-02-05 | 5 | 2027-02-01 | 2027-02-05 | 5d |
| 62 | 5.3 | Wydajność: 100+ tokenów, 50 WS i API throughput |  | 5d | 2027-02-08 | 2027-02-12 | 60, 61 | 2027-02-08 | 2027-02-12 | 5d |
| 63 | 5.4 | E2E, testy akceptacyjne i naprawy release blockers |  | 10d | 2027-02-08 | 2027-02-19 | 60, 61 | 2027-02-08 | 2027-02-19 | 10d |
| 64 | 5.5 | UAT i bug fixing po becie |  | 10d | 2027-02-22 | 2027-03-05 | 6 | 2027-02-22 | 2027-03-05 | 10d |
| 65 | 5.6 | Dokumentacja operacyjna, monitoring i DR |  | 5d | 2027-03-08 | 2027-03-12 | 64 | 2027-03-08 | 2027-03-12 | 5d |
| 66 | 5.7 | Przegląd gotowości produkcyjnej | milestone | 0d | 2027-03-12 | 2027-03-12 | 62, 65 | 2027-03-12 | 2027-03-12 |  |
| 67 | 5.8 | Wdrożenie i smoke tests |  | 1d | 2027-03-15 | 2027-03-15 | 66 | 2027-03-15 | 2027-03-15 | 1d |
| 68 | 5.9 | Stabilizacja powdrożeniowa i przekazanie |  | 9d | 2027-03-16 | 2027-03-26 | 67 | 2027-03-16 | 2027-03-26 | 9d |

Notes:
- 54: Format deklaratywny; bez uruchamiania dowolnego kodu klienta.
- 59: Bufor release jest jawny i oddzielony od implementacji funkcji.
